# 07.09.26

Schedule from MS Project, 2023-03-10 to 2027-03-10, A marks actual dates.
DEXP

## Calendars

- Стандартный: Mon-Fri 09:00-13:00, 14:00-18:00; Sat-Sun off. Exceptions (off unless hours are given): 2026-09-05 09:00-13:00, 14:00-18:00, 2026-09-12 to 2026-09-13 09:00-13:00, 14:00-18:00, 2026-09-19 to 2026-09-20 09:00-13:00, 14:00-18:00, 2026-09-26 to 2026-09-27 09:00-13:00, 14:00-18:00, 2026-10-04 09:00-13:00, 14:00-18:00.

## Resources

| Resource |
| --- |
| Макаревич А |
| Дедов В |
| Бобренок В |
| Тимофеев В |
| Зорькин В |
| Бундин В |
| Труфанов А |
| Некрасов А |
| Шуранов Ю |
| Домоводов К |
| Амрулин Р |
| Карабанов |
| Олег |
| оплот |
| Коленкоров |
| Мультан |
| Малинина М |
| Лобанов И |
| Дворник |
| Подрядчик |
| Олег лукас |
| Черепанов И |
| оперторы2 |
| оператор2 |
| Тракресурс |
| Сапелин С |
| Технолог |
| Фрезер ЧПУ |
| Пинчук А |
| КИнжекул |
| ТО_2 |
| ТО_1 |
| ТО_М |
| ТО |
| Кладовщики |
| Некрасов |
| Логист |

## Schedule

| ID | WBS | Task | Duration | Start | Finish | Predecessors | Complete | Remaining | Total slack | Free slack | Constraint | Resources | Work | Actual work |
| --- | --- | --- | --- | --- | --- | --- | --- | --- | --- | --- | --- | --- | --- | --- |
| 1 | 1 | **1 цех** | 431.5d? | 2023-03-10 09:00 A | 2024-11-02 13:00 |  | 98% | 8.61d? |  |  |  |  | 22784h | 22503.4h |
| 2 | 1.1 | Изготовление и установка крышек на бачок гидролизата в 1 цеху | 3h | 2026-10-04 09:00 | 2026-10-04 12:00 |  |  |  | 113.22d |  | start no earlier than 2026-10-04 09:00 | Бундин В | 3h |  |
| 3 | 1.2 | **Вал прекондиционера 1 линия** | 1.88d | 2026-10-05 09:00 | 2026-10-06 17:00 |  |  |  | 110.72d |  |  |  | 18.67h |  |
| 4 | 1.2.1 | С 8 утра снимаем вал с прекондиционера 1 линия. | 3h | 2026-10-05 09:00 | 2026-10-05 12:00 |  |  |  | 111.14d | 0d | start no earlier than 2026-10-05 09:00 | Труфанов А; Некрасов | 6h |  |
| 5 | 1.2.2 | Образмеривание вала | 1h | 2026-10-05 12:00 | 2026-10-05 13:00 | 4 |  |  | 111.14d | 0d | start no earlier than 2026-10-02 08:00 | Труфанов А | 1h |  |
| 6 | 1.2.3 | Передача всей необходимой информации токарю | 30min | 2026-10-05 14:00 | 2026-10-05 14:30 | 5 |  |  | 111.14d | 0d | start no earlier than 2026-10-05 09:00 | Зорькин В | 0.5h |  |
| 7 | 1.2.4 | Контроль | 10min | 2026-10-05 14:30 | 2026-10-05 14:40 | 6 |  |  | 111.14d | 0.42d | start no earlier than 2026-10-05 09:00 | Зорькин В | 0.17h |  |
| 8 | 1.2.5 | Доставка | 3h | 2026-10-06 09:00 | 2026-10-06 12:00 | 7 |  |  | 110.72d | 0d | start no earlier than 2026-10-06 09:00 | Логист | 3h |  |
| 9 | 1.2.6 | Ставим новый вал сразу после прихода | 4h | 2026-10-06 12:00 | 2026-10-06 17:00 | 8 |  |  | 110.72d |  | start no earlier than 2026-10-06 09:00 | Труфанов А; Некрасов | 8h |  |
| 10 | 1.3 | **Квадропак** | 5d? | 2026-10-01 09:00 | 2026-10-06 18:00 |  |  |  | 110.59d |  |  |  |  |  |
| 11 | 1.3.1 | Составить заявку на шарнир подачи пакетов (зона 1) ВЭД партнер | 1d? | 2026-10-01 09:00 | 2026-10-01 18:00 |  |  |  | 110.59d | 0d | start no earlier than 2026-10-01 08:00 |  |  |  |
| 12 | 1.3.2 | Получить счет - оплата | 1d? | 2026-10-02 09:00 | 2026-10-02 18:00 | 11 |  |  | 110.59d | 0d | start no earlier than 2026-10-01 08:00 |  |  |  |
| 13 | 1.3.3 | Контроль доставки | 1d? | 2026-10-04 09:00 | 2026-10-04 18:00 | 12 |  |  | 110.59d | 0d | start no earlier than 2026-10-01 08:00 |  |  |  |
| 14 | 1.3.4 | Приемка | 1d? | 2026-10-05 09:00 | 2026-10-05 18:00 | 13 |  |  | 110.59d | 0d | start no earlier than 2026-10-01 08:00 |  |  |  |
| 15 | 1.3.5 | Установка | 1d? | 2026-10-06 09:00 | 2026-10-06 18:00 | 14 |  |  | 110.59d |  | start no earlier than 2026-10-01 08:00 |  |  |  |
| 16 | 1.4 | Установить газлифты на раму весов в плоскостях Х и У | 3h | 2026-10-02 09:00 A | 2026-10-02 12:00 A |  | 100% |  |  |  | start no earlier than 2026-10-02 09:00 | Тимофеев В; Бундин В | 6h | 6h |
| 17 | 1.5 | **сборка рама для труб приточной вентиляции** | 14.03d? | 2026-10-02 09:00 | 2026-10-21 09:15 |  |  |  | 100.56d |  |  |  | 32.25h |  |
| 18 | 1.5.1 | составить проект рамы | 4h | 2026-10-02 09:00 | 2026-10-02 13:00 |  |  |  | 100.56d | 0d | start no earlier than 2026-10-02 09:00 | Домоводов К | 4h |  |
| 19 | 1.5.2 | заявка металл | 4h | 2026-10-02 14:00 | 2026-10-02 18:00 | 18 |  |  | 100.56d | 0d | start no earlier than 2026-09-30 08:00 | Домоводов К | 4h |  |
| 20 | 1.5.3 | контроль доставка | 15min | 2026-10-16 09:00 | 2026-10-16 09:15 | 19FS+10d |  |  | 100.56d | 0d | start no earlier than 2026-09-30 08:00 | Зорькин В | 0.25h |  |
| 21 | 1.5.4 | сборка рама на земле | 2d | 2026-10-16 09:15 | 2026-10-20 09:15 | 20 |  |  | 100.56d | 0d | start no earlier than 2026-09-30 08:00 | Труфанов А | 16h |  |
| 22 | 1.5.5 | монтаж рама на цех краном | 1d? | 2026-10-20 09:15 | 2026-10-21 09:15 | 21 |  |  | 100.56d |  | start no earlier than 2026-09-30 08:00 | Некрасов А | 8h |  |
| 23 | 1.6 | герметизация неиспользуемых отверстий после модернизации вентиляции | 1d? | 2026-09-30 09:00 | 2026-09-30 18:00 |  |  |  | 115.59d |  | start no earlier than 2026-09-30 08:00 |  |  |  |
| 24 | 1.7 | **сборка системы дренажа для рекуператоров ввентиляции** | 2d? | 2026-09-30 09:00 A | 2026-10-01 18:00 A |  | 100% |  |  |  |  |  | 30h | 30h |
| 25 | 1.7.1 | Монтаж трассы слива в раковину с рекурператоров | 7h | 2026-09-30 09:00 A | 2026-09-30 17:00 A |  | 100% |  |  |  | start no earlier than 2026-09-30 09:00 | Труфанов А; Некрасов А | 14h | 14h |
| 26 | 1.7.2 | продолжить монтаж | 1d? | 2026-10-01 09:00 A | 2026-10-01 18:00 A |  | 100% |  |  |  | start no earlier than 2026-10-02 09:00 | Труфанов А; Некрасов А | 16h | 16h |
| 27 | 1.8 | Проверка весов на 2 линии красный смеситель, со слов валентина, после замены блока питания, работает, а потом выбивает весы, перестают работать | 1h | 2026-09-29 09:00 A | 2026-09-29 10:00 A |  | 100% |  |  |  | start no earlier than 2026-09-29 09:00 | Дедов В | 1h | 1h |
| 28 | 1.9 | Повторный замер параметров в 1 цеху, вентилляция (подробности по точкам у Домоводова) | 5h | 2026-09-25 09:00 A | 2026-09-25 15:00 A |  | 100% |  |  |  | start no earlier than 2026-09-25 09:00 | Труфанов А; Некрасов А | 10h | 10h |
| 29 | 1.10 | замеры в точках выброса вентиляции с проедставителем | 6h | 2026-09-29 09:00 A | 2026-09-29 16:00 A |  | 100% |  |  |  | start no earlier than 2026-09-29 09:00 | Труфанов А; Некрасов А | 12h | 12h |
| 30 | 1.11 | изготовить переход между прекондиционер и экструдер на 1 линию | 1d? | 2026-09-27 09:00 A | 2026-09-27 18:00 A |  | 100% |  |  |  | start no earlier than 2026-09-27 09:00 | Макаревич А | 8h | 8h |

| ID | WBS | Task | Duration | Start | Finish | Predecessors | Complete | Remaining | Total slack | Free slack | Constraint | Resources | Work | Actual work |
| --- | --- | --- | --- | --- | --- | --- | --- | --- | --- | --- | --- | --- | --- | --- |
| 31 | 1.12 | **замена ленты пролистывателя** | 22d | 2026-09-18 09:00 A | 2026-10-12 18:00 |  | 30% | 15.45d | 106.59d |  |  |  | 11.75h | 3.5h |
| 32 | 1.12.1 | Полная дефектовка пролистывателя, снятие лент/замена | 3h | 2026-09-18 09:00 A | 2026-09-18 12:00 A |  | 100% |  |  |  | start no earlier than 2026-09-18 09:00 | Тимофеев В | 3h | 3h |
| 33 | 1.12.2 | заявка на ремень клиновый для ленты + клей | 30min | 2026-09-18 12:00 A | 2026-09-18 12:30 A | 32 | 100% |  |  |  | start no earlier than 2026-09-18 08:00 | Зорькин В | 0.5h | 0.5h |
| 34 | 1.12.3 | контроль доставки | 15min | 2026-09-25 12:30 | 2026-09-25 12:45 | 33FS+7d |  |  | 118.12d | 11.53d | start no earlier than 2026-09-18 08:00 | Зорькин В | 0.25h |  |
| 35 | 1.12.4 | склеить ремень | 4h | 2026-10-09 09:00 | 2026-10-09 13:00 | 34FS+1d |  |  | 106.59d | 0d | start no earlier than 2026-10-09 09:00 | Тимофеев В | 4h |  |
| 36 | 1.12.5 | замена лент | 4h | 2026-10-12 14:00 | 2026-10-12 18:00 | 35FS+1d |  |  | 106.59d |  | start no earlier than 2026-09-18 08:00 | Тимофеев В | 4h |  |
| 37 | 1.13 | уборка остатков монтажа с рампы | 1h | 2026-09-14 09:00 A | 2026-09-14 10:00 A |  | 100% |  |  |  | start no earlier than 2026-09-14 09:00 | Некрасов А; Тимофеев В; Труфанов А | 3h | 3h |
| 38 | 1.14 | крепить табличку видеонаблюдение в офисе | 15min | 2026-09-14 09:00 A | 2026-09-14 09:15 A |  | 100% |  |  |  | start no earlier than 2026-09-14 09:00 | Тимофеев В | 0.25h | 0.25h |
| 39 | 1.15 | закрыть чердак у Лукаса | 15min | 2026-09-14 09:00 A | 2026-09-14 09:15 A |  | 100% |  |  |  | start no earlier than 2026-09-14 09:00 | Труфанов А; Некрасов А | 0.5h | 0.5h |
| 40 | 1.16 | **ремонт весов смеситель 1 линия** | 1.12d | 2026-09-24 09:00 A | 2026-09-25 10:00 A |  | 100% |  |  |  |  |  | 2h | 2h |
| 41 | 1.16.1 | Реанимировать весы, чтобы показывали. Смесители | 1h | 2026-09-24 09:00 A | 2026-09-24 10:00 A |  | 100% |  |  |  | start no earlier than 2026-09-24 09:00 | Дедов В | 1h | 1h |
| 42 | 1.16.2 | подключить блок питания найти на складе | 1h | 2026-09-25 09:00 A | 2026-09-25 10:00 A |  | 100% |  |  |  | start no earlier than 2026-09-25 08:00 | Бундин В | 1h | 1h |
| 43 | 1.17 | Закрыть каналыгу. На анкера | 2h | 2026-09-15 09:00 A | 2026-09-15 11:00 A |  | 100% |  |  |  | start no earlier than 2026-09-15 09:00 | Бундин В | 2h | 2h |
| 44 | 1.18 | **Дополнительное освещение на Рампе** | 15.14d | 2026-09-11 09:00 A | 2026-09-26 10:05 |  | 85% | 2.29d | 120.46d |  |  |  | 7.17h | 6.08h |
| 45 | 1.18.1 | Прокинуть кабель | 2h | 2026-09-11 09:00 A | 2026-09-11 11:00 A |  | 100% |  |  |  | start no earlier than 2026-09-11 09:00 | Бобренок В | 2h | 2h |
| 46 | 1.18.2 | установить доп светильник на погрузочной рампе | 4h | 2026-09-15 09:00 A | 2026-09-15 13:00 A | 45 | 100% |  |  |  | start no earlier than 2026-09-15 09:00 | Бобренок В | 4h | 4h |
| 47 | 1.18.3 | заявка выключатель | 5min | 2026-09-16 09:00 A | 2026-09-16 09:05 A | 46 | 100% |  |  |  | start no earlier than 2026-09-16 08:00 | Зорькин В | 0.08h | 0.08h |
| 48 | 1.18.4 | контроль | 5min | 2026-09-25 09:00 | 2026-09-25 09:05 | 47FS+7d |  |  | 120.46d | 0d | start no earlier than 2026-09-25 09:00 | Зорькин В | 0.08h |  |
| 49 | 1.18.5 | пожключение выключателя | 1h | 2026-09-26 09:05 | 2026-09-26 10:05 | 48FS+1d |  |  | 120.46d |  | start no earlier than 2026-09-26 09:00 | Бобренок В | 1h |  |
| 50 | 1.19 | востановить светильник отсек выгрузки ГП + установить доп светильник | 4h | 2026-09-09 09:00 A | 2026-09-09 13:00 A |  | 100% |  |  |  | start no earlier than 2026-09-09 09:00 | Бундин В | 4h | 4h |
| 51 | 1.20 | **реконструкция хранения гидролизатов и маршрут подачи навесок** | 29.19d? | 2026-09-08 09:00 A | 2026-10-08 10:30 |  | 1% | 28.76d? | 109.41d |  |  |  | 52.33h | 1h |
| 52 | 1.20.1 | **перенос системы отопления** | 0.12d | 2026-09-11 09:00 A | 2026-09-11 10:00 A |  | 100% |  |  |  |  |  | 1h | 1h |
| 53 | 1.20.1.1 | посик сварщиков | 1h | 2026-09-11 09:00 A | 2026-09-11 10:00 A |  | 100% |  |  |  | start no earlier than 2026-09-11 09:00 | Домоводов К | 1h | 1h |
| 54 | 1.20.2 | **монтаж доп плащадки** | 9.19d | 2026-09-28 09:00 | 2026-10-08 10:30 |  |  |  | 109.41d |  |  |  | 17.5h |  |
| 55 | 1.20.2.1 | составить чертеж площадки | 1h | 2026-09-28 09:00 | 2026-09-28 10:00 |  |  |  | 109.41d | 0d | start no earlier than 2026-09-28 09:00 | Домоводов К | 1h |  |
| 56 | 1.20.2.2 | заявка | 15min | 2026-09-29 10:00 | 2026-09-29 10:15 | 55FS+1d |  |  | 109.41d | 0d | start no earlier than 2026-09-10 09:00 | Зорькин В | 0.25h |  |
| 57 | 1.20.2.3 | контроль доставки | 15min | 2026-10-05 10:15 | 2026-10-05 10:30 | 56FS+5d |  |  | 109.41d | 0d | start no earlier than 2026-09-08 08:00 | Зорькин В | 0.25h |  |
| 58 | 1.20.2.4 | монтаж | 2d | 2026-10-06 10:30 | 2026-10-08 10:30 | 57FS+1d |  |  | 109.41d |  | start no earlier than 2026-09-28 09:00 | Тимофеев В | 16h |  |

| ID | WBS | Task | Duration | Start | Finish | Predecessors | Complete | Total slack | Free slack | Constraint | Resources | Work | Actual work |
| --- | --- | --- | --- | --- | --- | --- | --- | --- | --- | --- | --- | --- | --- |
| 59 | 1.20.3 | **монтаж перегородка корридор** | 8.19d | 2026-09-25 09:00 | 2026-10-04 10:30 |  |  | 113.41d |  |  |  | 17.5h |  |
| 60 | 1.20.3.1 | составить чертеж площадки | 1h | 2026-09-25 09:00 | 2026-09-25 10:00 |  |  | 113.41d | 0d | start no earlier than 2026-09-25 09:00 | Домоводов К | 1h |  |
| 61 | 1.20.3.2 | заявка | 15min | 2026-09-25 10:00 | 2026-09-25 10:15 | 60 |  | 113.41d | 0d | start no earlier than 2026-09-10 09:00 | Зорькин В | 0.25h |  |
| 62 | 1.20.3.3 | контроль доставки | 15min | 2026-09-30 10:15 | 2026-09-30 10:30 | 61FS+5d |  | 113.41d | 0d | start no earlier than 2026-09-08 08:00 | Зорькин В | 0.25h |  |
| 63 | 1.20.3.4 | монтаж | 2d | 2026-10-01 10:30 | 2026-10-04 10:30 | 62FS+1d |  | 113.41d |  | start no earlier than 2026-09-28 09:00 | Тимофеев В | 16h |  |
| 64 | 1.20.4 | **врезка двери в проем на упаковку** | 0.04d | 2026-09-09 09:00 | 2026-09-09 09:20 |  |  | 137.55d |  |  |  | 0.33h |  |
| 65 | 1.20.4.1 | планирование с Олегом, как сделана стена | 20min | 2026-09-09 09:00 | 2026-09-09 09:20 |  |  | 137.55d |  | start no earlier than 2026-09-09 09:00 | Домоводов К | 0.33h |  |
| 66 | 1.20.5 | замена двери в гидролизатную - | 1d? | 2026-09-08 09:00 | 2026-09-08 18:00 |  |  | 137.59d |  | start no earlier than 2026-09-08 08:00 |  |  |  |
| 67 | 1.20.6 | перенос батареи отопления в гидролизатной | 1d? | 2026-09-08 09:00 | 2026-09-08 18:00 |  |  | 137.59d |  | start no earlier than 2026-09-08 08:00 |  |  |  |
| 68 | 1.20.7 | демонтаж бетонного отлива/отмостка | 2d | 2026-09-08 09:00 | 2026-09-09 18:00 |  |  | 136.59d |  | start no earlier than 2026-09-08 08:00 | Олег | 16h |  |
| 69 | 1.21 | **ревизия парогенератор КАРЧЕР** | 3.03d? | 2026-09-21 09:00 A | 2026-09-24 09:15 A |  | 100% |  |  |  |  | 8.5h | 8.5h |
| 70 | 1.21.1 | орг отправить курьера на пнд | 15min | 2026-09-23 09:00 A | 2026-09-23 09:15 A |  | 100% |  |  | start no earlier than 2026-09-23 09:00 | Зорькин В | 0.25h | 0.25h |
| 71 | 1.21.2 | контроль доставки | 15min | 2026-09-24 09:00 A | 2026-09-24 09:15 A | 70 | 100% |  |  | start no earlier than 2026-09-24 09:00 | Зорькин В | 0.25h | 0.25h |
| 72 | 1.21.3 | монтаж | 1d? | 2026-09-21 09:00 A | 2026-09-21 18:00 A | 71 | 100% |  |  | start no earlier than 2026-09-25 09:00 | Тимофеев В | 8h | 8h |
| 73 | 1.22 | **подключить циклоны 1 и 2 линия** | 1.12d | 2026-09-09 09:00 A | 2026-09-10 10:00 A |  | 100% |  |  |  |  | 1.17h | 1.17h |
| 74 | 1.22.1 | контроль поставка кабель | 10min | 2026-09-09 09:00 A | 2026-09-09 09:10 A |  | 100% |  |  | start no earlier than 2026-09-09 09:00 | Зорькин В | 0.17h | 0.17h |
| 75 | 1.22.2 | монтаж кабеля (временно удлинить от сущестующих концов) | 1h | 2026-09-10 09:00 A | 2026-09-10 10:00 A |  | 100% |  |  | start no earlier than 2026-09-10 09:00 | Бундин В | 1h | 1h |
| 76 | 1.23 | **бактерицидные лампы** | 7.12d | 2026-09-09 09:00 A | 2026-09-16 10:00 A |  | 100% |  |  |  |  | 3h | 3h |
| 77 | 1.23.1 | замена бактерицидных ламп в коридоре и посмотреть, где не горят | 1h | 2026-09-09 09:00 A | 2026-09-09 10:00 A |  | 100% |  |  | start no earlier than 2026-09-09 09:00 | Бундин В | 1h | 1h |
| 78 | 1.23.2 | ремонт лампы снятой бундиным с мойки экструдера | 1h | 2026-09-16 09:00 A | 2026-09-16 10:00 A |  | 100% |  |  | start no earlier than 2026-09-16 09:00 | Бундин В | 1h | 1h |
| 79 | 1.23.3 | ремонт лампы в тамбуре вывоз ГП | 1h | 2026-09-16 09:00 A | 2026-09-16 10:00 A |  | 100% |  |  | start no earlier than 2026-09-16 09:00 | Бундин В | 1h | 1h |
| 80 | 1.24 | исправить "не возможность открыть" краны фильтр жир 2л | 30min | 2026-09-10 09:00 A | 2026-09-10 09:30 A |  | 100% |  |  | start no earlier than 2026-09-10 09:00 | Тимофеев В | 0.5h | 0.5h |
| 81 | 1.25 | ремонт силиконовых уплотнений печи на сетке 1 и 2 л | 3h? | 2026-09-10 09:00 A | 2026-09-10 12:00 A |  | 100% |  |  | start no earlier than 2026-09-10 09:00 | Бундин В | 3h | 3h |
| 82 | 1.26 | **сместить квадропак в сторону охладителя 2л** | 20.5d | 2026-09-10 09:00 A | 2026-09-30 13:00 A |  | 100% |  |  |  |  | 20h | 20h |
| 83 | 1.26.1 | отключение / перенгос мехнизмов | 3h | 2026-09-10 09:00 A | 2026-09-10 12:00 A |  | 100% |  |  | start no earlier than 2026-09-10 09:00 | Некрасов А; Труфанов А | 6h | 6h |
| 84 | 1.26.2 | подключение | 3h | 2026-09-11 09:00 A | 2026-09-11 12:00 A |  | 100% |  |  | start no earlier than 2026-09-11 09:00 | Некрасов А; Труфанов А | 6h | 6h |
| 85 | 1.26.3 | доработка перил | 4h | 2026-09-30 09:00 A | 2026-09-30 13:00 A |  | 100% |  |  | start no earlier than 2026-09-30 09:00 | Труфанов А; Некрасов А | 8h | 8h |

| ID | WBS | Task | Type | Duration | Start | Finish | Predecessors | Complete | Remaining | Total slack | Free slack | Constraint | Resources | Work | Actual work |
| --- | --- | --- | --- | --- | --- | --- | --- | --- | --- | --- | --- | --- | --- | --- | --- |
| 86 | 1.27 | **квадропак - сделать силиконовый успокоитель между нория и весы 800*250 шаг шторок 60** |  | 13.27d | 2026-09-25 09:00 A | 2026-10-09 11:10 |  | 7% | 12.32d | 108.32d |  |  |  | 2.33h | 0.17h |
| 87 | 1.27.1 | заявка прозрачный силикон |  | 10min | 2026-09-25 09:00 A | 2026-09-25 09:10 A |  | 100% |  |  |  | start no earlier than 2026-09-25 09:00 | Зорькин В | 0.17h | 0.17h |
| 88 | 1.27.2 | доставка контроль |  | 10min | 2026-10-09 09:00 | 2026-10-09 09:10 | 87FS+7d |  |  | 108.32d | 0d | start no earlier than 2026-10-09 09:00 | Зорькин В | 0.17h |  |
| 89 | 1.27.3 | сборка |  | 2h | 2026-10-09 09:10 | 2026-10-09 11:10 | 88 |  |  | 108.32d |  | start no earlier than 2026-10-06 09:00 | Тимофеев В | 2h |  |
| 90 | 1.28 | квадропак - ремонт люфта штанги нажима роликов открытия захватов на станции №1 |  | 4h | 2026-09-30 09:00 A | 2026-09-30 13:00 A |  | 100% |  |  |  | start no earlier than 2026-09-30 09:00 | Тимофеев В | 4h | 4h |
| 91 | 1.29 | квадропак - кронштейн пневовстряхивателя - востановить резтбу сквозную |  | 1h | 2026-09-30 09:00 A | 2026-09-30 10:00 A |  | 100% |  |  |  | start no earlier than 2026-09-30 09:00 | Тимофеев В | 1h | 1h |
| 92 | 1.30 | Ревизия утечек воздуха на квадропаке (важно проверить пневмораспределителях) и вакуумную систему (если работают, отменяем задание) | manual | 2h | 2026-09-23 09:00 A | 2026-09-23 11:00 A |  | 100% |  |  |  | start no earlier than 2026-09-23 09:00 | Тимофеев В | 2h | 2h |
| 93 | 1.31 | Комплексное ТО квадропака, проверка всех соединений, протяжка болтов на всех узлах | manual | 2h | 2026-09-23 09:00 A | 2026-09-23 11:00 A |  | 100% |  |  |  | start no earlier than 2026-09-23 09:00 | Тимофеев В | 2h | 2h |
| 94 | 1.32 | Сделать основную кнопку на НОТИСЕ, чтоб срабатывало от нее, а не от блока управления (схему взять у нас в кабинете) | manual | 1h | 2026-09-22 09:00 A | 2026-09-22 10:00 A |  | 100% |  |  |  | start no earlier than 2026-09-22 09:00 | Дедов В | 1h | 1h |
| 95 | 1.33 | Убрать все кабеля на полу в зоне фасовки, теко-нотис (кабельный менеджмент) |  | 2h | 2026-09-10 09:00 A | 2026-09-10 11:00 A |  | 100% |  |  |  | start no earlier than 2026-09-10 09:00 | Бундин В | 2h | 2h |
| 96 | 1.34 | Клемная коробка на жирах сделать, сейчас вся висит на хомутах 2 линия |  | 1h | 2026-09-07 09:00 A | 2026-09-07 10:00 A |  | 100% |  |  |  | start no earlier than 2026-09-05 09:00 | Дедов В | 1h | 1h |
| 97 | 1.35 | Ошибка на баке жиротопки 2 линия Err.4 /разобраться и устранить причину |  | 1h | 2026-09-04 09:00 A | 2026-09-04 10:00 A |  | 100% |  |  |  | start no earlier than 2026-09-04 09:00 | Бобренок В | 1h | 1h |
| 98 | 1.36 | Установить новые газлифты, которые получил Бобренок на жиротопку 2 этаж |  | 2h | 2026-09-07 09:00 A | 2026-09-07 11:00 A |  | 100% |  |  |  | start no earlier than 2026-09-07 09:00 | Тимофеев В | 2h | 2h |
| 99 | 1.37 | **Не работают роль ставни на жирах, не стопоряться сделать/устранить неисправность** |  | 20.02d | 2026-09-09 09:00 A | 2026-09-29 09:10 |  | 98% | 0.4d | 117.57d |  |  |  | 8.33h | 8.17h |
| 100 | 1.37.1 | Вызвать подрядчика/контроль |  | 10min | 2026-09-09 09:00 A | 2026-09-09 09:10 A |  | 100% |  |  |  | start no earlier than 2026-09-09 09:00 | Зорькин В | 0.17h | 0.17h |
| 101 | 1.37.2 | получить счет на ремонт |  | 1d | 2026-09-09 09:10 A | 2026-09-10 09:10 A | 100 | 100% |  |  |  | start no earlier than 2026-09-08 09:00 | Зорькин В | 8h | 8h |
| 102 | 1.37.3 | согласовать с подрядчиком дату ремонта |  | 10min | 2026-09-29 09:00 | 2026-09-29 09:10 | 101 |  |  | 117.57d |  | start no earlier than 2026-09-29 09:00 | Зорькин В | 0.17h |  |
| 103 | 1.38 | закреить отбойник корридор навесок (заанкерить) |  | 1h | 2026-09-03 09:00 A | 2026-09-03 10:00 A |  | 100% |  |  |  | start no earlier than 2026-09-03 08:00 | Бобренок В | 1h | 1h |
| 104 | 1.39 | Переподключение кондиционера срежима кондиционера на автоматический |  | 15min | 2026-09-02 09:00 A | 2026-09-02 09:15 A |  | 100% |  |  |  | start no earlier than 2026-09-02 09:00 | Бобренок В | 0.25h | 0.25h |
| 105 | 1.40 | Замена редуктора поворотного стола |  | 1h | 2026-09-02 09:00 A | 2026-09-02 10:00 A |  | 100% |  |  |  | start no earlier than 2026-09-02 09:00 | Бобренок В | 1h | 1h |
| 106 | 1.41 | Программирование частотника теко 0,4 привод смещения ленты |  | 2h | 2026-09-02 09:00 A | 2026-09-02 11:00 A |  | 100% |  |  |  | start no earlier than 2026-09-02 09:00 | Тимофеев В | 2h | 2h |
| 107 | 1.42 | Прозвонить кабель паллетных весов ошибка Error 10 |  | 1h | 2026-09-07 09:00 A | 2026-09-07 10:00 A |  | 100% |  |  |  | start no earlier than 2026-09-05 09:00 | Дедов В | 1h | 1h |
| 108 | 1.43 | Замена подшипников на ножевом узле |  | 2h | 2026-09-01 09:00 A | 2026-09-01 11:00 A |  | 100% |  |  |  | start no earlier than 2026-09-01 09:00 | Бундин В | 2h | 2h |
| 109 | 1.44 | Замена насоса на водяной рубашке жиротопке 2 этаж |  | 2h | 2026-09-01 09:00 A | 2026-09-01 11:00 A |  | 100% |  |  |  | start no earlier than 2026-09-01 09:00 | Бундин В | 2h | 2h |
| 110 | 1.45 | Замена контактора 1 линия 2 зона экструдера |  | 1h | 2026-09-01 09:00 A | 2026-09-01 10:00 A |  | 100% |  |  |  | start no earlier than 2026-09-01 09:00 | Бундин В | 1h | 1h |
| 111 | 1.46 | Редуктор смесителя 1 линия, собрать информацию, что не так, что нужно сделать |  | 30min | 2026-09-02 09:00 A | 2026-09-02 09:30 A |  | 100% |  |  |  | start no earlier than 2026-09-02 09:00 | Тимофеев В | 0.5h | 0.5h |
| 112 | 1.47 | Ремонт мухобойки 1 цех в корридоре завоза навесок |  | 1h | 2026-09-01 09:00 A | 2026-09-01 10:00 A |  | 100% |  |  |  | start no earlier than 2026-09-01 09:00 | Труфанов А | 1h | 1h |
| 113 | 1.48 | капает с кондиционера ближе к жировику (устранить) |  | 2h | 2026-08-31 09:00 A | 2026-08-31 11:00 A |  | 100% |  |  |  | start no earlier than 2026-08-31 09:00 | Бундин В; Тимофеев В | 4h | 4h |
| 114 | 1.49 | отвезти внутренний блок с 1 цеха на синий склад | manual | 1h | 2026-08-30 09:00 A | 2026-08-30 10:00 A |  | 100% |  |  |  | start no earlier than 2026-08-30 09:00 | Бундин В | 1h | 1h |
| 115 | 1.50 | чистка фильтра кондиционера между печками | manual | 1h | 2026-08-31 09:00 A | 2026-08-31 10:00 A |  | 100% |  |  |  | start no earlier than 2026-08-31 09:00 | Бундин В | 1h | 1h |
| 116 | 1.51 | ревизия приточной вентиляции (протяжка контактов и т.д.) | manual | 3h | 2026-08-31 09:00 A | 2026-08-31 12:00 A |  | 100% |  |  |  | start no earlier than 2026-08-31 09:00 | Дедов В | 3h | 3h |
| 117 | 1.52 | прикрутить лоток между барабанами, чтобы не бил о лопасти 1 линия | manual | 1h | 2026-08-30 09:00 A | 2026-08-30 10:00 A |  | 100% |  |  |  | start no earlier than 2026-08-30 09:00 | Бундин В | 1h | 1h |
| 118 | 1.53 | улитка на подиуме за цехом, прикрутить отвод в бок (отвод под подиумом) | manual | 1h | 2026-08-31 09:00 A | 2026-08-31 10:00 A |  | 100% |  |  |  | start no earlier than 2026-08-31 09:00 | Бундин В | 1h | 1h |
| 119 | 1.54 | течет вода с поломоечной машинки - разобраться | manual | 2h | 2026-08-31 09:00 A | 2026-08-31 11:00 A |  | 100% |  |  |  | start no earlier than 2026-08-31 09:00 | Дедов В | 2h | 2h |

| ID | WBS | Task | Duration | Start | Finish | Predecessors | Complete | Remaining | Total slack | Free slack | Constraint | Resources | Work | Actual work |
| --- | --- | --- | --- | --- | --- | --- | --- | --- | --- | --- | --- | --- | --- | --- |
| 120 | 1.55 | **почистить шнек сухого гидрализата (1 линия)** | 0.12d | 2026-08-28 08:00 A | 2026-08-28 10:00 A |  | 100% |  |  |  |  | Бобренок В | 3h | 3h |
| 121 | 1.55.1 | замена пошипников | 1h | 2026-08-28 08:00 A | 2026-08-28 10:00 A |  | 100% |  |  |  | start no earlier than 2026-08-28 08:00 | Тимофеев В; Некрасов А | 2h | 2h |
| 122 | 1.56 | замена фильтров на приточке | 1h | 2026-08-27 09:00 A | 2026-08-27 10:00 A |  | 100% |  |  |  | start no earlier than 2026-08-27 09:00 | Дедов В | 1h | 1h |
| 123 | 1.57 | **продумать как сделать герметичную крышку на смесителе сухого гидрализата** | 36.25d | 2026-08-27 09:00 A | 2026-10-06 11:00 |  | 57% | 15.54d | 111.34d |  |  |  | 20h | 12h |
| 124 | 1.57.1 | печать уплотненителей крышек | 4h | 2026-09-28 09:00 | 2026-09-28 13:00 |  |  |  | 117.84d | 6.5d | start no earlier than 2026-09-28 09:00 | Домоводов К | 4h |  |
| 125 | 1.57.2 | изготовить крышку (расскажу по телефону) | 4h | 2026-08-27 09:00 A | 2026-08-27 13:00 A |  | 100% |  |  |  | start no earlier than 2026-08-27 09:00 | Бобренок В; Шуранов Ю | 8h | 8h |
| 126 | 1.57.3 | изготовить крышку для 2 линии (как сделал Слава) | 4h | 2026-09-01 09:00 A | 2026-09-01 13:00 A |  | 100% |  |  |  | start no earlier than 2026-09-01 09:00 | Макаревич А | 4h | 4h |
| 127 | 1.57.4 | установка на струбцинах с уплотнителями | 2h | 2026-10-06 09:00 | 2026-10-06 11:00 | 124 |  |  | 111.34d |  | start no earlier than 2026-10-06 09:00 | Тимофеев В; Домоводов К | 4h |  |
| 128 | 1.58 | **метал от тенов печи, устранить причину** | 15.38d? | 2026-08-24 09:00 A | 2026-09-11 12:00 A |  | 100% |  |  |  |  |  | 5.42h | 5.42h |
| 129 | 1.58.1 | выяснить сгорел тен русский или китайский (будет ночью остановка) | 15min | 2026-08-27 09:00 A | 2026-08-27 09:15 A |  | 100% |  |  |  | start no earlier than 2026-08-27 09:00 | Бобренок В | 0.25h | 0.25h |
| 130 | 1.58.2 | вскрыть 2 зону и посмотреть какой тен (мойка) | 1h | 2026-08-31 09:00 A | 2026-08-31 10:00 A |  | 100% |  |  |  | start no earlier than 2026-09-02 09:00 | Некрасов А | 1h | 1h |
| 131 | 1.58.3 | осмотр состояния тенов/ планирование замены | 10min | 2026-08-27 09:00 A | 2026-08-27 09:10 A |  | 100% |  |  |  | start no earlier than 2026-08-27 09:00 | Бобренок В | 0.17h | 0.17h |
| 132 | 1.58.4 | выяснить статус поставки тенов из китая | 1h | 2026-08-24 09:00 A | 2026-08-24 10:00 A |  | 100% |  |  |  | start no earlier than 2026-08-24 09:00 | Шуранов Ю | 1h | 1h |
| 133 | 1.58.5 | замена заброкованных осмотром тенов | 3h? | 2026-09-11 09:00 A | 2026-09-11 12:00 A |  | 100% |  |  |  | start no earlier than 2026-09-11 09:00 | Тимофеев В | 3h | 3h |
| 134 | 1.59 | замена плата 485 в контроллере 2 линия | 1h | 2026-08-21 09:00 A | 2026-08-21 10:00 A |  | 100% |  |  |  | start no earlier than 2026-08-21 09:00 | Дедов В | 1h | 1h |
| 135 | 1.60 | перемонтаж частотный привод сух гидролизат | 2h | 2026-09-02 09:00 A | 2026-09-02 11:00 A |  | 100% |  |  |  | start no earlier than 2026-09-04 09:00 | Некрасов А; Дедов В | 4h | 4h |
| 136 | 1.61 | поменять светильник где вывозят готовую продукцию (с люлки) | 2h | 2026-08-31 09:00 A | 2026-08-31 11:00 A |  | 100% |  |  |  | start no earlier than 2026-08-31 09:00 | Тимофеев В; Бундин В | 4h | 4h |
| 137 | 1.62 | на нотис настроить кнопку, чтобы работала в цикле | 1h | 2026-08-20 09:00 A | 2026-08-20 10:00 A |  | 100% |  |  |  | start no earlier than 2026-08-20 09:00 | Дедов В | 1h | 1h |
| 138 | 1.63 | изготовление герметичной крышки под мойкой экструдера (объясню по телефону) занкрепить на анкера | 2h | 2026-08-19 08:00 A | 2026-08-19 11:00 A |  | 100% |  |  |  | start no earlier than 2026-08-19 08:00 | Бобренок В | 2h | 2h |
| 139 | 1.64 | **проверка пылесоса, почему не стартует (в слесарке)** | 1d? | 2026-08-25 09:00 A | 2026-08-25 18:00 A |  | 100% |  |  |  |  | Бобренок В | 16h | 16h |
| 140 | 1.64.1 | заказать двигатель и выяснить на гарантии он или нет | 1d? | 2026-08-25 09:00 A | 2026-08-25 18:00 A |  | 100% |  |  |  | start no earlier than 2026-08-25 08:00 | Шуранов Ю | 8h | 8h |
| 141 | 1.65 | ремонт свет в раздевалке | 30min | 2026-08-14 09:00 A | 2026-08-14 09:30 A |  | 100% |  |  |  | start no earlier than 2026-08-14 09:00 | Бундин В | 0.5h | 0.5h |
| 142 | 1.66 | стиральная машинка проверка насоса слива, разборка, фото шильдик. Не качает. | 2h | 2026-08-15 09:00 A | 2026-08-17 11:00 A |  | 100% |  |  |  | start no earlier than 2026-08-15 09:00 | Бундин В | 2h | 2h |
| 143 | 1.67 | **настройка пробники на толстую цветную пленку** | 9.38d? | 2026-08-14 09:00 A | 2026-08-27 12:00 A |  | 100% |  |  |  |  |  | 25.25h | 25.25h |
| 144 | 1.67.1 | тест пленки на пробнике с Луговских В в 11 00 | 1h | 2026-08-14 09:00 A | 2026-08-14 10:00 A |  | 100% |  |  |  | start no earlier than 2026-08-14 09:00 | Тимофеев В | 1h | 1h |
| 145 | 1.67.2 | установить протяжной ролик к турбе от ТЕКО 1.5 с синего,снять с синего примерка | 2h | 2026-08-17 09:00 A | 2026-08-17 11:00 A |  | 100% |  |  |  | start no earlier than 2026-08-17 09:00 | Тимофеев В | 2h | 2h |
| 146 | 1.67.3 | настройка пробника с режимом фотометки | 1h | 2026-08-27 09:00 A | 2026-08-27 10:00 A |  | 100% |  |  |  | start no earlier than 2026-08-27 09:00 | Дедов В | 1h | 1h |
| 147 | 1.67.4 | получить пневмоцилиндр | 15min | 2026-08-20 09:00 A | 2026-08-20 09:15 A |  | 100% |  |  |  | start no earlier than 2026-08-20 09:00 | Тимофеев В | 0.25h | 0.25h |
| 148 | 1.67.5 | изготовление крепления вспомогательной протяжки | 6h | 2026-08-21 09:00 A | 2026-08-21 16:00 A |  | 100% |  |  |  | start no earlier than 2026-08-21 09:00 | Тимофеев В | 6h | 6h |
| 149 | 1.67.6 | подключение частотника через реле от двигателя протяжки (спросить Константина) | 1d? | 2026-08-25 09:00 A | 2026-08-25 18:00 A |  | 100% |  |  |  | start no earlier than 2026-08-25 08:00 | Бундин В | 8h | 8h |
| 150 | 1.67.7 | настройка частотника для работы пробника | 3h | 2026-08-27 09:00 A | 2026-08-27 12:00 A |  | 100% |  |  |  | start no earlier than 2026-08-27 09:00 | Тимофеев В; Шуранов Ю | 6h | 6h |
| 151 | 1.67.8 | жалобы, что пробники бьют периодически током- проверить соединения, контакты и т.д. | 1h | 2026-08-26 08:00 A | 2026-08-26 10:00 A |  | 100% |  |  |  | start no earlier than 2026-08-26 08:00 | Бобренок В | 1h | 1h |
| 152 | 1.68 | настройка параметров ЧП сухой ГДЗ сбиты, переставлен с линии 2. Снял Слава, найти. Настройка в птц | 15min | 2026-08-20 09:00 A | 2026-08-20 09:15 A |  | 100% |  |  |  | start no earlier than 2026-08-20 09:00 | Дедов В | 0.25h | 0.25h |

| ID | WBS | Task | Type | Duration | Start | Finish | Predecessors | Complete | Remaining | Total slack | Free slack | Constraint | Resources | Work | Actual work |
| --- | --- | --- | --- | --- | --- | --- | --- | --- | --- | --- | --- | --- | --- | --- | --- |
| 153 | 1.69 | **ТЕКО ремонт кнопки, которую снял Бобренок В , вернуть то что снял с 3ц** |  | 19.12d | 2026-08-13 09:00 A | 2026-09-08 10:00 A |  | 100% |  |  |  |  |  | 2.75h | 2.75h |
| 154 | 1.69.1 | осмотр |  | 30min | 2026-08-13 09:00 A | 2026-08-13 09:30 A |  | 100% |  |  |  | start no earlier than 2026-08-13 09:00 | Домоводов К | 0.5h | 0.5h |
| 155 | 1.69.2 | заявка в ТЕКО платы |  | 30min | 2026-08-18 09:00 A | 2026-08-18 09:30 A | 154 | 100% |  |  |  | start no earlier than 2026-08-18 09:00 | Зорькин В | 0.5h | 0.5h |
| 156 | 1.69.3 | контроль поставки |  | 15min | 2026-09-04 09:00 A | 2026-09-04 09:15 A | 155FS+10d | 100% |  |  |  | start no earlier than 2026-09-04 09:00 | Зорькин В | 0.25h | 0.25h |
| 157 | 1.69.4 | монтаж платы на место |  | 1h | 2026-09-08 09:00 A | 2026-09-08 10:00 A | 156FS+1d | 100% |  |  |  | start no earlier than 2026-09-09 09:00 | Тимофеев В | 1h | 1h |
| 158 | 1.69.5 | Вернуть голову с восстановленной клавиатурой на НОТИС в 3 цех |  | 30min | 2026-09-08 09:00 A | 2026-09-08 09:30 A |  | 100% |  |  |  | start no earlier than 2026-09-09 09:00 | Тимофеев В | 0.5h | 0.5h |
| 159 | 1.70 | установить вент решетки на трассу кондиционера |  | 30min | 2026-08-12 09:00 A | 2026-08-12 09:30 A |  | 100% |  |  |  | start no earlier than 2026-08-12 09:00 | Труфанов А; Некрасов А | 1h | 1h |
| 160 | 1.71 | течь сливной трубы кондиционара править трассу |  | 2h | 2026-08-12 09:00 A | 2026-08-12 11:00 A |  | 100% |  |  |  | start no earlier than 2026-08-12 09:00 | Труфанов А; Некрасов А | 4h | 4h |
| 161 | 1.72 | слить конденсат и чистка фильтров, продуть радиаторы компрессора | manual | 2h | 2026-08-09 09:00 A | 2026-08-09 11:00 A |  | 100% |  |  |  | start no earlier than 2026-08-09 09:00 | Бундин В | 2h | 2h |
| 162 | 1.73 | заменить камеру над квадропаком (слева) -камера у нас в слесарке, взять в помощь оператора | manual | 1h | 2026-08-09 09:00 A | 2026-08-09 10:00 A |  | 100% |  |  |  | start no earlier than 2026-08-09 09:00 | Бундин В | 1h | 1h |
| 163 | 1.74 | дверь тяжело открывается в гидрализаторную (попробовать поправить, задевает металл-металл) |  | 1h | 2026-08-06 09:00 A | 2026-08-06 10:00 A |  | 100% |  |  |  | start no earlier than 2026-08-06 08:00 | Труфанов А | 1h | 1h |
| 164 | 1.75 | заменить плафон в душе | manual | 1h | 2026-08-06 09:00 A | 2026-08-06 10:00 A |  | 100% |  |  |  | start no earlier than 2026-08-06 09:00 | Бундин В | 1h | 1h |
| 165 | 1.76 | ТО пробники и Теко 0,4 (чистка тен, ножей, смазка) |  | 4h | 2026-08-05 08:00 A | 2026-08-05 13:00 A |  | 100% |  |  |  | start no earlier than 2026-08-05 08:00 | Макаревич А | 4h | 4h |
| 166 | 1.77 | **палетообмостчик монтаж в 1ц** |  | 46.38d | 2026-08-12 09:00 A | 2026-10-05 12:00 |  | 29% | 32.74d | 112.22d |  |  |  | 7.25h | 1.25h |
| 167 | 1.77.1 | получить договор + счет |  | 1h | 2026-08-12 09:00 A | 2026-08-12 10:00 A |  | 100% |  |  |  | start no earlier than 2026-08-12 09:00 | Зорькин В | 1h | 1h |
| 168 | 1.77.2 | **согласвоание договор** |  | 2.89d | 2026-08-12 10:00 A | 2026-08-17 09:05 A | 167 | 100% |  |  |  |  |  | 0.17h | 0.17h |
| 169 | 1.77.2.1 | передать Маше |  | 5min | 2026-08-12 10:00 A | 2026-08-12 10:05 A |  | 100% |  |  |  | start no earlier than 2026-08-12 09:00 | Домоводов К | 0.08h | 0.08h |
| 170 | 1.77.2.2 | контроль |  | 5min | 2026-08-17 09:00 A | 2026-08-17 09:05 A | 169FS+3d | 100% |  |  |  | start no earlier than 2026-08-17 09:00 | Домоводов К | 0.08h | 0.08h |
| 171 | 1.77.3 | оплата подать счет | milestone | 0d | 2026-08-12 09:00 A | 2026-08-12 09:00 A |  | 100% |  |  |  | start no earlier than 2026-08-12 09:00 | Домоводов К |  |  |
| 172 | 1.77.4 | доставка конетроль |  | 5min | 2026-09-01 09:00 A | 2026-09-01 09:05 A |  | 100% |  |  |  | start no earlier than 2026-09-01 09:00 | Зорькин В | 0.08h | 0.08h |
| 173 | 1.77.5 | монтаж |  | 3h | 2026-10-05 09:00 | 2026-10-05 12:00 |  |  |  | 112.22d |  | start no earlier than 2026-10-05 09:00 | Некрасов А; Труфанов А | 6h |  |
| 174 | 1.78 | **замена сетка печи линия 1** |  | 44.09d? | 2026-08-12 09:00 A | 2026-10-02 09:45 |  | 5% | 41.71d? | 114.5d |  |  |  | 9.5h | 0.75h |
| 175 | 1.78.1 | замерить параметры сетки |  | 15min | 2026-08-12 09:00 A | 2026-08-12 09:15 A |  | 100% |  |  |  | start no earlier than 2026-08-12 09:00 | Домоводов К; Тимофеев В | 0.5h | 0.5h |
| 176 | 1.78.2 | получить счет на сетку КИТАЙ |  | 15min | 2026-08-17 09:00 A | 2026-08-17 09:15 A | 175 | 100% |  |  |  | start no earlier than 2026-08-17 09:00 | Зорькин В | 0.25h | 0.25h |
| 177 | 1.78.3 | контроль оплата | milestone | 0d | 2026-08-21 09:00 A | 2026-08-21 09:00 A | 176FS+2d | 100% |  |  |  | start no earlier than 2026-08-21 09:00 | Зорькин В |  |  |
| 178 | 1.78.4 | контроль доставки |  | 15min | 2026-09-30 09:00 | 2026-09-30 09:15 | 177FS+30d |  |  | 114.5d | 0d | start no earlier than 2026-09-30 09:00 | Зорькин В | 0.25h |  |
| 179 | 1.78.5 | приемка |  | 30min | 2026-09-30 09:15 | 2026-09-30 09:45 | 178 |  |  | 114.5d | 0d | start no earlier than 2026-08-10 08:00 | Зорькин В | 0.5h |  |
| 180 | 1.78.6 | замена |  | 1d? | 2026-10-01 09:45 | 2026-10-02 09:45 | 179FS+1d |  |  | 114.5d |  | start no earlier than 2026-09-26 09:00 | Тимофеев В | 8h |  |

| ID | WBS | Task | Type | Duration | Start | Finish | Predecessors | Complete | Remaining | Actual finish | Total slack | Constraint | Resources | Work | Actual work |
| --- | --- | --- | --- | --- | --- | --- | --- | --- | --- | --- | --- | --- | --- | --- | --- |
| 181 | 1.79 | **зависает диспелей на расходомере 2л** |  | 49.06d | 2026-08-11 09:00 A | 2026-10-07 09:30 |  | 82% | 8.92d |  | 110.53d |  |  | 2.75h | 2.25h |
| 182 | 1.79.1 | контроль поставки |  | 15min | 2026-08-11 09:00 A | 2026-08-11 09:15 A |  | 100% |  |  |  | start no earlier than 2026-08-11 09:00 | Домоводов К | 0.25h | 0.25h |
| 183 | 1.79.2 | замена кабель к монитору |  | 30min | 2026-08-19 09:00 A | 2026-08-19 09:30 A | 182 | 100% |  |  |  | start no earlier than 2026-08-19 09:00 | Домоводов К | 0.5h | 0.5h |
| 184 | 1.79.3 | объеденить минус шину контроллера с нулевым проводом оборудования ч/з резистор 10 Ом |  | 30min | 2026-10-07 09:00 | 2026-10-07 09:30 |  |  |  |  | 110.53d | start no earlier than 2026-10-07 09:00 | Дедов В | 0.5h |  |
| 185 | 1.79.4 | замена кабель от ЧП к контроллеру на экранированный |  | 30min | 2026-08-24 09:00 A | 2026-08-24 09:30 A |  | 100% |  |  |  | start no earlier than 2026-08-24 09:00 | Домоводов К | 0.5h | 0.5h |
| 186 | 1.79.5 | замена блок питания 5в |  | 1h | 2026-08-13 09:00 A | 2026-08-13 10:00 A |  | 100% |  |  |  | start no earlier than 2026-08-13 09:00 | Труфанов А | 1h | 1h |
| 187 | 1.80 | подключить розетку на правой ноге квадропака (отключить квадропак на 5 минут) |  | 2h | 2026-08-11 09:00 A | 2026-08-11 11:00 A |  | 100% |  |  |  | start no earlier than 2026-08-11 09:00 | Бобренок В | 2h | 2h |
| 188 | 1.81 | **перенос вентилятор охладителя линия2 в реверс, убрать шкаф** |  | 24.12d | 2026-08-18 09:00 A | 2026-09-16 10:00 A |  | 100% |  |  |  |  |  | 38.25h | 38.25h |
| 189 | 1.81.1 | проектирование рамы |  | 2d | 2026-08-19 09:00 A | 2026-08-20 18:00 A |  | 100% |  |  |  | start no earlier than 2026-08-19 09:00 | Зорькин В | 16h | 16h |
| 190 | 1.81.2 | чертеж рамы под вентилятор |  | 2h | 2026-08-18 09:00 A | 2026-08-18 11:00 A |  | 100% |  |  |  | start no earlier than 2026-08-18 09:00 | Зорькин В; Домоводов К | 4h | 4h |
| 191 | 1.81.3 | заявка вент фитинги |  | 1h | 2026-08-21 09:00 A | 2026-08-21 10:00 A | 190 | 100% |  |  |  | start no earlier than 2026-08-21 09:00 | Зорькин В | 1h | 1h |
| 192 | 1.81.4 | конроль поставки |  | 15min | 2026-09-09 09:00 A | 2026-09-09 09:15 A | 191FS+10d | 100% |  |  |  | start no earlier than 2026-09-09 09:00 | Зорькин В | 0.25h | 0.25h |
| 193 | 1.81.5 | сборка рама |  | 4h | 2026-09-07 09:00 A | 2026-09-07 13:00 A |  | 100% |  |  |  | start no earlier than 2026-09-07 09:00 | Некрасов А; Труфанов А | 8h | 8h |
| 194 | 1.81.6 | модернизация венттилятора/монтаж вентилляции |  | 4h | 2026-09-11 09:00 A | 2026-09-11 13:00 A | 193 | 100% |  |  |  | start no earlier than 2026-09-11 09:00 | Некрасов А; Труфанов А | 8h | 8h |
| 195 | 1.81.7 | Подключение улитки, монтаж щитка к стене |  | 1h | 2026-09-16 09:00 A | 2026-09-16 10:00 A |  | 100% |  |  |  | start no earlier than 2026-09-16 09:00 | Макаревич А | 1h | 1h |
| 196 | 1.82 | **ревизия красного смесителя 2 линия (просыпается мука)** |  | 34.03d | 2026-08-17 09:00 A | 2026-09-25 09:15 |  | 92% | 2.62d |  | 121.56d |  |  | 3.25h | 3h |
| 197 | 1.82.1 | подтянуть торцевое уплотнение смесителя |  | 30min | 2026-08-17 09:00 A | 2026-08-17 09:30 A |  | 100% |  |  |  | start no earlier than 2026-08-17 09:00 | Бундин В | 0.5h | 0.5h |
| 198 | 1.82.2 | запрос штатное уплотнеие у производителя / заявка |  | 30min | 2026-08-19 09:00 A | 2026-08-19 09:30 A |  | 100% |  |  |  | start no earlier than 2026-08-19 09:00 | Шуранов Ю | 0.5h | 0.5h |
| 199 | 1.82.3 | контроль поставки уплотнение торцевое вала |  | 15min | 2026-09-25 09:00 | 2026-09-25 09:15 | 198FS+5d |  |  |  | 121.56d | start no earlier than 2026-09-25 09:00 | Зорькин В | 0.25h |  |
| 200 | 1.82.4 | замена |  | 2h | 2026-09-01 09:00 A | 2026-09-01 11:00 A | 199FS+1d | 100% |  |  |  | start no earlier than 2026-09-04 09:00 | Тимофеев В | 2h | 2h |
| 201 | 1.83 | шум зл двигателя 2 линия / смазка |  | 1h | 2026-08-10 08:00 A | 2026-08-10 10:00 A |  | 100% |  |  |  | start no earlier than 2026-08-10 08:00 | Тимофеев В | 1h | 1h |
| 202 | 1.84 | натяжка транспортер №2 линия 2 |  | 2h | 2026-08-12 09:00 A | 2026-08-12 11:00 A |  | 100% |  |  |  | start no earlier than 2026-08-12 09:00 | Тимофеев В | 2h | 2h |
| 203 | 1.85 | монтаж- подключение внутреннего блока кондиционера |  | 2h | 2026-08-05 09:00 A | 2026-08-05 11:00 A |  | 100% |  |  |  | start no earlier than 2026-08-05 09:00 | Труфанов А; Тимофеев В | 4h | 4h |
| 204 | 1.86 | **теко 0,4 -восстановить или заменить блок для тепловухи** |  | 1.12d? | 2026-08-04 09:00 A | 2026-08-05 10:00 |  | 100% |  | 2026-08-05 18:00 |  |  | Макаревич А | 17h | 17h |
| 205 | 1.86.1 | проверить подключение транспортера и тепловуху |  | 1d? | 2026-08-05 09:00 A | 2026-08-05 18:00 A |  | 100% |  |  |  | start no earlier than 2026-08-05 09:00 | Шуранов Ю | 8h | 8h |
| 206 | 1.87 | замена перегоревших светильников, монтаж доп. Светильников (Шуранов- покажу) |  | 4h | 2026-08-05 09:00 A | 2026-08-05 13:00 A |  | 100% |  |  |  | start no earlier than 2026-08-12 09:00 | Труфанов А; Тимофеев В | 8h | 8h |
| 207 | 1.88 | включить мухоловку 1 линия экструдер | manual | 0.5h | 2026-08-02 09:00 A | 2026-08-02 09:30 A |  | 100% |  |  |  | start no earlier than 2026-08-02 09:00 | Бобренок В | 0.5h | 0.5h |
| 208 | 1.89 | пропадает питание на весах смесителя 2 линия- проверить | manual | 1h | 2026-08-01 09:00 A | 2026-08-01 10:00 A |  | 100% |  |  |  | start no earlier than 2026-08-01 09:00 | Бундин В | 1h | 1h |
| 209 | 1.90 | эксперимент с лейкой жиры |  | 2h | 2026-08-06 09:00 A | 2026-08-06 11:00 A |  | 100% |  |  |  | start no earlier than 2026-08-07 09:00 | Тимофеев В | 2h | 2h |
| 210 | 1.91 | камера над компрессором снять и поменять (камеры у нас в кабинете) |  | 1h | 2026-08-03 09:00 A | 2026-08-03 10:00 A |  | 100% |  |  |  | start no earlier than 2026-08-03 09:00 | Макаревич А; Тимофеев В | 2h | 2h |
| 211 | 1.92 | на мезонине смотрит на квадропак, поменять и сделать чуть ниже обзор |  | 1h | 2026-08-03 09:00 A | 2026-08-03 10:00 A |  | 100% |  |  |  | start no earlier than 2026-08-03 09:00 | Макаревич А; Тимофеев В | 2h | 2h |
| 212 | 1.93 | камера 1 линия повернуть чуть правее и приподнять |  | 1h | 2026-08-03 09:00 A | 2026-08-03 10:00 A |  | 100% |  |  |  | start no earlier than 2026-08-03 09:00 | Макаревич А; Тимофеев В | 2h | 2h |
| 213 | 1.94 | камера на углу, где вывозят готовую продукцию с люльки поменять (камеры у нас в кабинете) |  | 2h | 2026-08-03 09:00 A | 2026-08-03 11:00 A |  | 100% |  |  |  | start no earlier than 2026-08-03 09:00 | Макаревич А; Тимофеев В | 4h | 4h |
| 214 | 1.95 | повесить камеру над входом в фасовку, чтобы смотрела на коридор и как обрабатывают руки, монтаж кабеля |  | 3h | 2026-08-03 09:00 A | 2026-08-03 12:00 A |  | 100% |  |  |  | start no earlier than 2026-08-03 09:00 | Макаревич А; Тимофеев В | 6h | 6h |

| ID | WBS | Task | Type | Duration | Start | Finish | Predecessors | Complete | Remaining | Total slack | Free slack | Constraint | Resources | Work | Actual work |
| --- | --- | --- | --- | --- | --- | --- | --- | --- | --- | --- | --- | --- | --- | --- | --- |
| 215 | 1.96 | **снять камеру зона экструдера и повесить на жирах со стороны экструдера, монтаж кабель** |  | 0.12d | 2026-09-09 09:00 A | 2026-09-09 10:00 A |  | 100% |  |  |  |  |  | 2h | 2h |
| 216 | 1.96.1 | на мойке попробовать снять камеру |  | 1h | 2026-09-09 09:00 A | 2026-09-09 10:00 A |  | 100% |  |  |  | start no earlier than 2026-09-09 09:00 | Труфанов А; Некрасов А | 2h | 2h |
| 217 | 1.97 | открутить полочку на столе на жирах, сделать ребра жесткости |  | 1h | 2026-07-31 09:00 A | 2026-07-31 10:00 A |  | 100% |  |  |  | start no earlier than 2026-07-31 08:00 | Бундин В | 1h | 1h |
| 218 | 1.98 | слив конденсата с компрессора и продуть радиаторы и фильтры |  | 1h | 2026-07-31 08:00 A | 2026-07-31 10:00 A |  | 100% |  |  |  | start no earlier than 2026-07-31 08:00 | Тимофеев В | 1h | 1h |
| 219 | 1.99 | Ревизия головы от Нотис/заключение |  | 1h | 2026-07-27 08:00 A | 2026-07-27 10:00 A |  | 100% |  |  |  | start no earlier than 2026-07-27 08:00 | Дедов В | 1h | 1h |
| 220 | 1.100 | Снять клавиатуру с головы нотис, подготовить ее к замене лежит на верстаке |  | 30min | 2026-07-29 08:00 A | 2026-07-29 09:30 A |  | 100% |  |  |  | start no earlier than 2026-07-29 08:00 | Дедов В | 0.5h | 0.5h |
| 221 | 1.101 | Ремонт клавиатуры от головы нотис, клаву получить на складе, голову взять у нас в кабинете |  | 1h | 2026-09-01 09:00 A | 2026-09-01 10:00 A |  | 100% |  |  |  | start no earlier than 2026-09-01 08:00 | Бундин В | 1h | 1h |
| 222 | 1.102 | **ремонт кондиционер зона фасовки** |  | 0.5d | 2026-07-16 09:00 A | 2026-07-16 13:00 A |  | 100% |  |  |  |  |  | 6h | 6h |
| 223 | 1.102.1 | демонтаж внутреннего блока |  | 2h | 2026-07-16 09:00 A | 2026-07-16 11:00 A |  | 100% |  |  |  | start no earlier than 2026-07-16 09:00 | Некрасов А; Труфанов А | 4h | 4h |
| 224 | 1.102.2 | разборка, отделить испаритель от рамы |  | 1h | 2026-07-16 11:00 A | 2026-07-16 12:00 A | 223 | 100% |  |  |  | start no earlier than 2026-07-15 09:00 | Бундин В | 1h | 1h |
| 225 | 1.102.3 | опресовка в воде |  | 1h | 2026-07-16 12:00 A | 2026-07-16 13:00 A | 224 | 100% |  |  |  | start no earlier than 2026-07-15 09:00 | Бундин В | 1h | 1h |
| 226 | 1.103 | редуктор конвейера выгрузки пакетов квадропак -> обеспечить гибкое соединеине к раме, жесткое будет ломать либо вал либо редутор |  | 2h | 2026-07-16 09:00 A | 2026-07-16 11:00 A |  | 100% |  |  |  | start no earlier than 2026-07-16 09:00 | Некрасов А | 2h | 2h |
| 227 | 1.104 | **выполнить смотровые люки состояния цепи средниий и верхние этажи. На торцевой крышке с стороны экструдера.** |  | 37d | 2026-07-14 09:00 A | 2026-09-02 18:00 |  | 13% | 32.29d | 142.59d |  |  |  | 9.17h | 1.17h |
| 228 | 1.104.1 | заявка шарниры нерж + бугельный зажим |  | 1h | 2026-07-14 09:00 A | 2026-07-14 10:00 A |  | 100% |  |  |  | start no earlier than 2026-07-14 08:00 | Домоводов К | 1h | 1h |
| 229 | 1.104.2 | контроль доставка |  | 10min | 2026-08-17 09:00 A | 2026-08-17 09:10 A | 228FS+7d | 100% |  |  |  | start no earlier than 2026-08-17 09:00 | Шуранов Ю | 0.17h | 0.17h |
| 230 | 1.104.3 | монтаж 1 линия |  | 4h | 2026-09-02 09:00 | 2026-09-02 13:00 | 229FS+1d |  |  | 142.59d | 0d | start no earlier than 2026-09-02 09:00 | Макаревич А | 4h |  |
| 231 | 1.104.4 | монтаж 2 линия |  | 4h | 2026-09-02 14:00 | 2026-09-02 18:00 | 230 |  |  | 142.59d |  | start no earlier than 2026-07-14 08:00 | Макаревич А | 4h |  |
| 232 | 1.105 | монтаж светильник под площадку дозатора квадропака |  | 4h | 2026-07-10 09:00 A | 2026-07-10 13:00 A |  | 100% |  |  |  | start no earlier than 2026-07-10 09:00 | Бобренок В | 4h | 4h |
| 233 | 1.106 | **замена вентилятор вытяжка с экструдеров** |  | 2.25d | 2026-07-13 09:00 A | 2026-07-15 11:00 A |  | 100% |  |  |  |  |  | 13h | 13h |
| 234 | 1.106.1 | подключение воздуховоды |  | 4h | 2026-07-13 09:00 A | 2026-07-13 13:00 A |  | 100% |  |  |  | start no earlier than 2026-07-13 09:00 | Некрасов А; Бундин В | 8h | 8h |
| 235 | 1.106.2 | установить крыльчатку на мотор |  | 1h | 2026-07-14 09:00 A | 2026-07-14 10:00 A |  | 100% |  |  |  | start no earlier than 2026-07-14 08:00 | Труфанов А | 1h | 1h |
| 236 | 1.106.3 | устарнить причину вибрации мотора |  | 2h | 2026-07-15 09:00 A | 2026-07-15 11:00 A |  | 100% |  |  |  | start no earlier than 2026-07-15 09:00 | Некрасов А; Труфанов А | 4h | 4h |
| 237 | 1.107 | **сборка дозатор на квадропак** |  | 72.25d | 2026-07-09 08:00 A | 2026-10-07 11:00 |  | 93% | 4.73d | 110.34d |  |  |  | 58.83h | 55.83h |
| 238 | 1.107.1 | установить переключатель блокировки сброса дозатором |  | 30min | 2026-08-15 09:00 A | 2026-08-17 09:30 A |  | 100% |  |  |  | start no earlier than 2026-08-15 09:00 | Труфанов А | 0.5h | 0.5h |
| 239 | 1.107.2 | упорядочить схему |  | 30min | 2026-08-15 09:00 A | 2026-08-17 09:30 A |  | 100% |  |  |  | start no earlier than 2026-08-15 09:00 | Труфанов А | 0.5h | 0.5h |
| 240 | 1.107.3 | транспортировка дозатора в слесарку |  | 1h | 2026-08-04 08:00 A | 2026-08-04 10:00 A |  | 100% |  |  |  | start no earlier than 2026-08-04 08:00 | Труфанов А; Тимофеев В | 2h | 2h |
| 241 | 1.107.4 | установить розетку для дозатора. Вывод кабель сверлить платформу, что бы он был не под ногами и удобен при уборке |  | 2h | 2026-07-09 08:00 A | 2026-07-09 11:00 A |  | 100% |  |  |  | start no earlier than 2026-07-09 08:00 | Бобренок В | 2h | 2h |
| 242 | 1.107.5 | закрепить монитор фото Зорькин |  | 2h | 2026-07-09 08:00 A | 2026-07-09 11:00 A |  | 100% |  |  |  | start no earlier than 2026-07-09 08:00 | Бобренок В | 2h | 2h |
| 243 | 1.107.6 | подключение дозатора к машине / поиск кабеля в 3 цехе / изучение документации |  | 4h | 2026-07-14 09:00 A | 2026-07-14 13:00 A |  | 100% |  |  |  | start no earlier than 2026-07-14 09:00 | Труфанов А | 4h | 4h |
| 244 | 1.107.7 | подключить реле аварии дозатора паралельно датчику отсутствия пакета квадропака (схема прилагается) |  | 1h | 2026-08-12 09:00 A | 2026-08-12 10:00 A | 243 | 100% |  |  |  | start no earlier than 2026-08-12 09:00 | Труфанов А | 1h | 1h |
| 245 | 1.107.8 | калибровка весов и разгон наполнения, тестирование работы |  | 4h | 2026-08-12 09:00 A | 2026-08-12 13:00 A |  | 100% |  |  |  | start no earlier than 2026-08-12 09:00 | Труфанов А | 4h | 4h |
| 246 | 1.107.9 | монтаж кабель выравнивания потенциалов площадка дозатора и площадка квадропака |  | 30min | 2026-08-15 09:00 A | 2026-08-17 09:30 A |  | 100% |  |  |  | start no earlier than 2026-08-15 09:00 | Труфанов А | 0.5h | 0.5h |
| 247 | 1.107.10 | контроль поставки маткериал | milestone | 0d | 2026-08-27 09:00 A | 2026-08-27 09:00 A |  | 100% |  |  |  | start no earlier than 2026-08-27 09:00 | Зорькин В |  |  |
| 248 | 1.107.11 | тестирование весов / разгон |  | 2h | 2026-09-14 09:00 A | 2026-09-14 11:00 A | 247 | 100% |  |  |  | start no earlier than 2026-09-14 09:00 | Зорькин В | 2h | 2h |
| 249 | 1.107.12 | подключить синхронизацию пуска дозатора паралельно катушки открытия заслонки квадропака |  | 4h | 2026-08-04 11:00 A | 2026-08-04 16:00 A | 244 | 100% |  |  |  | start no earlier than 2026-07-16 09:00 | Труфанов А | 4h | 4h |
| 250 | 1.107.13 | монтаж перила на площадку - подготовка |  | 2h | 2026-08-14 09:00 A | 2026-08-14 11:00 A |  | 100% |  |  |  | start no earlier than 2026-08-14 09:00 | Тимофеев В | 2h | 2h |
| 251 | 1.107.14 | монтаж перила на площадку |  | 2h | 2026-08-17 09:00 A | 2026-08-17 11:00 A |  | 100% |  |  |  | start no earlier than 2026-08-17 09:00 | Тимофеев В; Бобренок В | 4h | 4h |
| 252 | 1.107.15 | сверлить для крепления перил |  | 2h | 2026-09-04 09:00 A | 2026-09-04 11:00 A | 248 | 100% |  |  |  | start no earlier than 2026-09-04 09:00 | Макаревич А | 2h | 2h |
| 253 | 1.107.16 | закрыть зад крышку |  | 20min | 2026-09-13 09:00 A | 2026-09-13 09:20 A |  | 100% |  |  |  | start no earlier than 2026-09-13 09:00 | Дедов В | 0.33h | 0.33h |
| 254 | 1.107.17 | сборка дозатор |  | 2h | 2026-09-25 09:00 A | 2026-09-25 11:00 A |  | 100% |  |  |  | start no earlier than 2026-09-28 09:00 | Труфанов А; Некрасов А | 4h | 4h |
| 255 | 1.107.18 | тест компонентов |  | 1h | 2026-09-23 09:00 A | 2026-09-23 10:00 A |  | 100% |  |  |  | start no earlier than 2026-09-23 09:00 | Зорькин В | 1h | 1h |
| 256 | 1.107.19 | установить на пружины раму дозатора + квеличить её массу |  | 4h | 2026-09-25 09:00 A | 2026-09-25 13:00 A |  | 100% |  |  |  | start no earlier than 2026-09-25 08:00 | Некрасов А; Труфанов А | 8h | 8h |
| 257 | 1.107.20 | покупка за нал / найти доп пружины |  | 1h | 2026-09-28 09:00 | 2026-09-28 10:00 |  |  |  | 118.47d |  | start no earlier than 2026-09-28 09:00 | Зорькин В | 1h |  |
| 258 | 1.107.21 | увеличить доп пружины, сжались ноль |  | 4h | 2026-10-01 09:00 A | 2026-10-01 13:00 A |  | 100% |  |  |  | start no earlier than 2026-10-02 09:00 | Некрасов А; Труфанов А | 8h | 8h |
| 259 | 1.107.22 | монтаж кнопка дозатор ОН/ОФФ |  | 1h | 2026-09-30 09:00 A | 2026-09-30 10:00 A | 253 | 100% |  |  |  | start no earlier than 2026-09-30 09:00 | Труфанов А | 1h | 1h |
| 260 | 1.107.23 | закрыть металлом пустые места между площадками квадропак и дозатор |  | 2h | 2026-10-07 09:00 | 2026-10-07 11:00 | 252 |  |  | 110.34d |  | start no earlier than 2026-10-07 09:00 | Тимофеев В | 2h |  |
| 261 | 1.107.24 | Сделать перегородки в бункер дозатора для увеличения объема секций |  | 3h | 2026-09-02 09:00 A | 2026-09-02 12:00 A |  | 100% |  |  |  | start no earlier than 2026-09-04 09:00 | Тимофеев В | 3h | 3h |
| 262 | 1.108 | навести сортиировка / порядок пандус 1ц |  | 4h | 2026-07-10 09:00 A | 2026-07-10 13:00 A |  | 100% |  |  |  | start no earlier than 2026-07-10 09:00 | Тимофеев В; Амрулин Р | 7h | 7h |

| ID | WBS | Task | Type | Duration | Start | Finish | Predecessors | Complete | Remaining | Actual start | Actual finish | Total slack | Free slack | Constraint | Resources | Work | Actual work |
| --- | --- | --- | --- | --- | --- | --- | --- | --- | --- | --- | --- | --- | --- | --- | --- | --- | --- |
| 263 | 1.109 | **Кондиционер зоны экструдера** |  | 0.5d | 2026-07-07 09:00 A | 2026-07-07 13:00 A |  | 100% |  |  |  |  |  |  |  | 4h | 4h |
| 264 | 1.109.1 | Чистка сливной магистрали |  | 4h | 2026-07-07 09:00 A | 2026-07-07 13:00 A |  | 100% |  |  |  |  |  | start no earlier than 2026-07-07 09:00 | Бундин В | 4h | 4h |
| 265 | 1.110 | **установить датчик давления на экструдер** |  | 49.53d | 2026-07-06 08:00 A | 2026-09-10 14:15 |  | 68% | 15.89d |  |  | 136.06d |  |  |  | 15.25h | 11h |
| 266 | 1.110.1 | контроль поставка фитинги |  | 15min | 2026-09-10 09:00 | 2026-09-10 09:15 |  |  |  |  |  | 136.06d | 0d | start no earlier than 2026-09-10 09:00 | Зорькин В | 0.25h |  |
| 267 | 1.110.2 | монтаж кронштейны для фиксации датчикоа давления 1+2 линия |  | 2h | 2026-07-10 09:00 A | 2026-07-10 11:00 A |  | 100% |  |  |  |  |  | start no earlier than 2026-07-10 09:00 | Макаревич А; Некрасов А | 4h | 4h |
| 268 | 1.110.3 | установить датчики давления через гидравлические шланги |  | 2h | 2026-07-06 08:00 A | 2026-07-06 11:00 A |  | 100% |  |  |  |  |  | start no earlier than 2026-07-06 08:00 | Дедов В | 2h | 2h |
| 269 | 1.110.4 | доработка кожух нож узла для закрытия |  | 2h | 2026-07-07 09:00 A | 2026-07-07 11:00 A |  | 100% |  |  |  |  |  | start no earlier than 2026-07-07 09:00 | Бобренок В | 2h | 2h |
| 270 | 1.110.5 | Прокинуть кабель ШВВП 2х0,75 от датчиков давления до регистраторов, сделать по красоте. |  | 3h | 2026-07-10 09:00 A | 2026-07-10 12:00 A |  | 100% |  |  |  |  |  | start no earlier than 2026-07-10 09:00 | Бобренок В | 3h | 3h |
| 271 | 1.110.6 | подключение датчиков давления к регистратору |  | 4h | 2026-09-10 09:15 | 2026-09-10 14:15 | 266 |  |  |  |  | 136.06d |  | start no earlier than 2026-09-02 09:00 | Домоводов К | 4h |  |
| 272 | 1.111 | печь №1 ревизия/замена перемычек |  | 4h | 2026-07-04 09:00 A | 2026-07-06 13:00 A |  | 100% |  |  |  |  |  | start no earlier than 2026-07-04 09:00 | Макаревич А | 4h | 4h |
| 273 | 1.112 | печь №2 ревизия/замена перемычек |  | 2h | 2026-07-16 09:00 A | 2026-07-16 11:00 A |  | 100% |  |  |  |  |  | start no earlier than 2026-07-16 09:00 | Бобренок В | 2h | 2h |
| 274 | 1.113 | **заменить амперметры неиспрвные на ШУ 1 и 2 линия (они на складе приехали сегодня новые посмотреть фото в выдаче)** |  | 1h? | 2026-09-04 09:00 | 2026-09-04 10:00 |  | 100% |  | 2026-09-05 09:00 | 2026-09-11 13:00 |  |  |  |  | 6h | 6h |
| 275 | 1.113.1 | монтаж - оказалить не те |  | 2h | 2026-09-05 09:00 A | 2026-09-05 11:00 A |  | 100% |  |  |  |  |  | start no earlier than 2026-09-05 09:00 | Дедов В | 2h | 2h |
| 276 | 1.113.2 | контроль датч тока | milestone | 0d | 2026-09-09 09:00 A | 2026-09-09 09:00 A |  | 100% |  |  |  |  |  | start no earlier than 2026-09-09 09:00 | Зорькин В |  |  |
| 277 | 1.113.3 | монтаж датчиковтока на 2л |  | 4h | 2026-09-11 09:00 A | 2026-09-11 13:00 A |  | 100% |  |  |  |  |  | start no earlier than 2026-09-11 09:00 | Макаревич А | 4h | 4h |
| 278 | 1.114 | **ставим 2 частотника на вентиляторы вытяжки с печек №1 и 2** |  | 0.5d | 2026-07-02 09:00 A | 2026-07-02 13:00 A |  | 100% |  |  |  |  |  |  |  | 4h | 4h |
| 279 | 1.114.1 | подключение к улиткам вытяжки 1 и 2 линия (помошника дадим) |  | 4h | 2026-07-02 09:00 A | 2026-07-02 13:00 A |  | 100% |  |  |  |  |  | start no earlier than 2026-07-02 09:00 | Тимофеев В | 4h | 4h |
| 280 | 1.115 | подключить частотный привод вентилятор на площадке жиротопки |  | 4h | 2026-07-14 09:00 A | 2026-07-14 13:00 A |  | 100% |  |  |  |  |  | start no earlier than 2026-07-14 09:00 | Дедов В | 4h | 4h |
| 281 | 1.116 | установка частотника для улитку в жиротопке (по телефону расскажу) |  | 4h | 2026-07-02 09:00 A | 2026-07-02 13:00 A |  | 100% |  |  |  |  |  | start no earlier than 2026-07-02 09:00 | Дедов В | 4h | 4h |
| 282 | 1.117 | заменить шнеки и гильзы на 2 линии (ставим усиленные, 2 гильзы) по уровню (операторы помогут) | manual | 10h | 2026-07-05 09:00 A | 2026-07-06 11:00 A |  | 100% |  |  |  |  |  | start no earlier than 2026-07-05 09:00 | Бундин В | 10h | 10h |
| 283 | 1.118 | **поменять фильтрующую ткань на фильтрах кондиционеров 1 цех** |  | 0.25d | 2026-07-01 09:00 A | 2026-07-01 11:00 A |  | 100% |  |  |  |  |  |  |  | 4h | 4h |
| 284 | 1.118.1 | установка фильтров закрываем внутренние блоки |  | 2h | 2026-07-01 09:00 A | 2026-07-01 11:00 A |  | 100% |  |  |  |  |  | start no earlier than 2026-07-01 09:00 | Макаревич А; Некрасов А | 4h | 4h |
| 285 | 1.119 | изготовление кронштейна для установки вентилятора крепим на место в зоне экструдера |  | 2h | 2026-06-30 09:00 A | 2026-06-30 11:00 A |  | 100% |  |  |  |  |  | start no earlier than 2026-06-30 09:00 | Некрасов А; Тимофеев В | 4h | 4h |
| 286 | 1.120 | снять на всех валах барабанов колеса, будем покрывать полиуретаном |  | 3h | 2026-06-29 09:00 A | 2026-06-29 12:00 A |  | 100% |  |  |  |  |  | start no earlier than 2026-06-29 09:00 | Бундин В | 3h | 3h |

| ID | WBS | Task | Type | Duration | Start | Finish | Predecessors | Complete | Actual start | Actual finish | Total slack | Free slack | Constraint | Resources | Work | Actual work |
| --- | --- | --- | --- | --- | --- | --- | --- | --- | --- | --- | --- | --- | --- | --- | --- | --- |
| 287 | 1.121 | **сборка раковина нерж для мойки конвейер** |  | 7.25d? | 2026-10-12 09:00 | 2026-10-21 11:00 |  |  |  |  | 100.34d |  |  |  | 34h |  |
| 288 | 1.121.1 | подготовить данные, оформить как проект / инициировать совещание |  | 2h | 2026-10-12 09:00 | 2026-10-12 11:00 |  |  |  |  | 100.34d | 0d | start no earlier than 2026-10-12 09:00 | Зорькин В | 2h |  |
| 289 | 1.121.2 | совещание с руководителями / фиксация решения |  | 1d? | 2026-10-13 11:00 | 2026-10-14 11:00 | 288FS+1d |  |  |  | 100.34d | 0d | start no earlier than 2026-08-31 09:00 | Зорькин В | 8h |  |
| 290 | 1.121.3 | подготовить чертеж раковины, проверить материал |  | 1d? | 2026-10-15 11:00 | 2026-10-16 11:00 | 289FS+1d |  |  |  | 100.34d | 0d | start no earlier than 2026-09-08 09:00 | Зорькин В | 8h |  |
| 291 | 1.121.4 | сборка |  | 2d | 2026-10-19 11:00 | 2026-10-21 11:00 | 290FS+1d |  |  |  | 100.34d |  | start no earlier than 2026-07-14 08:00 | Бундин В | 16h |  |
| 292 | 1.122 | ревизия шестеренок питателя 2 линия, если нужно замена с зип- питатель синий склад |  | 3h | 2026-06-29 09:00 A | 2026-06-29 12:00 A |  | 100% |  |  |  |  | start no earlier than 2026-06-29 09:00 | Бундин В | 3h | 3h |
| 293 | 1.123 | повесить полочки у ОТК в кабинете- крепеж по гипсокортону у меня на столе |  | 1h | 2026-06-26 09:00 A | 2026-06-26 10:00 A |  | 100% |  |  |  |  | start no earlier than 2026-06-26 09:00 | Тимофеев В; Дедов В | 2h | 2h |
| 294 | 1.124 | нормально прикрутить светильник на стойке со сканером QR- кодов на фасовке, если нужно заменить на другой | manual | 2h | 2026-07-03 09:00 A | 2026-07-03 11:00 A |  | 100% |  |  |  |  | start no earlier than 2026-07-03 09:00 | Макаревич А | 2h | 2h |
| 295 | 1.125 | прикрутить розетку возле ШУ приточки |  | 1h | 2026-07-04 09:00 A | 2026-07-06 10:00 A |  | 100% |  |  |  |  | start no earlier than 2026-07-04 09:00 | Дедов В | 1h | 1h |
| 296 | 1.126 | заменить светильник 50Вт на жиротопке | manual | 2h | 2026-06-27 09:00 A | 2026-06-27 11:00 A |  | 100% |  |  |  |  | start no earlier than 2026-06-27 09:00 | Дедов В | 2h | 2h |
| 297 | 1.127 | мойка внутрених и внешних блоков керхером |  | 4h | 2026-06-24 09:00 A | 2026-06-24 13:00 A |  | 100% |  |  |  |  | start no earlier than 2026-06-24 09:00 | Тимофеев В; Дедов В | 8h | 8h |
| 298 | 1.128 | 1 линия средняя зона печи 115А |  | 2h | 2026-07-01 09:00 A | 2026-07-01 11:00 A |  | 100% |  |  |  |  | start no earlier than 2026-07-01 09:00 | Некрасов А | 2h | 2h |
| 299 | 1.129 | продуть внешний блок кондиционера (посередине) |  | 2h | 2026-06-24 09:00 A | 2026-06-24 11:00 A |  | 100% |  |  |  |  | start no earlier than 2026-06-24 09:00 | Тимофеев В | 2h | 2h |
| 300 | 1.130 | слить конденсат и продуть радиаторы на компрессоре |  | 1h | 2026-06-22 09:00 A | 2026-06-22 10:00 A |  | 100% |  |  |  |  | start no earlier than 2026-06-22 08:00 | Бундин В | 1h | 1h |
| 301 | 1.131 | взять ключи на складе и повесить возле каждого щитка | manual | 1h | 2026-07-05 09:00 A | 2026-07-05 10:00 A |  | 100% |  |  |  |  | start no earlier than 2026-07-05 09:00 | Бундин В | 1h | 1h |
| 302 | 1.132 | заменить монтажную коробку- пускатели улиток, зона экструдера | manual | 1h | 2026-06-30 09:00 A | 2026-06-30 10:00 A |  | 100% |  |  |  |  | start no earlier than 2026-06-30 09:00 | Бундин В | 1h | 1h |
| 303 | 1.133 | герметизация стыков в душевой женской, потечка воды | manual | 1h | 2026-06-21 09:00 A | 2026-06-21 10:00 A |  | 100% |  |  |  |  | start no earlier than 2026-06-21 09:00 | Бундин В | 1h | 1h |
| 304 | 1.134 | **вернуть колбу уровня подачи воды на 2 линию** |  | 1h? | 2026-06-26 09:00 | 2026-06-26 10:00 |  | 100% | 2026-06-29 09:00 | 2026-06-29 18:00 |  |  |  |  | 8h | 8h |
| 305 | 1.134.1 | найти колбу |  | 1d? | 2026-06-29 09:00 A | 2026-06-29 18:00 A |  | 100% |  |  |  |  | start no earlier than 2026-06-29 09:00 | Шуранов Ю | 8h | 8h |
| 306 | 1.135 | **изготовить шило для экструдерщиков, они подскажут** |  | 1h? | 2026-06-26 09:00 | 2026-06-26 10:00 |  |  |  |  |  |  |  |  | 0.25h |  |
| 307 | 1.135.1 | заказать спицы не пустые |  | 15min | 2026-09-01 09:00 | 2026-09-01 09:15 |  |  |  |  | 144.56d |  | start no earlier than 2026-09-01 09:00 | Шуранов Ю | 0.25h |  |
| 308 | 1.136 | отключить кондеры и продуть внешние блоки кондиционеров 1 ц. |  | 2h | 2026-06-20 09:00 A | 2026-06-22 11:00 A |  | 100% |  |  |  |  | start no earlier than 2026-06-20 09:00 | Бундин В | 2h | 2h |
| 309 | 1.137 | **померить верхний воздуховод и трассу для подключения новой улитки** |  | 1d? | 2026-06-22 09:00 A | 2026-06-22 18:00 A |  | 100% |  |  |  |  |  | Тимофеев В; Зорькин В | 24h | 24h |
| 310 | 1.137.1 | заказать переходник |  | 1d? | 2026-06-22 09:00 A | 2026-06-22 18:00 A |  | 100% |  |  |  |  | start no earlier than 2026-06-22 08:00 | Зорькин В | 8h | 8h |
| 311 | 1.138 | слив конденсата с компрессора и продуть радиаторы и фильтры |  | 1h | 2026-06-14 09:00 A | 2026-06-15 10:00 A |  | 100% |  |  |  |  | start no earlier than 2026-06-14 09:00 | Бобренок В | 1h | 1h |

| ID | WBS | Task | Duration | Start | Finish | Predecessors | Complete | Total slack | Constraint | Resources | Work | Actual work |
| --- | --- | --- | --- | --- | --- | --- | --- | --- | --- | --- | --- | --- |
| 312 | 1.139 | **закрепить редуктор к отводящему транспортеру** | 1d? | 2026-06-17 09:00 A | 2026-06-17 18:00 A |  | 100% |  |  | Некрасов А | 16h | 16h |
| 313 | 1.139.1 | сделать надежное крепление на мойке | 1d? | 2026-06-17 09:00 A | 2026-06-17 18:00 A |  | 100% |  | start no earlier than 2026-06-17 09:00 | Бундин В | 8h | 8h |
| 314 | 1.140 | заменить сальник на вакууматоре (редуктор) | 1h | 2026-06-11 09:00 A | 2026-06-11 10:00 A |  | 100% |  | start no earlier than 2026-06-11 09:00 | Тимофеев В | 1h | 1h |
| 315 | 1.141 | законтрогаить шпильки-ножки запайщиков | 1h | 2026-06-12 09:00 A | 2026-06-12 10:00 A |  | 100% |  | start no earlier than 2026-06-12 09:00 | Бундин В | 1h | 1h |
| 316 | 1.142 | настроить подачу масла на квадропаке по пневмо системе (спросить у Дедова) | 1h | 2026-06-10 09:00 A | 2026-06-10 10:00 A |  | 100% |  | start no earlier than 2026-06-10 09:00 | Труфанов А | 1h | 1h |
| 317 | 1.143 | **проверить давление в гидроаккумуляторе водоподготовки** | 0.25d | 2026-06-10 09:00 A | 2026-06-10 11:00 A |  | 100% |  |  | Дедов В | 4h | 4h |
| 318 | 1.143.1 | замена мембраны | 2h | 2026-06-10 09:00 A | 2026-06-10 11:00 A |  | 100% |  | start no earlier than 2026-06-10 09:00 | Дедов В | 2h | 2h |
| 319 | 1.144 | модернизация опроры пневмоцилиндра встряживателя №1 квадропак | 4h | 2026-10-19 09:00 | 2026-10-19 13:00 |  |  | 102.09d | start no earlier than 2026-10-19 09:00 | Некрасов А | 4h |  |
| 320 | 1.145 | **готовить в зип сетку оборотную для печей (нижняя)** | 0.5d | 2026-06-09 09:00 A | 2026-06-09 13:00 A |  | 100% |  |  |  | 4.5h | 4.5h |
| 321 | 1.145.1 | проверка материал | 30min | 2026-06-09 09:00 A | 2026-06-09 09:30 A |  | 100% |  | start no earlier than 2026-06-09 09:00 | Тимофеев В | 0.5h | 0.5h |
| 322 | 1.145.2 | сборка | 4h | 2026-06-09 09:00 A | 2026-06-09 13:00 A |  | 100% |  | start no earlier than 2026-06-09 09:00 | Тимофеев В | 4h | 4h |
| 323 | 1.146 | подключить частотный привод насос жир 2 линия/ при остановке | 2h | 2026-06-07 09:00 A | 2026-06-08 11:00 A |  | 100% |  | start no earlier than 2026-06-07 09:00 | Дедов В | 2h | 2h |
| 324 | 1.147 | **жиротопка текет сальник насоса** | 36.03d? | 2026-06-28 09:00 A | 2026-08-18 09:15 A |  | 100% |  |  |  | 18.5h | 18.5h |
| 325 | 1.147.1 | замена насос из зип | 1h | 2026-06-28 09:00 A | 2026-06-29 10:00 A |  | 100% |  | start no earlier than 2026-06-28 09:00 | Дедов В | 1h | 1h |
| 326 | 1.147.2 | замена сальник на снятом насосе | 1h | 2026-06-28 10:00 A | 2026-06-29 10:00 A | 325 | 100% |  | start no earlier than 2026-06-17 09:00 | Дедов В | 1h | 1h |
| 327 | 1.147.3 | заказать | 1d? | 2026-06-29 09:00 A | 2026-06-29 18:00 A |  | 100% |  | start no earlier than 2026-06-29 09:00 | Шуранов Ю | 8h | 8h |
| 328 | 1.147.4 | ревизия прогресса утечки | 15min | 2026-08-05 09:00 A | 2026-08-05 09:15 A |  | 100% |  | start no earlier than 2026-08-05 09:00 | Дедов В | 0.25h | 0.25h |
| 329 | 1.147.5 | контроль наличия сальника | 15min | 2026-08-18 09:00 A | 2026-08-18 09:15 A |  | 100% |  | start no earlier than 2026-08-18 09:00 | Шуранов Ю | 0.25h | 0.25h |
| 330 | 1.147.6 | замена сальника | 1d? | 2026-08-05 09:00 A | 2026-08-05 18:00 A |  | 100% |  | start no earlier than 2026-08-05 09:00 | Дедов В | 8h | 8h |
| 331 | 1.148 | ремонт весов напольный (палетные) проверить кабель на обрыв | 3h | 2026-06-11 09:00 A | 2026-06-11 12:00 A |  | 100% |  | start no earlier than 2026-06-11 09:00 | Дедов В | 3h | 3h |
| 332 | 1.149 | печь №2 проверка токов, тен, замена | 2h | 2026-06-04 09:00 A | 2026-06-04 11:00 A |  | 100% |  | start no earlier than 2026-06-04 09:00 | Некрасов А; Бундин В | 4h | 4h |
| 333 | 1.150 | изготовление шторки после приемного лотка циклона | 2h | 2026-06-04 09:00 A | 2026-06-04 11:00 A |  | 100% |  | start no earlier than 2026-06-04 09:00 | Бундин В | 2h | 2h |
| 334 | 1.151 | **на аппликаторе настроить печать QR-кода на пакет, чтобы не размазывало (по тел. Объясню)** | 3.12d | 2026-06-04 09:00 A | 2026-06-09 10:00 A |  | 100% |  |  |  | 2h | 2h |
| 335 | 1.151.1 | тест (подключить доп. Датчик -настроить печать без размытия, картридж находиться у Луговских подписанный) | 1h | 2026-06-04 09:00 A | 2026-06-04 10:00 A |  | 100% |  | start no earlier than 2026-06-04 09:00 | Дедов В | 1h | 1h |
| 336 | 1.151.2 | тест | 1h | 2026-06-09 09:00 A | 2026-06-09 10:00 A |  | 100% |  | start no earlier than 2026-06-09 09:00 | Тимофеев В | 1h | 1h |
| 337 | 1.152 | целкает аппликатор -разобраться, устранить | 1h | 2026-06-03 08:00 A | 2026-06-03 10:00 A |  | 100% |  | start no earlier than 2026-06-03 08:00 | Дедов В | 1h | 1h |

| ID | WBS | Task | Type | Duration | Start | Finish | Predecessors | Complete | Remaining | Total slack | Free slack | Constraint | Resources | Work | Actual work |
| --- | --- | --- | --- | --- | --- | --- | --- | --- | --- | --- | --- | --- | --- | --- | --- |
| 338 | 1.153 | **установить резервную трубку/штангу с форсункой на подачу жира** |  | 31d | 2026-09-08 09:00 A | 2026-10-09 18:00 |  | 10% | 27.9d | 107.59d |  |  |  | 10h | 1h |
| 339 | 1.153.1 | проект-схема разработать |  | 1h | 2026-09-08 09:00 A | 2026-09-08 10:00 A |  | 100% |  |  |  | start no earlier than 2026-09-08 09:00 | Домоводов К | 1h | 1h |
| 340 | 1.153.2 | разработать спецкронштейн крепления 4х трубок |  | 1h | 2026-09-10 09:00 | 2026-09-10 10:00 |  |  |  | 127.47d | 19.88d | start no earlier than 2026-09-10 09:00 | Домоводов К | 1h |  |
| 341 | 1.153.3 | монтаж спец кронштенна |  | 1h | 2026-10-01 09:00 | 2026-10-01 10:00 | 340FS+1d |  |  | 107.59d | 0d | start no earlier than 2026-10-01 09:00 | Тимофеев В | 1h |  |
| 342 | 1.153.4 | заявка фитинги / тройники / краны / трубка |  | 1h | 2026-10-01 10:00 | 2026-10-01 11:00 | 339FS+1d, 341 |  |  | 107.59d | 0d | start no earlier than 2026-06-03 08:00 | Зорькин В | 1h |  |
| 343 | 1.153.5 | доставка контроль | milestone | 0d | 2026-10-07 11:00 | 2026-10-07 11:00 | 342FS+5d |  |  | 107.59d | 0d | start no earlier than 2026-06-03 08:00 | Зорькин В |  |  |
| 344 | 1.153.6 | сборка в мастерской |  | 4h | 2026-10-08 11:00 | 2026-10-08 16:00 | 343FS+1d |  |  | 107.59d | 0d | start no earlier than 2026-06-15 09:00 | Тимофеев В | 4h |  |
| 345 | 1.153.7 | монтаж на линию |  | 2h | 2026-10-09 16:00 | 2026-10-09 18:00 | 344FS+1d |  |  | 107.59d |  | start no earlier than 2026-06-03 08:00 | Тимофеев В | 2h |  |
| 346 | 1.154 | **установить автоматику запуска шнека + смеситель по датчику уровня сырья в бункере экструдера** |  | 10.4d? | 2026-10-19 09:00 | 2026-11-02 12:10 |  |  |  | 92.2d |  |  |  | 19.17h |  |
| 347 | 1.154.1 | разработка схема / компановка |  | 1h | 2026-10-19 09:00 | 2026-10-19 10:00 |  |  |  | 92.2d | 0d | start no earlier than 2026-10-19 09:00 | Домоводов К | 1h |  |
| 348 | 1.154.2 | заявка датчики / пускатели / эл щит |  | 2h | 2026-10-19 10:00 | 2026-10-19 12:00 | 347 |  |  | 92.2d | 0d | start no earlier than 2026-06-04 09:00 | Домоводов К | 2h |  |
| 349 | 1.154.3 | доставка контроль |  | 5min | 2026-10-28 12:00 | 2026-10-28 12:05 | 348FS+7d |  |  | 92.2d | 0d | start no earlier than 2026-06-03 08:00 | Зорькин В | 0.08h |  |
| 350 | 1.154.4 | контроль поставки |  | 5min | 2026-10-29 12:05 | 2026-10-29 12:10 | 349FS+1d |  |  | 92.2d | 0d | start no earlier than 2026-06-03 08:00 | Зорькин В | 0.08h |  |
| 351 | 1.154.5 | сборка ШУ |  | 1d? | 2026-10-29 12:10 | 2026-10-30 12:10 | 350 |  |  | 92.2d | 0d | start no earlier than 2026-06-24 09:00 | Дедов В | 8h |  |
| 352 | 1.154.6 | монтаж в линию |  | 1d? | 2026-10-30 12:10 | 2026-11-02 12:10 | 351 |  |  | 92.2d |  | start no earlier than 2026-06-03 08:00 | Дедов В | 8h |  |
| 353 | 1.155 | поставить на двигатели накопительных столов тепловые реле |  | 2h | 2026-06-15 09:00 | 2026-06-15 11:00 |  |  |  | 200.34d |  | start no earlier than 2026-06-15 09:00 | Дедов В | 2h |  |
| 354 | 1.156 | влагоотделитель крышки загрузки квадропак треснул- замена |  | 1h | 2026-06-10 09:00 | 2026-06-10 10:00 |  |  |  | 203.47d |  | start no earlier than 2026-06-10 09:00 | Дедов В | 1h |  |
| 355 | 1.157 | установка ПЧ на насос жира 2 линия |  | 2h | 2026-06-02 09:00 A | 2026-06-02 11:00 A |  | 100% |  |  |  | start no earlier than 2026-06-02 09:00 | Дедов В | 2h | 2h |
| 356 | 1.158 | установка ПЧ на барабаны жиров 1 и 2 линия |  | 2h | 2026-06-02 09:00 A | 2026-06-02 11:00 A |  | 100% |  |  |  | start no earlier than 2026-06-02 09:00 | Дедов В | 2h | 2h |
| 357 | 1.159 | **рассекатели после шлюзовика 1 и 2 линия сделать, чтобы корм равномерно ложился по поверхности сетки** |  | 5.25d | 2026-06-03 09:00 A | 2026-06-10 11:00 A |  | 100% |  |  |  |  |  | 11h | 11h |
| 358 | 1.159.1 | после обеда будет остановка 2 линия- модернизация рассекателя |  | 1h | 2026-06-03 09:00 A | 2026-06-03 10:00 A |  | 100% |  |  |  | start no earlier than 2026-06-03 09:00 | Бундин В | 1h | 1h |
| 359 | 1.159.2 | **установить зубчатую пластину для выравнивания слоя на входе в печь** |  | 5.25d | 2026-06-03 09:00 A | 2026-06-10 11:00 A |  | 100% |  |  |  |  |  | 10h | 10h |
| 360 | 1.159.2.1 | подготовиьт чертеж |  | 2h | 2026-06-03 09:00 A | 2026-06-03 11:00 A |  | 100% |  |  |  | start no earlier than 2026-06-03 08:00 | Домоводов К | 2h | 2h |
| 361 | 1.159.2.2 | изготовить |  | 6h | 2026-06-05 09:00 A | 2026-06-05 16:00 A | 360 | 100% |  |  |  | start no earlier than 2026-06-05 09:00 | Бундин В | 6h | 6h |
| 362 | 1.159.2.3 | монтаж |  | 2h | 2026-06-10 09:00 A | 2026-06-10 11:00 A | 361 | 100% |  |  |  | start no earlier than 2026-06-10 09:00 | Некрасов А | 2h | 2h |

| ID | WBS | Task | Type | Duration | Start | Finish | Predecessors | Complete | Remaining | Total slack | Constraint | Resources | Work | Actual work |
| --- | --- | --- | --- | --- | --- | --- | --- | --- | --- | --- | --- | --- | --- | --- |
| 363 | 1.160 | **монтаж 2х прожекторов на барабаны жиров** |  | 0.25d | 2026-06-02 09:00 A | 2026-06-02 11:00 A |  | 100% |  |  |  |  | 2h | 2h |
| 364 | 1.160.1 | подключить в ШУ самого транспортера на автомат |  | 2h | 2026-06-02 09:00 A | 2026-06-02 11:00 A |  | 100% |  |  | start no earlier than 2026-06-02 09:00 | Макаревич А | 2h | 2h |
| 365 | 1.161 | **проверка вентилятор упавший в зимний период. Тест на месте** |  | 6.25d | 2026-06-05 09:00 A | 2026-06-15 11:00 A |  | 100% |  |  |  |  | 10h | 10h |
| 366 | 1.161.1 | изготовить подиум под улитку |  | 6h | 2026-06-05 09:00 A | 2026-06-05 16:00 A |  | 100% |  |  | start no earlier than 2026-06-05 09:00 | Тимофеев В | 6h | 6h |
| 367 | 1.161.2 | перенос вентилятора |  | 2h | 2026-06-15 09:00 A | 2026-06-15 11:00 A |  | 100% |  |  | start no earlier than 2026-06-15 09:00 | Тимофеев В; Некрасов А | 4h | 4h |
| 368 | 1.162 | прачка 1ц замена светильник |  | 1h | 2026-05-29 09:00 A | 2026-05-29 10:00 A |  | 100% |  |  | start no earlier than 2026-05-29 08:00 | Бундин В | 1h | 1h |
| 369 | 1.163 | запайщик замена нихром |  | 1h | 2026-05-29 09:00 A | 2026-05-29 10:00 A |  | 100% |  |  | start no earlier than 2026-05-29 08:00 | Бундин В | 1h | 1h |
| 370 | 1.164 | устранить провисание патрубка подачи ГДЗ линия 2 |  | 1h | 2026-08-31 09:00 A | 2026-08-31 10:00 A |  | 100% |  |  | start no earlier than 2026-08-31 09:00 | Тимофеев В | 1h | 1h |
| 371 | 1.165 | крепеление РР магистраль ф20 воздух в склад гдз |  | 15min | 2026-05-27 09:00 A | 2026-05-27 09:15 A |  | 100% |  |  | start no earlier than 2026-05-27 09:00 | Бундин В | 0.25h | 0.25h |
| 372 | 1.166 | **перевод насосов ГДЗ на канистры с трассой на насос > 1/2** |  | 3.25d | 2026-05-28 09:00 A | 2026-06-02 11:00 |  | 50% | 1.62d | 209.34d |  |  | 4h | 2h |
| 373 | 1.166.1 | подготовка канистры установить штуцер, подготовить шланг + фитинги на насос |  | 2h | 2026-05-28 09:00 A | 2026-05-28 11:00 A |  | 100% |  |  | start no earlier than 2026-05-28 09:00 | Бундин В | 2h | 2h |
| 374 | 1.166.2 | монаж на линию 1 |  | 2h | 2026-06-02 09:00 | 2026-06-02 11:00 | 373 |  |  | 209.34d | start no earlier than 2026-06-02 09:00 | Бундин В | 2h |  |
| 375 | 1.167 | **с тена печей осыпается оребрение, попадая в продукт** |  | 10.5d | 2026-05-27 09:00 A | 2026-06-10 13:00 A |  | 100% |  |  |  |  | 11h | 11h |
| 376 | 1.167.1 | осмотр тенов печей линия 1 и линия 2 на предмет отслоения оребрения. Очистка / замена |  | 3h | 2026-05-27 09:00 A | 2026-05-27 12:00 A |  | 100% |  |  | start no earlier than 2026-05-27 09:00 | Некрасов А | 3h | 3h |
| 377 | 1.167.2 | замена неисправных тенов линия 2, по диагностике Некрасова 27.05 (токи) 2 линия |  | 4h | 2026-06-02 09:00 A | 2026-06-02 13:00 A |  | 100% |  |  | start no earlier than 2026-06-02 09:00 | Некрасов А | 4h | 4h |
| 378 | 1.167.3 | замена прогнувшихся тен |  | 4h | 2026-06-10 09:00 A | 2026-06-10 13:00 A |  | 100% |  |  | start no earlier than 2026-06-10 09:00 | Некрасов А | 4h | 4h |
| 379 | 1.168 | перенести частотный привод ШУ печи 1л для доступа обслуживания |  | 2h | 2026-06-02 09:00 A | 2026-06-02 11:00 A |  | 100% |  |  | start no earlier than 2026-06-02 09:00 | Дедов В | 2h | 2h |
| 380 | 1.169 | нет фазы линия 2 печь оперативно |  | 1h | 2026-05-26 09:00 A | 2026-05-26 10:00 A |  | 100% |  |  | start no earlier than 2026-05-26 09:00 | Тимофеев В; Бундин В | 2h | 2h |
| 381 | 1.170 | замена твердотельное реле фаза В 2шт (найти пробитый) |  | 30min | 2026-05-27 09:00 A | 2026-05-27 09:30 A |  | 100% |  |  | start no earlier than 2026-05-27 09:00 | Бундин В | 0.5h | 0.5h |
| 382 | 1.171 | выравнивание потенциалов ШУ тв реле печей 1 и 2 |  | 1h | 2026-05-27 09:00 A | 2026-05-27 10:00 A |  | 100% |  |  | start no earlier than 2026-05-27 09:00 | Бундин В | 1h | 1h |
| 383 | 1.172 | **заменить фитинги с гайками (они на складе) на жирах 1 + 2 линия** |  | 28d | 2026-05-27 09:00 A | 2026-07-04 11:00 A |  | 100% |  |  |  |  | 6.08h | 6.08h |
| 384 | 1.172.1 | доставка шланг 8х12мм. Контроль |  | 5min | 2026-05-27 09:00 A | 2026-05-27 09:05 A |  | 100% |  |  | start no earlier than 2026-05-27 09:00 | Шуранов Ю | 0.08h | 0.08h |
| 385 | 1.172.2 | замена 2 линия |  | 2h | 2026-05-27 09:00 A | 2026-05-27 11:00 A |  | 100% |  |  | start no earlier than 2026-05-27 09:00 | Тимофеев В | 2h | 2h |
| 386 | 1.172.3 | замена 1 линия |  | 2h | 2026-06-15 09:00 A | 2026-06-15 11:00 A |  | 100% |  |  | start no earlier than 2026-06-15 09:00 | Тимофеев В | 2h | 2h |
| 387 | 1.172.4 | проверить где не поставлены фитинги с гайками- поменять | manual | 2h | 2026-07-04 09:00 A | 2026-07-04 11:00 A |  | 100% |  |  | start no earlier than 2026-07-04 09:00 | Тимофеев В | 2h | 2h |
| 388 | 1.173 | подключить Sаvema на теко 0,4 через ИБП (ибп на складе) |  | 1h | 2026-05-26 09:00 A | 2026-05-26 10:00 A |  | 100% |  |  | start no earlier than 2026-05-26 09:00 | Дедов В | 1h | 1h |
| 389 | 1.174 | найти и закрутить мотор-редукторы на транспортерах и отписаться на каких были не прикручены и не законтрогаек. |  | 1h | 2026-05-25 09:00 A | 2026-05-25 10:00 A |  | 100% |  |  | start no earlier than 2026-05-25 09:00 | Макаревич А | 1h | 1h |
| 390 | 1.175 | транспортер с жиров на виброохладитель- поменять кнопку стоп 2 линия | manual | 1h | 2026-05-27 09:00 A | 2026-05-27 10:00 A |  | 100% |  |  | start no earlier than 2026-05-27 09:00 | Дедов В | 1h | 1h |
| 391 | 1.176 | демонтировать на накопительном столе квадропака силиконовую резинку по диаметру | manual | 1h | 2026-05-24 09:00 A | 2026-05-24 10:00 A |  | 100% |  |  | start no earlier than 2026-05-24 09:00 | Макаревич А | 1h | 1h |

| ID | WBS | Task | Type | Duration | Start | Finish | Predecessors | Complete | Remaining | Total slack | Constraint | Resources | Work | Actual work |
| --- | --- | --- | --- | --- | --- | --- | --- | --- | --- | --- | --- | --- | --- | --- |
| 392 | 1.177 | **установка фосунок - подача жира 1 линия** |  | 22.12d? | 2026-06-05 09:00 A | 2026-07-07 10:00 |  | 17% | 18.44d? | 184.47d |  |  | 4h | 2h |
| 393 | 1.177.1 | сборка кронштейн для фильтров + счетчик/ покраска |  | 1h | 2026-06-05 09:00 A | 2026-06-05 10:00 A |  | 100% |  |  | start no earlier than 2026-06-05 09:00 | Тимофеев В | 1h | 1h |
| 394 | 1.177.2 | установка |  | 1d? | 2026-07-06 09:00 | 2026-07-06 18:00 |  |  |  | 184.59d | start no earlier than 2026-07-06 09:00 |  |  |  |
| 395 | 1.177.3 | монтаж в линию |  | 2h | 2026-07-06 09:00 | 2026-07-06 11:00 |  |  |  | 185.34d | start no earlier than 2026-07-06 09:00 | Тимофеев В | 2h |  |
| 396 | 1.177.4 | монтаж розетка для блок питания 5в для регистратора |  | 1h | 2026-07-07 09:00 A | 2026-07-07 10:00 A |  | 100% |  |  | start no earlier than 2026-07-07 09:00 | Тимофеев В | 1h | 1h |
| 397 | 1.178 | **конв №2 линия 2 нижний вал нет защиты подшипников (был фетр)** |  | 9.16d | 2026-08-19 09:00 A | 2026-09-01 10:15 A |  | 100% |  |  |  |  | 5.25h | 5.25h |
| 398 | 1.178.1 | разборка, ревизия, подбор / чертеж уплотнеия |  | 2h | 2026-08-26 09:00 A | 2026-08-26 11:00 A |  | 100% |  |  | start no earlier than 2026-08-26 09:00 | Тимофеев В | 2h | 2h |
| 399 | 1.178.2 | заявка уплотнение |  | 1h | 2026-08-19 09:00 A | 2026-08-19 10:00 A |  | 100% |  |  | start no earlier than 2026-08-19 09:00 | Шуранов Ю | 1h | 1h |
| 400 | 1.178.3 | контроль поставки |  | 15min | 2026-09-01 10:00 A | 2026-09-01 10:15 A | 399FS+10d | 100% |  |  | start no earlier than 2026-08-12 09:00 | Шуранов Ю | 0.25h | 0.25h |
| 401 | 1.178.4 | монтаж уплотнения |  | 2h | 2026-08-31 09:00 A | 2026-08-31 11:00 A | 400FS+1d | 100% |  |  | start no earlier than 2026-08-12 09:00 | Тимофеев В | 2h | 2h |
| 402 | 1.179 | вентилятор на охладителе верхний краний слишком большой - переделать крепление |  | 1h | 2026-08-26 09:00 A | 2026-08-26 10:00 A |  | 100% |  |  | start no earlier than 2026-08-26 09:00 | Тимофеев В | 1h | 1h |
| 403 | 1.180 | устанить утечку на мойке зона экструдера |  | 1h | 2023-03-10 09:00 A | 2023-03-10 10:00 A |  | 100% |  |  |  | Бобренок В | 1h | 1h |
| 404 | 1.181 | выдать шестигранные болты и шайбы на ножевой узел экструдерщикам (штук 20) |  | 1h | 2026-05-21 09:00 A | 2026-05-21 10:00 A |  | 100% |  |  | start no earlier than 2026-05-21 08:00 | Бундин В | 1h | 1h |
| 405 | 1.182 | приварить болты к заслонке подачи гранулы на квадропаке (остановить, с мастером согласовать) |  | 1h | 2026-05-26 09:00 A | 2026-05-26 10:00 A |  | 100% |  |  | start no earlier than 2026-05-26 09:00 | Бобренок В | 1h | 1h |
| 406 | 1.183 | увеличить диаметр отверстия, чтобы горловина подачи сух. Гидрализата проходила (жиротопка) |  | 1h | 2026-05-20 09:00 A | 2026-05-20 10:00 A |  | 100% |  |  | start no earlier than 2026-05-20 09:00 | Некрасов А | 1h | 1h |
| 407 | 1.184 | посмотреть приточку, выпадает часто в аварию по насосу |  | 2h | 2026-05-18 08:00 A | 2026-05-18 11:00 A |  | 100% |  |  | start no earlier than 2026-05-18 08:00 | Дедов В | 2h | 2h |
| 408 | 1.185 | замена светильника в зоне завоза навесок (работа на высоте) |  | 2h | 2026-05-15 09:00 A | 2026-05-15 11:00 A |  | 100% |  |  | start no earlier than 2026-05-15 09:00 | Некрасов А; Труфанов А | 4h | 4h |
| 409 | 1.186 | закрепить встиряхиватель полного пакета №1 квадропак |  | 1h | 2026-05-14 08:00 A | 2026-05-14 10:00 A |  | 100% |  |  | start no earlier than 2026-05-14 08:00 | Бобренок В | 1h | 1h |
| 410 | 1.187 | замена лампа светильник гардероб М = на короткий. |  | 1h | 2026-05-13 09:00 A | 2026-05-13 10:00 A |  | 100% |  |  | start no earlier than 2026-05-13 09:00 | Бундин В | 1h | 1h |
| 411 | 1.188 | устранить потерю мощности печи в 2х фазах |  | 2h | 2026-05-12 08:00 A | 2026-05-12 11:00 A |  | 100% |  |  | start no earlier than 2026-05-12 08:00 | Тимофеев В; Бобренок В | 4h | 4h |
| 412 | 1.189 | квадропак изготовить и заменить текстолит на термоноже |  | 2h | 2026-05-12 09:00 A | 2026-05-12 11:00 A |  | 100% |  |  | start no earlier than 2026-05-12 08:00 | Некрасов А | 2h | 2h |
| 413 | 1.190 | **бак стабилизации воды-утечка** |  | 0.25d | 2026-05-22 09:00 A | 2026-05-22 11:00 A |  | 100% |  |  |  | Тимофеев В | 4h | 4h |
| 414 | 1.190.1 | монтаж подачи воды 2 линия в прекондиционер |  | 2h | 2026-05-22 09:00 A | 2026-05-22 11:00 A |  | 100% |  |  | start no earlier than 2026-05-22 09:00 | Тимофеев В | 2h | 2h |
| 415 | 1.191 | **парогенератор 1ц ремонт по гарантии** |  | 30d? | 2026-04-27 09:00 A | 2026-06-05 18:00 A |  | 100% |  |  |  |  | 11.33h | 11.33h |
| 416 | 1.191.1 | отправить ПГ на ремонт орг курьера |  | 10min | 2026-04-27 09:00 A | 2026-04-27 09:10 A |  | 100% |  |  | start no earlier than 2026-04-27 08:00 | Шуранов Ю | 0.17h | 0.17h |
| 417 | 1.191.2 | контроль ремонт |  | 10min | 2026-05-04 09:10 A | 2026-05-04 09:20 A | 416FS+5d | 100% |  |  | start no earlier than 2026-04-27 08:00 | Шуранов Ю | 0.17h | 0.17h |
| 418 | 1.191.3 | нужно посмотреть парогенератор там релюха не щелкает- может разберешься, он находиться на складе у Веры |  | 2h | 2026-05-11 09:00 A | 2026-05-11 11:00 A |  | 100% |  |  | start no earlier than 2026-05-11 09:00 | Дедов В | 2h | 2h |
| 419 | 1.191.4 | орг ремонт по гарантии |  | 1h | 2026-05-13 09:00 A | 2026-05-13 10:00 A |  | 100% |  |  | start no earlier than 2026-05-13 09:00 | Шуранов Ю | 1h | 1h |
| 420 | 1.191.5 | контроль возврата |  | 1d? | 2026-06-05 09:00 A | 2026-06-05 18:00 A |  | 100% |  |  | start no earlier than 2026-06-05 09:00 | Шуранов Ю | 8h | 8h |
| 421 | 1.192 | проверить мотор-редуктор на накопительном столе фасовка и | manual | 4h | 2026-05-11 09:00 A | 2026-05-11 13:00 A |  | 100% |  |  | start no earlier than 2026-05-11 09:00 | Бундин В | 4h | 4h |
| 422 | 1.193 | прикрутить ножку на 2 столе (ножка у Луговских в кабинете) |  | 1h | 2026-05-12 09:00 A | 2026-05-12 10:00 A |  | 100% |  |  | start no earlier than 2026-05-12 08:00 | Бундин В | 1h | 1h |

| ID | WBS | Task | Duration | Start | Finish | Predecessors | Complete | Constraint | Resources | Work | Actual work |
| --- | --- | --- | --- | --- | --- | --- | --- | --- | --- | --- | --- |
| 423 | 1.194 | **отодвинуть миксер подачи сухого гидрализата, чтобы сыпал не на ребра барабана, а на обод выхода** | 0.38d | 2026-05-08 08:00 A | 2026-05-08 12:00 A |  | 100% |  |  | 3h | 3h |
| 424 | 1.194.1 | перекрутить платформу миксера подачи сухого гидрализата снизу, чтобы дуло не задевало барабан | 3h | 2026-05-08 08:00 A | 2026-05-08 12:00 A |  | 100% | start no earlier than 2026-05-08 08:00 | Макаревич А | 3h | 3h |
| 425 | 1.195 | монтаж светильник в районе ВРУ сверху (зона экструдера) | 2h | 2026-05-16 09:00 A | 2026-05-18 11:00 A |  | 100% | start no earlier than 2026-05-16 09:00 | Макаревич А | 2h | 2h |
| 426 | 1.196 | закрепить трубу п/п на фасовке в углу, где стеллаж на клипсы к стене | 1h | 2026-05-07 08:00 A | 2026-05-07 10:00 A |  | 100% | start no earlier than 2026-05-07 08:00 | Бобренок В | 1h | 1h |
| 427 | 1.197 | прикрутить пускатели запуска вытяжки перед лестницей на 2 этаж зона экструдера и розетки | 2h | 2026-05-06 08:00 A | 2026-05-06 11:00 A |  | 100% | start no earlier than 2026-05-06 08:00 | Бобренок В | 2h | 2h |
| 428 | 1.198 | нет напряжения в розетке для инсектицидного светильника, корридор где вывозят готовую продукцию | 1h | 2026-05-07 09:00 A | 2026-05-07 10:00 A |  | 100% | start no earlier than 2026-05-07 09:00 | Бобренок В | 1h | 1h |
| 429 | 1.199 | подключить через счетчик подачу жира | 2h | 2026-05-05 08:00 A | 2026-05-05 11:00 A |  | 100% | start no earlier than 2026-05-05 08:00 | Тимофеев В | 2h | 2h |
| 430 | 1.200 | **повесить на места светильники инсектицидные (замена ламп)** | 0.38d | 2026-05-05 09:00 A | 2026-05-05 12:00 A |  | 100% |  |  | 3h | 3h |
| 431 | 1.200.1 | заменить инсектицидные лампы в светильниках (количество, которое поменял -записать) | 3h | 2026-05-05 09:00 A | 2026-05-05 12:00 A |  | 100% | start no earlier than 2026-05-05 08:00 | Бундин В | 3h | 3h |
| 432 | 1.201 | на жиротопке установить газ лифты (они на складе) | 1h | 2026-05-05 08:00 A | 2026-05-05 10:00 A |  | 100% | start no earlier than 2026-05-05 08:00 | Бобренок В | 1h | 1h |
| 433 | 1.202 | **дверь вход в столовую вкрыть заглушки и установить личинку с ключами (взять на складе)** | 14.12d | 2026-05-13 09:00 A | 2026-06-02 10:00 A |  | 100% |  |  | 42.5h | 42.5h |
| 434 | 1.202.1 | заказать ручку / ответ | 30min | 2026-05-13 09:00 A | 2026-05-13 09:30 A |  | 100% | start no earlier than 2026-05-13 09:00 | Шуранов Ю | 0.5h | 0.5h |
| 435 | 1.202.2 | конроль | 5d | 2026-05-18 09:00 A | 2026-05-22 18:00 A | 434 | 100% | start no earlier than 2026-05-18 09:00 | Карабанов | 40h | 40h |
| 436 | 1.202.3 | замена | 1h | 2026-05-30 09:00 A | 2026-06-01 10:00 A | 435 | 100% | start no earlier than 2026-05-30 09:00 | Тимофеев В | 1h | 1h |
| 437 | 1.202.4 | перевернуть замок ручкой вверх, личика переворачивается в любую сторону | 1h | 2026-06-02 09:00 A | 2026-06-02 10:00 A |  | 100% | start no earlier than 2026-06-02 09:00 | Макаревич А | 1h | 1h |
| 438 | 1.203 | поставить шпонки на питатель в слесарке | 1h | 2026-05-04 09:00 A | 2026-05-04 10:00 A |  | 100% | start no earlier than 2026-05-04 08:00 | Тимофеев В | 1h | 1h |
| 439 | 1.204 | установить транспортер на 1 линии | 1h | 2026-05-04 08:00 A | 2026-05-04 10:00 A |  | 100% | start no earlier than 2026-05-04 08:00 | Дедов В | 1h | 1h |
| 440 | 1.205 | собрать транспортер ковшевой (валы приехали, фетр на складе) | 4h | 2026-04-30 08:00 A | 2026-04-30 13:00 A |  | 100% | start no earlier than 2026-04-30 08:00 | Дедов В | 4h | 4h |
| 441 | 1.206 | **со старой ленты снять ковши в слесарке** | 0.5d | 2026-05-05 09:00 A | 2026-05-05 13:00 A |  | 100% |  |  | 4h | 4h |
| 442 | 1.206.1 | подготовить ленту с ковшами (150 мм между ковшами) лента на складе 5120мм в кольце и унести на желтый склад | 4h | 2026-05-05 09:00 A | 2026-05-05 13:00 A |  | 100% | start no earlier than 2026-05-05 09:00 | Бундин В | 4h | 4h |
| 443 | 1.207 | **разбираем улитки циклон и печи, замена подшипников** | 1d? | 2026-06-03 09:00 A | 2026-06-03 18:00 A |  | 100% |  | Тимофеев В; Бундин В | 16h | 16h |
| 444 | 1.207.1 | проверка подшипников на улитках печей | 1d? | 2026-06-03 09:00 A | 2026-06-03 18:00 A |  | 100% | start no earlier than 2026-06-03 09:00 |  |  |  |
| 445 | 1.208 | ТО Теко 1,5 (чистка тен, смазка штоков пневмоцилиндров, подшипников) | 3h | 2026-04-28 09:00 A | 2026-04-28 12:00 A |  | 100% | start no earlier than 2026-04-28 09:00 | Дедов В | 3h | 3h |
| 446 | 1.209 | ТО Теко 0,4 (чистка тен, смазка штоков пневмоцилиндров, подшипников) | 3h | 2026-04-28 09:00 A | 2026-04-28 12:00 A |  | 100% | start no earlier than 2026-04-28 09:00 | Дедов В | 3h | 3h |
| 447 | 1.210 | полное ТО квадропака (чистка тен, смазка штоков пневмоцилиндров, шприцевание подшипников, протяжка болтовых соединений) | 3h | 2026-04-28 09:00 A | 2026-04-28 12:00 A |  | 100% | start no earlier than 2026-04-28 09:00 | Дедов В | 3h | 3h |

| ID | WBS | Task | Type | Duration | Start | Finish | Predecessors | Complete | Total slack | Free slack | Constraint | Resources | Work | Actual work |
| --- | --- | --- | --- | --- | --- | --- | --- | --- | --- | --- | --- | --- | --- | --- |
| 448 | 1.211 | **модернизация трассы слива зона мойки экструдеров** |  | 20d? | 2026-04-27 09:00 A | 2026-05-23 10:00 A |  | 100% |  |  |  |  | 15.5h | 15.5h |
| 449 | 1.211.1 | заявка соединения и гидрозатвор |  | 15min | 2026-04-27 09:00 A | 2026-04-27 09:15 A |  | 100% |  |  | start no earlier than 2026-04-27 08:00 | Шуранов Ю | 0.25h | 0.25h |
| 450 | 1.211.2 | контроль доставки |  | 15min | 2026-05-04 09:15 A | 2026-05-04 09:30 A | 449FS+5d | 100% |  |  | start no earlier than 2026-04-27 08:00 | Шуранов Ю | 0.25h | 0.25h |
| 451 | 1.211.3 | монтаж |  | 1d? | 2026-05-06 09:30 A | 2026-05-07 09:30 A | 450FS+2d | 100% |  |  | start no earlier than 2026-04-27 08:00 | Тимофеев В | 8h | 8h |
| 452 | 1.211.4 | заявка на бурить стену / получить счет |  | 1h | 2026-04-28 09:00 A | 2026-04-28 10:00 A |  | 100% |  |  | start no earlier than 2026-04-28 09:00 | Зорькин В | 1h | 1h |
| 453 | 1.211.5 | расчет угла бурения. Замер + зхарисовать схему |  | 4h | 2026-05-13 09:00 A | 2026-05-13 13:00 A | 452 | 100% |  |  | start no earlier than 2026-05-13 09:00 | Зорькин В | 4h | 4h |
| 454 | 1.211.6 | орг работу подрядчика по бурению |  | 1h | 2026-05-20 09:00 A | 2026-05-20 10:00 A | 453 | 100% |  |  | start no earlier than 2026-05-20 09:00 | Зорькин В | 1h | 1h |
| 455 | 1.211.7 | запенить стыки в месте бурения | manual | 1h | 2026-05-23 09:00 A | 2026-05-23 10:00 A |  | 100% |  |  | start no earlier than 2026-05-23 09:00 | Бобренок В | 1h | 1h |
| 456 | 1.212 | взять на складе 2 гофросифона и заменить на мойке экструдер |  | 1h | 2026-04-24 09:00 A | 2026-04-24 10:00 A |  | 100% |  |  | start no earlier than 2026-04-24 08:00 | Бундин В | 1h | 1h |
| 457 | 1.213 | заменить монтажную коробку на 150х200мм -она у них на стяжках. Коробка новая на складе | manual | 1h | 2026-04-26 09:00 A | 2026-04-26 10:00 A |  | 100% |  |  | start no earlier than 2026-04-26 09:00 | Бобренок В | 1h | 1h |
| 458 | 1.214 | под мойкой в зоне экструдера на слив 3 греющего кабеля, нужно разобраться |  | 1h | 2026-04-24 09:00 A | 2026-04-24 10:00 A |  | 100% |  |  | start no earlier than 2026-04-24 08:00 | Шуранов Ю | 1h | 1h |
| 459 | 1.215 | жиротопка течет сальник, проверить и устранить течи везде. Чистка фильтров. |  | 2h | 2026-04-28 09:00 A | 2026-04-28 11:00 A |  | 100% |  |  | start no earlier than 2026-04-28 09:00 | Тимофеев В | 2h | 2h |
| 460 | 1.216 | ТО печи линия 1 ( вскрыть, ревизия- замена перемычек и т.д.) |  | 4h | 2026-04-23 09:00 A | 2026-04-23 13:00 A |  | 100% |  |  | start no earlier than 2026-04-23 08:00 | Бундин В | 4h | 4h |
| 461 | 1.217 | протянуть кабель UTP от столя Луговских до шкафа серверного (расскажу как протянуть по звонку) |  | 4h | 2026-04-23 09:00 A | 2026-04-23 13:00 A |  | 100% |  |  | start no earlier than 2026-04-23 08:00 | Бундин В | 4h | 4h |
| 462 | 1.218 | **подключить приточку как было** |  | 0.25d | 2026-04-29 09:00 A | 2026-04-29 11:00 A |  | 100% |  |  |  | Дедов В | 4h | 4h |
| 463 | 1.218.1 | подключить сервопривод на шибер и подключить |  | 2h | 2026-04-29 09:00 A | 2026-04-29 11:00 A |  | 100% |  |  | start no earlier than 2026-04-29 09:00 | Дедов В | 2h | 2h |
| 464 | 1.219 | **замена ленты на транспортере тип 2 2 линия (дособрать)** |  | 1.5d | 2026-04-24 09:00 A | 2026-04-27 13:00 A |  | 100% |  |  |  |  | 6h | 6h |
| 465 | 1.219.1 | со снятой ленты транспортера тип 2 снять все ковши (готовим для замены на 1 линии) |  | 2h | 2026-04-24 09:00 A | 2026-04-24 11:00 A |  | 100% |  |  | start no earlier than 2026-04-24 09:00 | Бундин В | 2h | 2h |
| 466 | 1.219.2 | установка ковшей со старой ленты на новую со склада 400х 5120мм |  | 4h | 2026-04-25 09:00 A | 2026-04-27 13:00 A |  | 100% |  |  | start no earlier than 2026-04-25 09:00 | Макаревич А | 4h | 4h |
| 467 | 1.220 | **система угольной фильтрации вытяжных газов с печей и пневотранспорта** |  | 0.25d | 2026-04-21 09:00 A | 2026-04-21 11:00 A |  | 100% |  |  |  |  | 3h | 3h |
| 468 | 1.220.1 | подготовить пластины 200*200 5мм для анкерения колон к полу ф12 6шт |  | 2h | 2026-04-21 09:00 A | 2026-04-21 11:00 A |  | 100% |  |  | start no earlier than 2026-04-21 09:00 | Бундин В | 2h | 2h |
| 469 | 1.220.2 | подготовить пластины 100*100 5мм для анкерения колон к стене 8шт |  | 1h | 2026-04-21 09:00 A | 2026-04-21 10:00 A |  | 100% |  |  | start no earlier than 2026-04-21 09:00 | Бундин В | 1h | 1h |
| 470 | 1.221 | проверка фильтров воды с редуктором в прекондиционер на ТО |  | 1h | 2026-04-22 09:00 A | 2026-04-22 10:00 A |  | 100% |  |  | start no earlier than 2026-04-22 09:00 | Бундин В | 1h | 1h |
| 471 | 1.222 | **заменить фильтры на жиротопка** |  | 17.12d | 2026-09-14 09:00 | 2026-10-01 10:00 |  |  | 115.47d |  |  |  | 2.25h |  |
| 472 | 1.222.1 | выяснить тип фильтров, заказ катриджи |  | 1h | 2026-09-14 09:00 | 2026-09-14 10:00 |  |  | 122.31d | 0d | start no earlier than 2026-09-14 09:00 | Зорькин В | 1h |  |
| 473 | 1.222.2 | контроль |  | 15min | 2026-09-24 10:00 | 2026-09-24 10:15 | 472FS+10d |  | 122.31d | 6.84d | start no earlier than 2026-04-22 09:00 | Зорькин В | 0.25h |  |
| 474 | 1.222.3 | замена |  | 1h | 2026-10-01 09:00 | 2026-10-01 10:00 | 473 |  | 115.47d |  | start no earlier than 2026-10-01 09:00 | Бобренок В | 1h |  |
| 475 | 1.223 | проверить напряжение в розетке конатушка вывоза готовой продукции |  | 1h | 2026-04-19 09:00 A | 2026-04-20 10:00 A |  | 100% |  |  | start no earlier than 2026-04-19 09:00 | Дедов В | 1h | 1h |

| ID | WBS | Task | Duration | Start | Finish | Predecessors | Complete | Remaining | Total slack | Free slack | Constraint | Resources | Work | Actual work |
| --- | --- | --- | --- | --- | --- | --- | --- | --- | --- | --- | --- | --- | --- | --- |
| 476 | 1.224 | **обслуживание инсекьюеров, утлизация отработанных ламп** | 127.12d | 2026-04-21 08:00 A | 2026-10-05 10:00 |  | 98% | 2.84d | 112.47d |  |  |  | 89.5h | 87.5h |
| 477 | 1.224.1 | Составить список ламп по цехам и передать Зорькину | 2h | 2026-04-21 08:00 A | 2026-04-21 11:00 A |  | 100% |  |  |  | start no earlier than 2026-04-21 08:00 | Тимофеев В | 2h | 2h |
| 478 | 1.224.2 | Заказать новые лампы | 30min | 2026-04-21 10:00 A | 2026-04-21 10:30 A | 477 | 100% |  |  |  | start no earlier than 2026-04-21 08:00 | Зорькин В | 0.5h | 0.5h |
| 479 | 1.224.3 | доставка | 10d | 2026-04-21 10:30 A | 2026-05-05 10:30 A | 478 | 100% |  |  |  | start no earlier than 2026-04-21 08:00 | Карабанов | 80h | 80h |
| 480 | 1.224.4 | снять все светильники мухоловки, извлечь лампы, уложить аккуратно в коробку (оставить в слесарке отработанные) светильники снятые передать мастеру смены для мытья | 2h | 2026-05-05 10:30 A | 2026-05-05 12:30 A | 479 | 100% |  |  |  | start no earlier than 2026-05-01 09:00 | Бобренок В | 2h | 2h |
| 481 | 1.224.5 | после чистки установить лампы в светильники, тусклые замнеить | 2h | 2026-05-12 09:00 A | 2026-05-12 11:00 A | 480 | 100% |  |  |  | start no earlier than 2026-05-12 09:00 | Бундин В | 2h | 2h |
| 482 | 1.224.6 | сообщить кол-во замененных ламп нач цехов | 1h | 2026-05-12 11:00 A | 2026-05-12 12:00 A | 481 | 100% |  |  |  | start no earlier than 2026-05-01 09:00 | Шуранов Ю | 1h | 1h |
| 483 | 1.224.7 | запрос договор на утилизацию ламп | 1h | 2026-09-14 09:00 | 2026-09-14 10:00 |  |  |  | 132.34d | 19.88d | start no earlier than 2026-09-14 09:00 | Домоводов К | 1h |  |
| 484 | 1.224.8 | подготовить лампы к утилизации | 1h | 2026-10-05 09:00 | 2026-10-05 10:00 | 482, 483 |  |  | 112.47d |  | start no earlier than 2026-10-05 09:00 | Тимофеев В | 1h |  |
| 485 | 1.225 | **на 1 линии подготовить из оргстекла обратные крышки транспортера тип 2 (ковшевой), согласовать остановка с мастером и установить** | 0.12d | 2026-04-24 09:00 A | 2026-04-24 10:00 A |  | 100% |  |  |  |  | Бобренок В | 2h | 2h |
| 486 | 1.225.1 | перекрутить оргстекло (операторы подскажут в чем проблема) | 1h | 2026-04-24 09:00 A | 2026-04-24 10:00 A |  | 100% |  |  |  | start no earlier than 2026-04-24 09:00 | Бобренок В | 1h | 1h |
| 487 | 1.226 | проверить гидроаккумуляторы парогенераторов 1 и 2 линия и 100литровый в комнате стабилизации воды, если нужно качаем 2 очка. | 2h | 2026-04-19 09:00 A | 2026-04-20 11:00 A |  | 100% |  |  |  | start no earlier than 2026-04-19 09:00 | Макаревич А | 2h | 2h |
| 488 | 1.227 | проверка фильтров на редукторы экструдеров | 1h | 2026-04-24 09:00 A | 2026-04-24 10:00 A |  | 100% |  |  |  | start no earlier than 2026-04-24 09:00 | Тимофеев В | 1h | 1h |
| 489 | 1.228 | проверка токов, всех перемычек, шприцевание всех подшипников печи №2 | 3h | 2026-04-23 09:00 A | 2026-04-23 12:00 A |  | 100% |  |  |  | start no earlier than 2026-04-24 09:00 | Бобренок В | 3h | 3h |
| 490 | 1.229 | на питателе заменить втулки линия 1 и 2 | 2h | 2026-04-15 08:00 A | 2026-04-15 11:00 A |  | 100% |  |  |  | start no earlier than 2026-04-15 08:00 | Бобренок В | 2h | 2h |
| 491 | 1.230 | проверить радиатор приточки (протечки, есть ли подача горячей воды), если нет - выключить приточку, чтобы не разморозить! | 1h | 2026-04-14 09:00 A | 2026-04-14 10:00 A |  | 100% |  |  |  | start no earlier than 2026-04-14 08:00 | Труфанов А | 1h | 1h |
| 492 | 1.231 | приварить левую ногу мезонина на фасовке (штабелером сместили) | 1h | 2026-04-15 09:00 A | 2026-04-15 10:00 A |  | 100% |  |  |  | start no earlier than 2026-04-15 09:00 | Бобренок В | 1h | 1h |
| 493 | 1.232 | на печи №1 прошприцевать подшипники, проверить токи, если нужно вскрываем на ревизию перемычек | 3h | 2026-04-14 09:00 A | 2026-04-14 12:00 A |  | 100% |  |  |  | start no earlier than 2026-04-14 08:00 | Труфанов А | 3h | 3h |
| 494 | 1.233 | замена электродной группы на парогенераторе линия №1 (электроды подготовили в слесарке) | 4h | 2026-04-14 09:00 A | 2026-04-14 13:00 A |  | 100% |  |  |  | start no earlier than 2026-04-14 08:00 | Труфанов А | 4h | 4h |
| 495 | 1.234 | на квадропаке тена выставить в параллель | 1h | 2026-04-13 09:00 A | 2026-04-13 10:00 A |  | 100% |  |  |  | start no earlier than 2026-04-13 08:00 | Труфанов А | 1h | 1h |
| 496 | 1.235 | покрасить подиум под циклонами линия 1 и 2 | 2h | 2026-04-22 09:00 A | 2026-04-22 11:00 A |  | 100% |  |  |  | start no earlier than 2026-04-22 09:00 | Бундин В | 2h | 2h |
| 497 | 1.236 | подготовить лекало на приемный лоток транспортера тип 2 (у них в работе картонка, можно по ней и сделать), если будет остановка приварить | 1h | 2026-04-27 09:00 A | 2026-04-27 10:00 A |  | 100% |  |  |  | start no earlier than 2026-04-27 09:00 | Тимофеев В | 1h | 1h |
| 498 | 1.237 | на пнемоулитку поставить пистолет (зона экструдера) | 1h | 2026-04-11 09:00 A | 2026-04-13 10:00 A |  | 100% |  |  |  | start no earlier than 2026-04-11 09:00 | Макаревич А | 1h | 1h |
| 499 | 1.238 | установить фильтр на кондиционер между печками (фильтр у Луговских) | 1h | 2026-04-22 09:00 A | 2026-04-22 10:00 A |  | 100% |  |  |  | start no earlier than 2026-04-22 09:00 | Труфанов А | 1h | 1h |

| ID | WBS | Task | Type | Duration | Start | Finish | Predecessors | Complete | Actual start | Actual finish | Total slack | Constraint | Resources | Work | Actual work |
| --- | --- | --- | --- | --- | --- | --- | --- | --- | --- | --- | --- | --- | --- | --- | --- |
| 500 | 1.239 | **зафиксировать ручку в туалет (закрутить)** |  | 856.12d | 2023-03-22 09:00 A | 2026-04-22 10:00 |  | 100% |  | 2026-05-05 10:00 |  |  |  | 2h | 2h |
| 501 | 1.239.1 | заказать ручки |  | 1h | 2023-03-22 09:00 A | 2023-03-22 10:00 A |  | 100% |  |  |  |  | Шуранов Ю | 1h | 1h |
| 502 | 1.239.2 | установка (заменить ручку, взять на складе) |  | 1h | 2026-05-05 09:00 A | 2026-05-05 10:00 A |  | 100% |  |  |  | start no earlier than 2026-05-05 09:00 | Бобренок В | 1h | 1h |
| 503 | 1.240 | ТО теко 1,5 (чистка тен, смазка штоков пневмоцилиндров, подшипников) | manual | 3h | 2026-04-25 09:00 A | 2026-04-25 12:00 A |  | 100% |  |  |  | start no earlier than 2026-04-25 09:00 | Труфанов А | 3h | 3h |
| 504 | 1.241 | слить конденсат с компрессора, чистка фильтров и радиаторов | manual | 2h | 2026-04-12 09:00 A | 2026-04-12 11:00 A |  | 100% |  |  |  | start no earlier than 2026-04-12 09:00 | Макаревич А | 2h | 2h |
| 505 | 1.242 | **заказать газлифт жиротопка** |  | 11.12d? | 2026-04-22 09:00 A | 2026-05-06 10:00 |  | 100% |  | 2026-08-18 09:20 |  |  |  | 84.08h | 84.08h |
| 506 | 1.242.1 | доставка |  | 10d | 2026-04-22 09:00 A | 2026-05-05 18:00 A |  | 100% |  |  |  | start no earlier than 2026-04-22 09:00 | Карабанов | 80h | 80h |
| 507 | 1.242.2 | **установка газ лифт** |  | 69.04d | 2026-05-13 09:00 A | 2026-08-18 09:20 A |  | 100% |  |  |  |  |  | 4.08h | 4.08h |
| 508 | 1.242.2.1 | контроль поставки / размер |  | 20min | 2026-08-18 09:00 A | 2026-08-18 09:20 A |  | 100% |  |  |  | start no earlier than 2026-08-18 09:00 | Шуранов Ю | 0.33h | 0.33h |
| 509 | 1.242.2.2 | наварить уголок для площадки упора газлифта |  | 1h | 2026-05-13 09:00 A | 2026-05-13 10:00 A |  | 100% |  |  |  | start no earlier than 2026-05-13 09:00 | Труфанов А; Некрасов А | 2h | 2h |
| 510 | 1.242.2.3 | заявка газлифт с меньшей усилием/ выяснить координата |  | 30min | 2026-05-27 09:00 A | 2026-05-27 09:30 A |  | 100% |  |  |  | start no earlier than 2026-05-27 09:00 | Зорькин В | 0.5h | 0.5h |
| 511 | 1.242.2.4 | доставка контроль |  | 15min | 2026-08-12 09:00 A | 2026-08-12 09:15 A | 510FS+10d | 100% |  |  |  | start no earlier than 2026-05-13 09:00 | Зорькин В | 0.25h | 0.25h |
| 512 | 1.242.2.5 | замена |  | 1h | 2026-08-12 09:00 A | 2026-08-12 10:00 A |  | 100% |  |  |  | start no earlier than 2026-08-12 09:00 | Бобренок В | 1h | 1h |
| 513 | 1.243 | убрать диммер за еврокубом, где завозят навески (провода заизолировать и спрятать в кабель-канал) |  | 1h | 2026-04-10 08:00 A | 2026-04-10 10:00 A |  | 100% |  |  |  | start no earlier than 2026-04-10 08:00 | Бобренок В | 1h | 1h |
| 514 | 1.244 | закрыть монтажную коробку над дверью зона жиров выход |  | 1h | 2026-04-09 08:00 A | 2026-04-09 10:00 A |  | 100% |  |  |  | start no earlier than 2026-04-09 08:00 | Бобренок В | 1h | 1h |
| 515 | 1.245 | **на аппликаторе установить принтер (взять на складе)** |  | 3h? | 2026-04-10 09:00 | 2026-04-10 12:00 |  | 100% | 2026-04-09 08:00 | 2026-05-14 10:00 |  |  |  | 5h | 5h |
| 516 | 1.245.1 | монтаж витой пары от аппликатора до шкафа где вывозят ГП справа |  | 4h | 2026-04-09 08:00 A | 2026-04-09 13:00 A |  | 100% |  |  |  | start no earlier than 2026-04-09 08:00 | Бобренок В | 4h | 4h |
| 517 | 1.245.2 | тест принтера |  | 1h | 2026-05-14 09:00 A | 2026-05-14 10:00 A |  | 100% |  |  |  | start no earlier than 2026-05-14 09:00 | Зорькин В | 1h | 1h |
| 518 | 1.246 | замена шнек+гильзы (б/у) на 2 линии |  | 4h | 2026-04-09 08:00 A | 2026-04-09 13:00 A |  | 100% |  |  |  | start no earlier than 2026-04-09 08:00 | Тимофеев В | 4h | 4h |
| 519 | 1.247 | закрепить светильник в комнатке перед выходом, где вывозят готовую продукцию справа, оторвался | manual | 1h | 2026-04-08 09:00 A | 2026-04-08 10:00 A |  | 100% |  |  |  | start no earlier than 2026-04-08 08:00 | Бундин В | 1h | 1h |
| 520 | 1.248 | **замена лент на аппликаторе, подумать какой сделать отражатель для фотометки, чтобы не цепляло пакеты в работе** |  | 0.5d | 2026-05-27 09:00 | 2026-05-27 13:00 |  |  |  |  |  |  |  | 4h |  |
| 521 | 1.248.1 | замена ленеты |  | 4h | 2026-10-12 09:00 | 2026-10-12 13:00 |  |  |  |  | 107.09d | start no earlier than 2026-10-12 09:00 | Тимофеев В | 4h |  |
| 522 | 1.249 | подготовить электродную группу для парогенератора (собрать) |  | 2h | 2026-04-08 09:00 A | 2026-04-08 11:00 A |  | 100% |  |  |  | start no earlier than 2026-04-08 08:00 | Бундин В | 2h | 2h |
| 523 | 1.250 | **просыпается гранула на пересыпке с барабана в конвейер** |  | 0.5d | 2026-04-08 09:00 A | 2026-04-08 13:00 A |  | 100% |  |  |  |  |  | 6h | 6h |
| 524 | 1.250.1 | пододвинуть ближе к барабану конвейер + охладитель + вентилятор |  | 2h | 2026-04-08 09:00 A | 2026-04-08 11:00 A |  | 100% |  |  |  | start no earlier than 2026-04-08 09:00 | Бобренок В | 2h | 2h |
| 525 | 1.250.2 | доработка приемного лотка конвейера |  | 4h | 2026-04-08 09:00 A | 2026-04-08 13:00 A |  | 100% |  |  |  | start no earlier than 2026-04-08 09:00 | Некрасов А | 4h | 4h |
| 526 | 1.251 | забрать 2 рохли с пандуса, снять колеса в зип (зад- перед), а сами рохли в контейнер |  | 3h | 2026-04-04 09:00 A | 2026-04-06 12:00 A |  | 100% |  |  |  | start no earlier than 2026-04-04 09:00 | Труфанов А | 3h | 3h |

| ID | WBS | Task | Type | Duration | Start | Finish | Predecessors | Complete | Constraint | Resources | Work | Actual work |
| --- | --- | --- | --- | --- | --- | --- | --- | --- | --- | --- | --- | --- |
| 527 | 1.252 | **квадропак модернизация регулировки пластины нажима роликов для захвата пакета** |  | 2.12d | 2026-04-15 09:00 A | 2026-04-17 10:00 A |  | 100% |  |  | 3h | 3h |
| 528 | 1.252.1 | регулировочной тягой отвезти нажимную площадку на 5мм (остановить работу на 10 минут, согласовать с мастером) |  | 1h | 2026-04-17 09:00 A | 2026-04-17 10:00 A |  | 100% | start no earlier than 2026-04-17 09:00 | Бобренок В | 1h | 1h |
| 529 | 1.252.2 | изготовление пластины на ногу по аналогии как на первой ноге |  | 1h | 2026-04-15 09:00 A | 2026-04-15 10:00 A | 528 | 100% | start no earlier than 2026-04-15 09:00 | Бобренок В | 1h | 1h |
| 530 | 1.252.3 | монтаж |  | 1h | 2026-04-15 10:00 A | 2026-04-15 11:00 A | 529 | 100% | start no earlier than 2026-04-10 09:00 | Бобренок В | 1h | 1h |
| 531 | 1.253 | изготовить крышку на приямок слива канализации под раковинами зона экструдер. Из нерж, с ручкой. |  | 4h | 2026-04-02 08:00 A | 2026-04-02 13:00 A |  | 100% | start no earlier than 2026-04-02 08:00 | Бобренок В | 4h | 4h |
| 532 | 1.254 | выпрямить погнутые роль-ворота на рампе - в сторону слесарки (нужно откутить левую направляшку и вставить воротину на место) |  | 1h | 2026-04-02 08:00 A | 2026-04-02 10:00 A |  | 100% | start no earlier than 2026-04-02 08:00 | Бобренок В | 1h | 1h |
| 533 | 1.255 | **выключатель света на входе в гидролизатную закрепить сам рычаг переключения, проскальзывает** |  | 15.12d | 2026-04-06 09:00 A | 2026-04-27 10:00 A |  | 100% |  | Макаревич А | 123h | 123h |
| 534 | 1.255.1 | заказать выключатель |  | 1h | 2026-04-06 09:00 A | 2026-04-06 10:00 A |  | 100% | start no earlier than 2026-04-06 08:00 | Шуранов Ю | 1h | 1h |
| 535 | 1.255.2 | замена выключателя (выключатель в слесарке тебе показывал) |  | 1h | 2026-04-25 09:00 A | 2026-04-27 10:00 A |  | 100% | start no earlier than 2026-04-25 09:00 | Бобренок В | 1h | 1h |
| 536 | 1.256 | на пандусе 1 цеха справа - пометить шнеки и гильзы что они рабочие и вывести в контейнер |  | 2h | 2026-04-01 08:00 A | 2026-04-01 11:00 A |  | 100% | start no earlier than 2026-04-01 08:00 | Бобренок В | 2h | 2h |
| 537 | 1.257 | взять с контейнера пысос- проверить рабочий или нет (если работает выдать в 1 цех) |  | 2h | 2026-04-01 08:00 A | 2026-04-01 11:00 A |  | 100% | start no earlier than 2026-04-01 08:00 | Бобренок В | 2h | 2h |
| 538 | 1.258 | заменить плату интерфейса RS485 |  | 1h | 2026-04-04 09:00 A | 2026-04-06 10:00 A |  | 100% | start no earlier than 2026-04-04 09:00 | Труфанов А | 1h | 1h |
| 539 | 1.259 | замена шнеки 1 линия |  | 4h | 2026-03-31 08:00 A | 2026-03-31 13:00 A |  | 100% | start no earlier than 2026-03-31 08:00 | Тимофеев В; Бобренок В | 8h | 8h |
| 540 | 1.260 | замер износ шнеков |  | 1h | 2026-03-31 08:00 A | 2026-03-31 10:00 A |  | 100% | start no earlier than 2026-03-31 08:00 | Тимофеев В; Бобренок В; Зорькин В | 3h | 3h |
| 541 | 1.261 | почистить канальные вентиляторы вытяжки в курилке |  | 2h | 2026-03-28 09:00 A | 2026-03-30 11:00 A |  | 100% | start no earlier than 2026-03-28 09:00 | Бундин В | 2h | 2h |
| 542 | 1.262 | монтаж розетки на ногу нотис справа для подключения весов |  | 2h | 2026-03-27 09:00 A | 2026-03-27 11:00 A |  | 100% | start no earlier than 2026-03-27 09:00 | Труфанов А | 2h | 2h |
| 543 | 1.263 | добавить вибрации на виброохладителе линия 2 (согласовать с мастером, если будет остановка) |  | 2h | 2026-04-30 09:00 A | 2026-04-30 11:00 A | 552 | 100% |  | Бундин В | 2h | 2h |
| 544 | 1.264 | **замена ленты конвейер 2 линия 2** |  | 12.38d | 2026-04-07 09:00 A | 2026-04-23 12:00 A |  | 100% |  |  | 15h | 15h |
| 545 | 1.264.1 | взять ленту 400мм и начать крепить ковши для транспортера тип 2 (посчитать количество на транспортере) | manual | 9h | 2026-04-07 09:00 A | 2026-04-08 10:00 A |  | 100% | start no earlier than 2026-04-07 09:00 | Тимофеев В | 9h | 9h |
| 546 | 1.264.2 | замена ленты |  | 3h | 2026-04-23 09:00 A | 2026-04-23 12:00 A |  | 100% | start no earlier than 2026-04-23 09:00 | Тимофеев В; Бундин В | 6h | 6h |
| 547 | 1.265 | заменить на штабелере второй АКБ в зоне экструдера |  | 1h | 2026-03-28 09:00 A | 2026-03-30 10:00 A |  | 100% | start no earlier than 2026-03-28 09:00 | Дедов В | 1h | 1h |
| 548 | 1.266 | на кпп №1 опустить на 10см кабель в гофре для камер видеонаблюдения | manual | 2h | 2026-03-28 09:00 A | 2026-03-28 11:00 A |  | 100% | start no earlier than 2026-03-28 09:00 | Бундин В | 2h | 2h |
| 549 | 1.267 | вход охладителя 1 линии - нужно на среднем лотке между уровнями сделать сбоков шторки (фото скину) |  | 2h | 2026-03-28 09:00 A | 2026-03-30 11:00 A |  | 100% | start no earlier than 2026-03-28 09:00 | Бундин В | 2h | 2h |
| 550 | 1.268 | на первой линии под выходом из печи прикрутить на стенку оргстекло (Слава готовил по размерам оргстекло) |  | 1h | 2026-03-28 09:00 A | 2026-03-30 10:00 A |  | 100% | start no earlier than 2026-03-28 09:00 | Труфанов А | 1h | 1h |
| 551 | 1.269 | На пробниках оторвали разъем питания, нужно припаять |  | 2h | 2026-03-27 09:00 A | 2026-03-27 11:00 A |  | 100% | start no earlier than 2026-03-27 09:00 | Дедов В | 2h | 2h |
| 552 | 1.270 | подготовить 1 ленты с ковшами для транспортера тип 2 (зип) |  | 1d? | 2026-04-29 09:00 A | 2026-04-29 18:00 A |  | 100% | start no earlier than 2026-04-29 09:00 | Шуранов Ю | 8h | 8h |
| 553 | 1.271 | замена на старые капролонновые втулки в питателе линия 1 |  | 1h | 2026-03-26 09:00 A | 2026-03-26 10:00 A |  | 100% | start no earlier than 2026-03-26 09:00 | Тимофеев В | 1h | 1h |
| 554 | 1.272 | сделать на 2 линии вставыш на ленту транспортера тип 2 и установить на транспортер |  | 4h | 2026-03-25 09:00 A | 2026-03-25 13:00 A |  | 100% | start no earlier than 2026-03-25 09:00 | Некрасов А; Бобренок В | 8h | 8h |
| 555 | 1.273 | герметизация мезонина подачи навесок по шву |  | 1h | 2026-04-15 09:00 A | 2026-04-15 10:00 A |  | 100% | start no earlier than 2026-04-15 09:00 | Бобренок В | 1h | 1h |

| ID | WBS | Task | Type | Duration | Start | Finish | Complete | Remaining | Actual start | Actual finish | Constraint | Resources | Work | Actual work |
| --- | --- | --- | --- | --- | --- | --- | --- | --- | --- | --- | --- | --- | --- | --- |
| 556 | 1.274 | **на 2 линии на хомуты закрепить горловину к бункеру подачи сухого гидрализата (все расскажу)** |  | 0.25d | 2026-04-27 09:00 A | 2026-04-27 11:00 A | 100% |  |  |  |  | Некрасов А | 4h | 4h |
| 557 | 1.274.1 | на горловине подачи сухого гидрализата приварить выход под углом 45 градусов (углы из нерж есть в 3 цехе) |  | 2h | 2026-04-27 09:00 A | 2026-04-27 11:00 A | 100% |  |  |  | start no earlier than 2026-04-27 09:00 | Макаревич А | 2h | 2h |
| 558 | 1.275 | **разобрать с двух сторон питатель 2 линия - ревизия шестеренок и втулок спереди (оставить все разобранное)** |  | 2h | 2026-03-24 09:00 | 2026-03-24 11:00 | 100% |  | 2026-03-26 09:00 | 2026-03-26 11:00 |  |  | 2h | 2h |
| 559 | 1.275.1 | собрать питатель, ревизия втулок, подшипников, шнеков, шестеренок. Подогнать капролонновые втулки |  | 2h | 2026-03-26 09:00 A | 2026-03-26 11:00 A | 100% |  |  |  | start no earlier than 2026-03-26 09:00 | Тимофеев В | 2h | 2h |
| 560 | 1.276 | пульт управления кондиционером в зоне экструдера- закрепить гофру и заизолировать разрыв гофры, закрепить к стенке |  | 1h | 2026-03-24 08:00 A | 2026-03-24 10:00 A | 100% |  |  |  | start no earlier than 2026-03-24 08:00 | Бобренок В | 1h | 1h |
| 561 | 1.277 | блок питания для весов на жирах развалился, стянуть изолентой |  | 1h | 2026-03-24 08:00 A | 2026-03-24 10:00 A | 100% |  |  |  | start no earlier than 2026-03-24 08:00 | Бобренок В | 1h | 1h |
| 562 | 1.278 | **ремонт /отключить 2 вентилятора охладитель 1 линия** |  | 801d | 2023-06-21 09:00 A | 2026-07-15 18:00 A | 100% |  |  |  |  | Тимофеев В | 12801h | 12801h |
| 563 | 1.278.1 | заказать в зип |  | 6392h | 2023-06-21 09:00 A | 2026-07-15 18:00 A | 100% |  |  |  |  | Шуранов Ю | 6392h | 6392h |
| 564 | 1.278.2 | заменить 2 вентилятора |  | 1h | 2026-04-04 09:00 A | 2026-04-06 10:00 A | 100% |  |  |  |  | Макаревич А | 1h | 1h |
| 565 | 1.279 | демонтаж крышка лотка в проеме между краем площадки вентиляции приточной и проемом ворот вход в кооридор завода навесок |  | 383520min | 2023-06-21 09:00 A | 2026-07-15 18:00 A | 100% |  |  |  |  | Труфанов А | 6392h | 6392h |
| 566 | 1.280 | стук шнек 2 линия - проверить, при необходимости разобрать |  | 3h | 2026-04-27 09:00 A | 2026-04-27 12:00 A | 100% |  |  |  | start no earlier than 2026-04-27 09:00 | Тимофеев В; Бобренок В | 6h | 6h |
| 567 | 1.281 | слить конденсат и продуть все радиаторы компрессор |  | 1h | 2026-03-21 09:00 A | 2026-03-23 10:00 A | 100% |  |  |  | start no earlier than 2026-03-21 09:00 | Дедов В | 1h | 1h |
| 568 | 1.282 | закрепить аварийную кнопку в гидролизатной (фото в чате будет) / пожарный выключатель |  | 1h | 2026-03-22 09:00 A | 2026-03-23 10:00 A | 100% |  |  |  | start no earlier than 2026-03-22 09:00 | Бобренок В | 1h | 1h |
| 569 | 1.283 | кнопки на управление ворот зона жиров поднять и закпепить выше |  | 2h | 2026-03-18 08:00 A | 2026-03-18 11:00 A | 100% |  |  |  | start no earlier than 2026-03-18 08:00 | Макаревич А | 2h | 2h |
| 570 | 1.284 | закрепить все отбойники где завозят навески экструдерщики |  | 2h | 2026-03-18 08:00 A | 2026-03-18 11:00 A | 100% |  |  |  | start no earlier than 2026-03-18 08:00 | Макаревич А | 2h | 2h |
| 571 | 1.285 | закрыить все электро шкафы |  | 30min | 2026-03-17 08:00 A | 2026-03-17 09:30 A | 100% |  |  |  | start no earlier than 2026-03-17 08:00 | Бобренок В | 0.5h | 0.5h |
| 572 | 1.286 | поломоечная машинка устранить течь |  | 1h | 2026-03-17 08:00 A | 2026-03-17 10:00 A | 100% |  |  |  | start no earlier than 2026-03-17 08:00 | Бобренок В | 1h | 1h |
| 573 | 1.287 | закрыить крышку на пробниках, задняя стенка прикрутить |  | 30min | 2026-03-17 08:00 A | 2026-03-17 09:30 A | 100% |  |  |  | start no earlier than 2026-03-17 08:00 | Бобренок В | 0.5h | 0.5h |
| 574 | 1.288 | продувка кабельного лотка |  | 2h | 2026-03-18 09:00 A | 2026-03-18 11:00 A | 100% |  |  |  | start no earlier than 2026-03-18 09:00 | Труфанов А; Некрасов А | 4h | 4h |
| 575 | 1.289 | монтаж крючков под халаты. Получить у мастера |  | 1h | 2026-03-17 08:00 A | 2026-03-17 10:00 A | 100% |  |  |  | start no earlier than 2026-03-17 08:00 | Бобренок В | 1h | 1h |
| 576 | 1.290 | **установить расходомеры пара на ПГ** |  | 0.38d | 2026-04-01 09:00 | 2026-04-01 12:00 |  | 0.38d | 2026-10-07 09:00 |  |  |  | 3h |  |
| 577 | 1.290.1 | монтаж 1 линия расходомер / кабель / блок питания | manual | 3h | 2026-10-07 09:00 A | 2026-10-07 12:00 |  | 3h |  |  | start no earlier than 2026-10-07 09:00 | Некрасов А | 3h |  |
| 578 | 1.291 | **монтаж регистратор данных линия 1 и 2:** |  | 0.25d | 2026-03-18 09:00 A | 2026-03-18 11:00 A | 100% |  |  |  |  |  | 2h | 2h |
| 579 | 1.291.1 | подключение линия 1 |  | 2h | 2026-03-18 09:00 A | 2026-03-18 11:00 A | 100% |  |  |  | start no earlier than 2026-03-18 09:00 | Домоводов К | 2h | 2h |

| ID | WBS | Task | Type | Duration | Start | Finish | Predecessors | Complete | Remaining | Total slack | Free slack | Constraint | Resources | Work | Actual work |
| --- | --- | --- | --- | --- | --- | --- | --- | --- | --- | --- | --- | --- | --- | --- | --- |
| 580 | 1.292 | **разделить воду в экструдер и парогенераторы** |  | 119.44d | 2026-03-19 09:00 A | 2026-09-02 12:30 |  | 90% | 11.69d | 143.16d |  |  |  | 117.5h | 106h |
| 581 | 1.292.1 | заявка поплавкой клапан вертикальный, подводка с боку по аналогии с 4ц |  | 1h | 2026-03-19 09:00 A | 2026-03-19 10:00 A |  | 100% |  |  |  | start no earlier than 2026-03-19 08:00 | Зорькин В | 1h | 1h |
| 582 | 1.292.2 | доставка |  | 10d | 2026-03-19 10:00 A | 2026-04-02 10:00 A | 581 | 100% |  |  |  | start no earlier than 2026-03-19 08:00 | Карабанов | 80h | 80h |
| 583 | 1.292.3 | испытать производсительность маленького черн насоса с "медленным" счетким |  | 2h | 2026-05-20 09:00 A | 2026-05-20 11:00 A |  | 100% |  |  |  | start no earlier than 2026-05-20 09:00 | Тимофеев В | 2h | 2h |
| 584 | 1.292.4 | изготовить емкость для поплавкой камеры и насоса из нерж |  | 4h | 2026-04-27 09:00 A | 2026-04-27 13:00 A |  | 100% |  |  |  | start no earlier than 2026-04-27 09:00 | Макаревич А | 4h | 4h |
| 585 | 1.292.5 | доставка частотный 220 контроль | milestone | 0d | 2026-04-24 09:00 A | 2026-04-24 09:00 A |  | 100% |  |  |  | start no earlier than 2026-04-24 09:00 | Зорькин В |  |  |
| 586 | 1.292.6 | испытать регулирование насоса на частотнике |  | 1h | 2026-05-26 09:00 A | 2026-05-26 10:00 A |  | 100% |  |  |  | start no earlier than 2026-05-26 09:00 | Дедов В | 1h | 1h |
| 587 | 1.292.7 | монтаж насоса + бак нерж на линия 2 |  | 1h | 2026-05-27 09:00 A | 2026-05-27 10:00 A |  | 100% |  |  |  | start no earlier than 2026-05-27 09:00 | Тимофеев В | 1h | 1h |
| 588 | 1.292.8 | монтаж розетка, кабель до насаса, подключение двигатель насоса |  | 1h | 2026-05-27 09:00 A | 2026-05-27 10:00 A |  | 100% |  |  |  | start no earlier than 2026-05-27 09:00 | Бундин В | 1h | 1h |
| 589 | 1.292.9 | подключение насос + счетчик + кран + частотник - сборка схема с байпасом на мал насосе |  | 2h | 2026-08-11 09:00 A | 2026-08-11 11:00 A |  | 100% |  |  |  | start no earlier than 2026-08-11 09:00 | Тимофеев В | 2h | 2h |
| 590 | 1.292.10 | установить счетчик в линию |  | 1h | 2026-08-12 09:00 A | 2026-08-12 10:00 A |  | 100% |  |  |  | start no earlier than 2026-08-12 09:00 | Тимофеев В | 1h | 1h |
| 591 | 1.292.11 | испытания производительности и регулировки |  | 1h | 2026-08-12 09:00 A | 2026-08-12 10:00 A |  | 100% |  |  |  | start no earlier than 2026-08-12 09:00 | Тимофеев В | 1h | 1h |
| 592 | 1.292.12 | тестирование работы при обновленном SSID |  | 1h | 2026-08-19 09:00 A | 2026-08-19 10:00 A |  | 100% |  |  |  | start no earlier than 2026-08-19 09:00 | Домоводов К | 1h | 1h |
| 593 | 1.292.13 | **монтаж на линия 1** |  | 18.44d | 2026-08-07 09:00 | 2026-09-02 12:30 |  |  |  | 143.16d |  |  |  | 11.5h |  |
| 594 | 1.292.13.1 | заявка на счетчик, насос, 3х ход клапан, фитинги, канистра |  | 1h | 2026-08-07 09:00 | 2026-08-07 10:00 |  |  |  | 143.16d | 0d | start no earlier than 2026-08-07 09:00 | Зорькин В | 1h |  |
| 595 | 1.292.13.2 | контроль поставки |  | 30min | 2026-08-28 10:00 | 2026-08-28 10:30 | 594FS+15d |  |  | 143.16d | 0d | start no earlier than 2026-08-12 09:00 | Зорькин В | 0.5h |  |
| 596 | 1.292.13.3 | сборка корпус |  | 4h | 2026-08-31 10:30 | 2026-08-31 15:30 | 595FS+1d |  |  | 143.16d | 0d | start no earlier than 2026-08-12 09:00 | Тимофеев В | 4h |  |
| 597 | 1.292.13.4 | монтаж линия 1 |  | 6h | 2026-09-01 15:30 | 2026-09-02 12:30 | 596FS+1d |  |  | 143.16d |  | start no earlier than 2026-08-12 09:00 | Тимофеев В | 6h |  |
| 598 | 1.292.14 | подключть конденсатор к насосу, запуск системы |  | 1h | 2026-05-27 08:00 A | 2026-05-27 10:00 A |  | 100% |  |  |  | start no earlier than 2026-05-27 08:00 | Дедов В | 1h | 1h |
| 599 | 1.292.15 | подготовить емкость нерж (попловок, сгон) для подключения к насосу |  | 4h | 2026-05-26 09:00 A | 2026-05-26 13:00 A |  | 100% |  |  |  | start no earlier than 2026-05-26 09:00 | Бундин В | 4h | 4h |
| 600 | 1.292.16 | испытать насос на часотоном приводе |  | 2h | 2026-05-19 09:00 A | 2026-05-19 11:00 A | 585 | 100% |  |  |  | start no earlier than 2026-05-20 09:00 | Тимофеев В | 2h | 2h |
| 601 | 1.292.17 | перенос с 3й линии бак с насосом, установка на линия 2 |  | 4h | 2026-04-08 09:00 A | 2026-04-08 13:00 A | 584 | 100% |  |  |  | start no earlier than 2026-04-08 09:00 | Некрасов А | 4h | 4h |
| 602 | 1.293 | бойлер на экструдере - установить трубку на клапан сброса и смонтировать её ы раковину |  | 1h | 2026-03-14 09:00 A | 2026-03-16 10:00 A |  | 100% |  |  |  | start no earlier than 2026-03-14 09:00 | Бундин В | 1h | 1h |
| 603 | 1.294 | смазать дверную ручку (входную) |  | 1h | 2026-03-15 09:00 A | 2026-03-16 10:00 A |  | 100% |  |  |  | start no earlier than 2026-03-15 09:00 | Бундин В | 1h | 1h |
| 604 | 1.295 | сделать ручку дверную (вход на упаковку) |  | 1h | 2026-03-15 09:00 A | 2026-03-16 10:00 A |  | 100% |  |  |  | start no earlier than 2026-03-15 09:00 | Бундин В | 1h | 1h |
| 605 | 1.296 | дверная ручка в туалет (подкрутить) |  | 1h | 2026-03-15 09:00 A | 2026-03-16 10:00 A |  | 100% |  |  |  | start no earlier than 2026-03-15 09:00 | Бундин В | 1h | 1h |
| 606 | 1.297 | штабелер экструдера натянуть цепь |  | 1h | 2026-03-13 08:00 A | 2026-03-13 10:00 A |  | 100% |  |  |  | start no earlier than 2026-03-13 08:00 | Дедов В | 1h | 1h |
| 607 | 1.298 | установить розетку возле роутера. Место монтажа фото от Шуранова |  | 2h | 2026-03-14 09:00 A | 2026-03-16 11:00 A |  | 100% |  |  |  | start no earlier than 2026-03-14 09:00 | Бундин В | 2h | 2h |
| 608 | 1.299 | линия 1 лоток охладителя под конвейером (по фото) - поднять на 3см, что бы не цеплял сетку. Снять / пересверлить крепеж |  | 2h | 2026-03-14 09:00 A | 2026-03-16 11:00 A |  | 100% |  |  |  | start no earlier than 2026-03-14 09:00 | Бундин В | 2h | 2h |
| 609 | 1.300 | изготовтиь полочку для роутера с "крышей. Двух скатная". |  | 4h | 2026-03-14 09:00 A | 2026-03-16 13:00 A |  | 100% |  |  |  | start no earlier than 2026-03-14 09:00 | Бундин В | 4h | 4h |

| ID | WBS | Task | Type | Duration | Start | Finish | Predecessors | Complete | Remaining | Actual start | Total slack | Constraint | Resources | Work | Actual work |
| --- | --- | --- | --- | --- | --- | --- | --- | --- | --- | --- | --- | --- | --- | --- | --- |
| 610 | 1.301 | **АКБ штабелер на навесках** |  | 43d | 2026-03-13 08:00 A | 2026-05-12 18:00 A |  | 100% |  |  |  |  |  | 2h | 2h |
| 611 | 1.301.1 | заявка на новые АКБ, отправить | milestone | 0d | 2026-03-13 08:00 A | 2026-03-13 08:00 A |  | 100% |  |  |  | start no earlier than 2026-03-13 08:00 | Шуранов Ю |  |  |
| 612 | 1.301.2 | получить счет | milestone | 0d | 2026-03-16 09:00 A | 2026-03-16 09:00 A | 611 | 100% |  |  |  | start no earlier than 2026-03-16 09:00 | Шуранов Ю |  |  |
| 613 | 1.301.3 | доставыка\ |  | 40d | 2026-03-16 09:00 A | 2026-05-12 18:00 A | 612 | 100% |  |  |  | start no earlier than 2026-03-13 08:00 |  |  |  |
| 614 | 1.301.4 | замена (получить на складе 2 АКБ и поменять на штабелере) |  | 2h | 2026-03-25 09:00 A | 2026-03-25 11:00 A |  | 100% |  |  |  | start no earlier than 2026-03-25 09:00 | Бобренок В | 2h | 2h |
| 615 | 1.302 | замена шнеков на 1 линии по команде. Подготовить / старые увезти |  | 1h | 2026-03-14 09:00 A | 2026-03-16 10:00 A |  | 100% |  |  |  | start no earlier than 2026-03-14 09:00 | Бобренок В; Некрасов А | 2h | 2h |
| 616 | 1.303 | **установить принтер датаматрикс на пролистыватель** |  | 151d? | 2026-03-13 09:00 A | 2026-09-30 18:00 |  | 20% | 120.8d? |  | 115.59d |  |  | 11h | 3h |
| 617 | 1.303.1 | разработка крепления принтера |  | 1h | 2026-03-13 09:00 A | 2026-03-13 10:00 A |  | 100% |  |  |  | start no earlier than 2026-03-13 08:00 | Зорькин В; Шуранов Ю | 2h | 2h |
| 618 | 1.303.2 | настройка ПО с агрегатором |  | 1d? | 2026-09-30 09:00 | 2026-09-30 18:00 |  |  |  |  | 115.59d | start no earlier than 2026-09-30 09:00 | Домоводов К | 8h |  |
| 619 | 1.303.3 | изучение документации |  | 1h | 2026-05-28 09:00 A | 2026-05-28 10:00 A |  | 100% |  |  |  | start no earlier than 2026-05-28 09:00 | Домоводов К | 1h | 1h |
| 620 | 1.304 | **заменить мятый профлист коррдиор подачи навесок** |  | 32.25d | 2026-03-13 09:00 A | 2026-04-28 11:00 A |  | 100% |  |  |  |  |  | 85h | 85h |
| 621 | 1.304.1 | расчет материал / заявка |  | 1h | 2026-03-13 09:00 A | 2026-03-13 10:00 A |  | 100% |  |  |  | start no earlier than 2026-03-13 09:00 | Шуранов Ю | 1h | 1h |
| 622 | 1.304.2 | доставка |  | 10d | 2026-03-13 10:00 A | 2026-03-27 10:00 A | 621 | 100% |  |  |  | start no earlier than 2026-03-12 08:00 | Карабанов | 80h | 80h |
| 623 | 1.304.3 | замена |  | 2h | 2026-04-28 09:00 A | 2026-04-28 11:00 A | 622 | 100% |  |  |  | start no earlier than 2026-04-28 09:00 | Некрасов А; Труфанов А | 4h | 4h |
| 624 | 1.305 | **заменить плинтус стена вдольпечи 2** |  | 11.06d? | 2026-03-26 09:00 | 2026-04-10 09:30 |  | 91% | 1d? | 2026-03-13 09:00 |  |  |  | 96.5h | 80.5h |
| 625 | 1.305.1 | заявка |  | 30min | 2026-03-13 09:00 A | 2026-03-13 09:30 A |  | 100% |  |  |  | start no earlier than 2026-03-13 09:00 | Шуранов Ю | 0.5h | 0.5h |
| 626 | 1.305.2 | доставка |  | 10d | 2026-03-13 09:30 A | 2026-03-27 09:30 A | 625 | 100% |  |  |  | start no earlier than 2026-03-12 08:00 | Карабанов | 80h | 80h |
| 627 | 1.305.3 | замена |  | 1d? | 2026-10-06 09:00 | 2026-10-06 18:00 | 626 |  |  |  | 110.59d | start no earlier than 2026-10-06 09:00 | Некрасов А; Олег | 16h |  |
| 628 | 1.306 | **заменить аллюминевый скотч на швах вентиляции** |  | 18.25d | 2026-03-12 09:00 A | 2026-04-07 11:00 A |  | 100% |  |  |  |  |  | 82.33h | 82.33h |
| 629 | 1.306.1 | заявка |  | 20min | 2026-03-12 09:00 A | 2026-03-12 09:20 A |  | 100% |  |  |  | start no earlier than 2026-03-12 08:00 | Зорькин В | 0.33h | 0.33h |
| 630 | 1.306.2 | доставка |  | 10d | 2026-03-12 09:20 A | 2026-03-26 09:20 A | 629 | 100% |  |  |  | start no earlier than 2026-03-12 08:00 | Карабанов | 80h | 80h |
| 631 | 1.306.3 | замена (также на улитках печей, циклона, стык регулировки шибера улитки) | manual | 2h | 2026-04-07 09:00 A | 2026-04-07 11:00 A | 630 | 100% |  |  |  | start no earlier than 2026-04-07 09:00 | Бундин В | 2h | 2h |
| 632 | 1.307 | **замена скорлупа утеплитель горячих труб печи** |  | 16d | 2026-03-13 09:00 A | 2026-04-05 11:00 A |  | 100% |  |  |  |  |  | 83h | 83h |
| 633 | 1.307.1 | заявка |  | 1h | 2026-03-13 09:00 A | 2026-03-13 10:00 A |  | 100% |  |  |  | start no earlier than 2026-03-13 09:00 | Зорькин В | 1h | 1h |
| 634 | 1.307.2 | доставка |  | 10d | 2026-03-13 10:00 A | 2026-03-27 10:00 A | 633 | 100% |  |  |  | start no earlier than 2026-03-12 08:00 | Карабанов | 80h | 80h |
| 635 | 1.307.3 | замена | manual | 2h | 2026-04-05 09:00 A | 2026-04-05 11:00 A | 634 | 100% |  |  |  | start no earlier than 2026-04-05 09:00 | Бундин В | 2h | 2h |

| ID | WBS | Task | Type | Duration | Start | Finish | Predecessors | Complete | Actual start | Actual finish | Constraint | Resources | Work | Actual work |
| --- | --- | --- | --- | --- | --- | --- | --- | --- | --- | --- | --- | --- | --- | --- |
| 636 | 1.308 | **купить прокатный запайщик** |  | 85.12d? | 2026-03-16 09:00 A | 2026-07-13 10:00 A |  | 100% |  |  |  |  | 11h | 11h |
| 637 | 1.308.1 | поиск / заявка |  | 2h | 2026-03-16 09:00 A | 2026-03-16 11:00 A |  | 100% |  |  | start no earlier than 2026-03-16 09:00 | Зорькин В | 2h | 2h |
| 638 | 1.308.2 | получить счет + договор |  | 1h | 2026-05-12 09:00 A | 2026-05-12 10:00 A | 637 | 100% |  |  | start no earlier than 2026-05-12 09:00 | Зорькин В | 1h | 1h |
| 639 | 1.308.3 | оплата | milestone | 0d | 2026-05-12 10:00 A | 2026-05-12 10:00 A | 638 | 100% |  |  | start no earlier than 2026-03-12 08:00 | Домоводов К |  |  |
| 640 | 1.308.4 | доставка |  | 40d | 2026-05-12 10:00 A | 2026-07-13 10:00 A | 639 | 100% |  |  | start no earlier than 2026-03-12 08:00 |  |  |  |
| 641 | 1.308.5 | приемка / сборка |  | 1d? | 2026-06-29 09:00 A | 2026-06-29 18:00 A | 640 | 100% |  |  | start no earlier than 2026-03-12 08:00 | Тимофеев В | 8h | 8h |
| 642 | 1.309 | сборка рохли 2шт |  | 1h | 2026-03-13 09:00 A | 2026-03-13 10:00 A |  | 100% |  |  | start no earlier than 2026-03-13 09:00 | Тимофеев В | 1h | 1h |
| 643 | 1.310 | изготовить герметичную крышку на подачку гидролизата |  | 2h | 2026-05-20 09:00 A | 2026-05-20 11:00 A |  | 100% |  |  | start no earlier than 2026-05-20 09:00 | Дедов В; Шуранов Ю | 4h | 4h |
| 644 | 1.311 | **установить крышку печи торцевую с стороны экструдера на шарниры** |  | 12.5d | 2026-03-25 09:00 | 2026-04-10 13:00 |  | 100% | 2026-03-06 09:00 | 2026-09-11 13:00 |  |  | 88.08h | 88.08h |
| 645 | 1.311.1 | заказ шарниры |  | 5min | 2026-03-06 09:00 A | 2026-03-06 09:05 A |  | 100% |  |  | start no earlier than 2026-03-06 08:00 | Шуранов Ю | 0.08h | 0.08h |
| 646 | 1.311.2 | доставка |  | 10d | 2026-03-06 09:05 A | 2026-03-20 09:05 A | 645 | 100% |  |  | start no earlier than 2026-03-06 08:00 | Карабанов | 80h | 80h |
| 647 | 1.311.3 | монтаж линия 1 |  | 4h | 2026-05-13 09:00 A | 2026-05-13 13:00 A | 646 | 100% |  |  | start no earlier than 2026-05-13 09:00 | Бобренок В | 4h | 4h |
| 648 | 1.311.4 | монтаж линия 1 и 2 печи (чтобы открывалась и не мешала открыванию лотку сверху) | manual | 4h | 2026-09-11 09:00 A | 2026-09-11 13:00 A | 646 | 100% |  |  | start no earlier than 2026-09-11 09:00 | Макаревич А | 4h | 4h |
| 649 | 1.312 | **квадропак заменить пружины на лапках** |  | 10.12d | 2026-03-18 09:00 A | 2026-04-01 10:00 A |  | 100% |  |  |  |  | 3h | 3h |
| 650 | 1.312.1 | попытка заменить |  | 1h | 2026-03-18 09:00 A | 2026-03-18 10:00 A |  | 100% |  |  | start no earlier than 2026-03-18 09:00 | Дедов В | 1h | 1h |
| 651 | 1.312.2 | проврить ролики на износ / заказать |  | 1h | 2026-03-19 09:00 A | 2026-03-19 10:00 A |  | 100% |  |  | start no earlier than 2026-03-19 08:00 | Зорькин В | 1h | 1h |
| 652 | 1.312.3 | проверить / разрабоать полпн прижимная пластина регулировка |  | 1h | 2026-04-01 09:00 A | 2026-04-01 10:00 A |  | 100% |  |  | start no earlier than 2026-04-01 09:00 | Шуранов Ю | 1h | 1h |
| 653 | 1.313 | **звонок на ворота по привозу навесок** |  | 37.25d | 2026-03-05 09:00 A | 2026-04-27 11:00 A |  | 100% |  |  |  |  | 82.5h | 82.5h |
| 654 | 1.313.1 | заявка на сирену / звонок |  | 30min | 2026-03-05 09:00 A | 2026-03-05 09:30 A |  | 100% |  |  | start no earlier than 2026-03-05 09:00 | Шуранов Ю | 0.5h | 0.5h |
| 655 | 1.313.2 | доставка |  | 10d | 2026-03-12 09:00 A | 2026-03-25 18:00 A | 654 | 100% |  |  | start no earlier than 2026-03-12 08:00 | Карабанов | 80h | 80h |
| 656 | 1.313.3 | монтаж кнопка и звонок на складе (кнопку устанавливаем справа от ворот- звонок возле ВРУ слева |  | 2h | 2026-04-25 09:00 A | 2026-04-27 11:00 A | 655 | 100% |  |  | start no earlier than 2026-04-25 09:00 | Бобренок В | 2h | 2h |
| 657 | 1.314 | **установить профлист на левую стену** |  | 47d? | 2026-03-12 09:00 A | 2026-05-15 18:00 A |  | 100% |  |  |  |  | 185.5h | 185.5h |
| 658 | 1.314.1 | расчет материал с Олегом |  | 1h | 2026-03-12 09:00 A | 2026-03-12 10:00 A |  | 100% |  |  | start no earlier than 2026-03-12 09:00 | Шуранов Ю | 1h | 1h |
| 659 | 1.314.2 | заявка |  | 30min | 2026-03-19 09:00 A | 2026-03-19 09:30 A | 658 | 100% |  |  | start no earlier than 2026-03-19 09:00 | Шуранов Ю | 0.5h | 0.5h |
| 660 | 1.314.3 | доставка |  | 10d | 2026-03-19 09:30 A | 2026-04-02 09:30 A | 659 | 100% |  |  | start no earlier than 2026-03-04 08:00 | Карабанов | 80h | 80h |
| 661 | 1.314.4 | монтаж пробный ряд |  | 4h | 2026-04-22 09:00 A | 2026-04-22 13:00 A |  | 100% |  |  | start no earlier than 2026-04-22 09:00 | Некрасов А; Олег; Труфанов А | 12h | 12h |
| 662 | 1.314.5 | монтаж каркас |  | 1d? | 2026-04-23 14:00 A | 2026-04-24 13:00 A | 660, 661FS+1d | 100% |  |  | start no earlier than 2026-04-22 09:00 | Некрасов А; Труфанов А | 16h | 16h |
| 663 | 1.314.6 | монтаж лист |  | 6h | 2026-04-28 09:00 A | 2026-04-28 16:00 A | 662 | 100% |  |  | start no earlier than 2026-04-28 09:00 | Некрасов А; Труфанов А | 12h | 12h |
| 664 | 1.314.7 | монтаж уровень 2 |  | 4d | 2026-05-12 09:00 A | 2026-05-15 18:00 A |  | 100% |  |  | start no earlier than 2026-05-12 08:00 | Некрасов А; Труфанов А | 64h | 64h |

| ID | WBS | Task | Type | Duration | Start | Finish | Predecessors | Complete | Constraint | Resources | Work | Actual work |
| --- | --- | --- | --- | --- | --- | --- | --- | --- | --- | --- | --- | --- |
| 665 | 1.315 | **модернизация вентиляции** |  | 135.5d | 2026-03-13 09:00 A | 2026-09-15 13:00 A |  | 100% |  |  | 14.5h | 14.5h |
| 666 | 1.315.1 | заявка врезки для отбора проб |  | 15min | 2026-08-21 09:00 A | 2026-08-21 09:15 A |  | 100% | start no earlier than 2026-08-21 09:00 | Зорькин В | 0.25h | 0.25h |
| 667 | 1.315.2 | контроль доставки врезки для отбора проб |  | 15min | 2026-09-09 09:00 A | 2026-09-09 09:15 A | 666FS+7d | 100% | start no earlier than 2026-09-09 09:00 | Зорькин В | 0.25h | 0.25h |
| 668 | 1.315.3 | монтаж врезки для отбора проб |  | 4h | 2026-09-15 09:00 A | 2026-09-15 13:00 A | 667FS+1d | 100% | start no earlier than 2026-09-15 09:00 | Некрасов А; Труфанов А | 8h | 8h |
| 669 | 1.315.4 | составить схему, расчет |  | 2h | 2026-03-13 09:00 A | 2026-03-13 11:00 A |  | 100% | start no earlier than 2026-03-13 09:00 | Домоводов К | 2h | 2h |
| 670 | 1.315.5 | монтаж вентиляторов |  | 4h | 2026-05-12 09:00 A | 2026-05-12 13:00 A |  | 100% | start no earlier than 2026-05-12 08:00 | оплот | 4h | 4h |
| 671 | 1.316 | **заменаить фитинги на жирах** |  | 44.12d | 2026-02-19 09:00 A | 2026-04-22 10:00 A |  | 100% |  |  | 81.5h | 81.5h |
| 672 | 1.316.1 | заявка |  | 30min | 2026-02-19 09:00 A | 2026-02-19 09:30 A |  | 100% | start no earlier than 2026-02-19 09:00 | Шуранов Ю | 0.5h | 0.5h |
| 673 | 1.316.2 | доставка |  | 10d | 2026-02-19 09:30 A | 2026-03-05 09:30 A | 672 | 100% |  | Карабанов | 80h | 80h |
| 674 | 1.316.3 | контроль поставки | milestone | 0d | 2026-03-12 08:00 A | 2026-03-12 08:00 A | 673 | 100% | start no earlier than 2026-03-12 08:00 | Шуранов Ю |  |  |
| 675 | 1.316.4 | контроль. Пришли опять не те | milestone | 0min | 2026-03-12 09:00 A | 2026-03-12 09:00 A | 673, 674 | 100% | start no earlier than 2026-03-12 09:00 | Зорькин В |  |  |
| 676 | 1.316.5 | контроль | milestone | 0d | 2026-04-01 09:00 A | 2026-04-01 09:00 A |  | 100% | start no earlier than 2026-04-01 09:00 | Зорькин В |  |  |
| 677 | 1.316.6 | замена |  | 1h | 2026-04-22 09:00 A | 2026-04-22 10:00 A | 675FS+2d | 100% | start no earlier than 2026-04-22 09:00 | Бобренок В | 1h | 1h |
| 678 | 1.317 | **жиротопка замена воздухоотводчиков** |  | 24.12d | 2026-03-04 09:00 A | 2026-04-07 10:00 A |  | 100% |  |  | 41.25h | 41.25h |
| 679 | 1.317.1 | заявка |  | 15min | 2026-03-04 09:00 A | 2026-03-04 09:15 A |  | 100% | start no earlier than 2026-03-04 09:00 | Зорькин В | 0.25h | 0.25h |
| 680 | 1.317.2 | доставка |  | 5d | 2026-03-04 09:15 A | 2026-03-11 09:15 A | 679 | 100% | start no earlier than 2026-02-27 08:00 | Карабанов | 40h | 40h |
| 681 | 1.317.3 | замена |  | 1h | 2026-04-07 09:00 A | 2026-04-07 10:00 A | 680 | 100% | start no earlier than 2026-04-07 09:00 | Бундин В | 1h | 1h |
| 682 | 1.318 | **увеличить освещение в зоне квадропака** |  | 11.12d | 2026-03-04 09:00 A | 2026-03-19 10:00 A |  | 100% |  |  | 83.5h | 83.5h |
| 683 | 1.318.1 | составить список мматериал для монтажа |  | 30min | 2026-03-04 09:00 A | 2026-03-04 09:30 A |  | 100% | start no earlier than 2026-03-04 09:00 | Зорькин В; Шуранов Ю | 1h | 1h |
| 684 | 1.318.2 | заявка трос, светильники |  | 30min | 2026-03-04 09:30 A | 2026-03-04 10:00 A | 683 | 100% | start no earlier than 2026-02-27 08:00 | Шуранов Ю | 0.5h | 0.5h |
| 685 | 1.318.3 | доставка |  | 10d | 2026-03-05 10:00 A | 2026-03-19 10:00 A | 684FS+1d | 100% | start no earlier than 2026-02-27 08:00 | Карабанов | 80h | 80h |
| 686 | 1.318.4 | монтаж |  | 2h | 2026-03-06 09:00 A | 2026-03-06 11:00 A |  | 100% | start no earlier than 2026-03-06 09:00 | Бобренок В | 2h | 2h |
| 687 | 1.319 | **установить орг стекло/нерж на обратный ход ленты на раму конвейера** |  | 38.25d | 2026-03-03 09:00 A | 2026-04-24 11:00 A |  | 100% |  |  | 83.5h | 83.5h |
| 688 | 1.319.1 | заявка нерж |  | 30min | 2026-03-03 09:00 A | 2026-03-03 09:30 A |  | 100% | start no earlier than 2026-03-03 09:00 | Зорькин В | 0.5h | 0.5h |
| 689 | 1.319.2 | доставка |  | 10d | 2026-03-03 09:30 A | 2026-03-17 09:30 A | 688 | 100% | start no earlier than 2026-03-02 09:00 | Карабанов | 80h | 80h |
| 690 | 1.319.3 | подготовка материала в размер по аналогии 2 линии |  | 1h | 2026-04-15 09:00 A | 2026-04-15 10:00 A | 689 | 100% | start no earlier than 2026-04-15 09:00 | Бундин В | 1h | 1h |
| 691 | 1.319.4 | установка на остановке 1 линии (переустановить) |  | 2h | 2026-04-24 09:00 A | 2026-04-24 11:00 A |  | 100% | start no earlier than 2026-04-24 09:00 | Бобренок В | 2h | 2h |

| ID | WBS | Task | Duration | Start | Finish | Predecessors | Complete | Constraint | Resources | Work | Actual work |
| --- | --- | --- | --- | --- | --- | --- | --- | --- | --- | --- | --- |
| 692 | 1.320 | **установить роутер в зону экструдера для регистрации данных** | 2.12d | 2026-03-02 09:00 A | 2026-03-04 10:00 A |  | 100% |  |  | 10.17h | 10.17h |
| 693 | 1.320.1 | монтаж кабель / розетка, роутер | 4h | 2026-03-02 09:00 A | 2026-03-02 13:00 A |  | 100% | start no earlier than 2026-03-02 09:00 | Некрасов А; Труфанов А | 8h | 8h |
| 694 | 1.320.2 | Монтаж розетки для роутера | 1h | 2026-03-03 09:00 A | 2026-03-03 10:00 A |  | 100% | start no earlier than 2026-03-03 09:00 | Тимофеев В | 1h | 1h |
| 695 | 1.320.3 | Заявка Айтишнику на монтаж наконечников | 10min | 2026-03-03 09:00 A | 2026-03-03 09:10 A |  | 100% | start no earlier than 2026-03-03 09:00 | Зорькин В | 0.17h | 0.17h |
| 696 | 1.320.4 | Монтаж штекеров на кабель | 1h | 2026-03-04 09:00 A | 2026-03-04 10:00 A |  | 100% | start no earlier than 2026-03-04 09:00 | Коленкоров | 1h | 1h |
| 697 | 1.321 | **ремонт приточной вентиляции** | 47.25d | 2026-02-26 09:00 A | 2026-05-04 11:00 A |  | 100% |  |  | 334.5h | 334.5h |
| 698 | 1.321.1 | заявка калорифер | 30min | 2026-03-04 09:00 A | 2026-03-04 09:30 A |  | 100% | start no earlier than 2026-03-04 09:00 | Зорькин В | 0.5h | 0.5h |
| 699 | 1.321.2 | доставка | 10d | 2026-03-04 09:30 A | 2026-03-20 09:30 A | 698 | 100% |  | Карабанов | 80h | 80h |
| 700 | 1.321.3 | замена калорифер | 4h | 2026-03-11 09:00 A | 2026-03-11 13:00 A |  | 100% | start no earlier than 2026-03-11 09:00 | Некрасов А; Труфанов А | 8h | 8h |
| 701 | 1.321.4 | дать фото насоса | 20min | 2026-02-26 09:00 A | 2026-02-26 09:20 A |  | 100% | start no earlier than 2026-02-26 08:00 | Бундин В | 0.33h | 0.33h |
| 702 | 1.321.5 | заявка насос вода | 30min | 2026-03-02 09:30 A | 2026-03-02 10:00 A | 698, 701 | 100% | start no earlier than 2026-02-26 08:00 | Зорькин В | 0.5h | 0.5h |
| 703 | 1.321.6 | доставка | 10d | 2026-03-02 10:00 A | 2026-03-16 10:00 A | 702 | 100% | start no earlier than 2026-02-26 08:00 | Карабанов | 80h | 80h |
| 704 | 1.321.7 | контроль доставки насос и заслонка | 10min | 2026-03-24 09:00 A | 2026-03-24 09:10 A |  | 100% | start no earlier than 2026-03-24 08:00 | Зорькин В | 0.17h | 0.17h |
| 705 | 1.321.8 | замена насоса | 1h | 2026-03-25 09:10 A | 2026-03-25 10:10 A | 704FS+1d | 100% | start no earlier than 2026-03-24 09:00 | Труфанов А | 1h | 1h |
| 706 | 1.321.9 | заявка привод заслонки | 30min | 2026-03-04 09:00 A | 2026-03-04 09:30 A | 702 | 100% | start no earlier than 2026-03-04 09:00 | Зорькин В | 0.5h | 0.5h |
| 707 | 1.321.10 | доставка | 10d | 2026-03-04 09:30 A | 2026-03-18 09:30 A | 706 | 100% | start no earlier than 2026-02-26 08:00 | Карабанов | 80h | 80h |
| 708 | 1.321.11 | замена привода заслонки | 1h | 2026-05-04 09:00 A | 2026-05-04 10:00 A | 704FS+1d | 100% | start no earlier than 2026-05-04 09:00 | Бобренок В | 1h | 1h |
| 709 | 1.321.12 | заявка фильтры на приточная вентиляция | 30min | 2026-03-04 09:00 A | 2026-03-04 09:30 A |  | 100% | start no earlier than 2026-03-04 09:00 | Зорькин В | 0.5h | 0.5h |
| 710 | 1.321.13 | доставка | 10d | 2026-03-04 09:30 A | 2026-03-18 09:30 A | 709 | 100% | start no earlier than 2026-02-27 08:00 | Карабанов | 80h | 80h |
| 711 | 1.321.14 | замена | 2h | 2026-05-04 09:00 A | 2026-05-04 11:00 A | 710 | 100% | start no earlier than 2026-05-04 09:00 | Некрасов А | 2h | 2h |
| 712 | 1.322 | **монтаж регистратор данных линия 1 и 2:** | 1.12d | 2026-02-24 09:00 A | 2026-02-25 10:00 A |  | 100% |  |  | 5h | 5h |
| 713 | 1.322.1 | установить розетку и автомат для для блока питания в ШУ экструдера, без подключения | 2h | 2026-02-24 09:00 A | 2026-02-24 11:00 A |  | 100% | start no earlier than 2026-02-24 09:00 | Дедов В | 2h | 2h |
| 714 | 1.322.2 | монтаж безподключения кабель RS485 по аналогии с линия 3 - только часотный привод. На складе. | 1h | 2026-02-24 09:00 A | 2026-02-24 10:00 A |  | 100% | start no earlier than 2026-02-24 09:00 | Дедов В | 1h | 1h |
| 715 | 1.322.3 | подключение розеток для блока питания в ШУ | 1h | 2026-02-25 09:00 A | 2026-02-25 10:00 A |  | 100% | start no earlier than 2026-02-25 09:00 | Некрасов А | 1h | 1h |
| 716 | 1.322.4 | монтаж пультов управления и индикации регистратор, по аналогии с линия 3 | 1h | 2026-02-25 09:00 A | 2026-02-25 10:00 A |  | 100% | start no earlier than 2026-02-25 09:00 | Некрасов А | 1h | 1h |
| 717 | 1.323 | заменить пластик втулку на металл деталь уплотнение вала прекондицинера 2 линия | 1d? | 2025-09-08 09:00 A | 2025-09-08 18:00 A |  | 100% | start no earlier than 2025-09-08 09:00 |  |  |  |

| ID | WBS | Task | Duration | Start | Finish | Predecessors | Complete | Actual finish | Total slack | Constraint | Resources | Work | Actual work |
| --- | --- | --- | --- | --- | --- | --- | --- | --- | --- | --- | --- | --- | --- |
| 718 | 1.324 | **баки жир 2 линия устноавить наконечники. От 23.05.25** | 265.25d | 2025-04-16 09:00 A | 2026-04-22 11:00 A |  | 100% |  |  |  |  | 42.5h | 42.5h |
| 719 | 1.324.1 | заявка на наконечнки | 30min | 2025-04-16 09:00 A | 2025-04-16 09:30 A |  | 100% |  |  | start no earlier than 2025-04-16 09:00 | Зорькин В | 0.5h | 0.5h |
| 720 | 1.324.2 | доставка | 5d | 2025-04-16 09:30 A | 2025-04-23 09:30 A | 719 | 100% |  |  | start no earlier than 2025-04-14 09:00 | Мультан | 40h | 40h |
| 721 | 1.324.3 | ТО каблей, клемников | 2h | 2026-04-22 09:00 A | 2026-04-22 11:00 A | 720 | 100% |  |  | start no earlier than 2026-04-22 09:00 | Труфанов А | 2h | 2h |
| 722 | 1.325 | **установить фильтры на жир** | 89.12d? | 2025-05-14 09:00 A | 2025-09-16 10:00 A |  | 100% |  |  |  |  | 50h | 50h |
| 723 | 1.325.1 | изготовить переходники токарь разместить | 1h | 2025-09-08 09:00 A | 2025-09-08 10:00 A |  | 100% |  |  | start no earlier than 2025-09-08 09:00 | Зорькин В | 1h | 1h |
| 724 | 1.325.2 | контроль доставки | 5d | 2025-09-08 10:00 A | 2025-09-15 10:00 A | 723 | 100% |  |  | start no earlier than 2025-09-08 09:00 | Зорькин В | 40h | 40h |
| 725 | 1.325.3 | замена | 1d? | 2025-09-15 10:00 A | 2025-09-16 10:00 A | 724 | 100% |  |  | start no earlier than 2025-09-08 09:00 | Тимофеев В | 8h | 8h |
| 726 | 1.325.4 | установить фильтры на жир 2шт через краны на тройник | 1h | 2025-05-14 09:00 A | 2025-05-14 10:00 A |  | 100% |  |  | start no earlier than 2025-05-14 09:00 | Тимофеев В | 1h | 1h |
| 727 | 1.326 | **палетные ворота подача навесок + подача жир** | 14d? | 2025-07-17 09:00 A | 2025-08-05 18:00 A |  | 100% |  |  |  |  | 32h | 32h |
| 728 | 1.326.1 | подготовить чертеж | 1d? | 2025-07-17 09:00 A | 2025-07-17 18:00 A |  | 100% |  |  | start no earlier than 2025-07-17 09:00 | Зорькин В | 8h | 8h |
| 729 | 1.326.2 | сборка рамы | 2d | 2025-07-25 09:00 A | 2025-07-28 18:00 A | 728 | 100% |  |  | start no earlier than 2025-07-25 09:00 | Некрасов А | 16h | 16h |
| 730 | 1.326.3 | монтаж | 1d? | 2025-08-05 09:00 A | 2025-08-05 18:00 A | 729 | 100% |  |  | start no earlier than 2025-08-05 09:00 | Некрасов А | 8h | 8h |
| 731 | 1.327 | защита подшипников паронтом + подготовка | 4h | 2025-06-18 09:00 A | 2025-06-18 13:00 A |  | 100% |  |  | start no earlier than 2025-06-18 09:00 | Тимофеев В | 4h | 4h |
| 732 | 1.328 | **квадропак ТО + составить карту смазки и ТО + составить список ЗИП** | 0.5d | 2025-04-02 09:00 A | 2025-04-02 13:00 A |  | 100% |  |  |  |  | 4h | 4h |
| 733 | 1.328.1 | оформить карту ТО | 4h | 2025-04-02 09:00 A | 2025-04-02 13:00 A |  | 100% |  |  | start no earlier than 2025-04-02 09:00 | Зорькин В | 4h | 4h |
| 734 | 1.329 | **квадропак некрасивый шов - золотинка** | 104.25d | 2025-01-13 09:00 A | 2025-06-06 11:00 |  | 100% | 2025-04-17 16:30 |  |  |  | 8h | 8h |
| 735 | 1.329.1 | **изготовление термоножа с вставкойвставкой** | 0.12d | 2025-01-13 09:00 A | 2025-01-13 10:00 A |  | 100% |  |  |  |  | 1h | 1h |
| 736 | 1.329.1.1 | чертеж | 1h | 2025-01-13 09:00 A | 2025-01-13 10:00 A |  | 100% |  |  | start no earlier than 2025-01-13 09:00 | Зорькин В | 1h | 1h |
| 737 | 1.329.2 | **установка тефлона на термонож** | 42.25d | 2025-04-17 09:00 A | 2025-06-06 11:00 |  | 100% | 2025-04-17 16:30 |  |  |  | 7h | 7h |
| 738 | 1.329.2.1 | разработать метод крепления | 30min | 2025-04-17 09:00 A | 2025-04-17 09:30 A |  | 100% |  |  | start no earlier than 2025-04-17 09:00 | Зорькин В; Шуранов Ю | 1h | 1h |
| 739 | 1.329.2.2 | чертеж | 4h | 2025-04-17 09:30 A | 2025-04-17 14:30 A | 738 | 100% |  |  | start no earlier than 2025-01-17 09:00 | Зорькин В | 4h | 4h |
| 740 | 1.329.2.3 | орг изготовление деталей | 2h | 2025-04-17 14:30 A | 2025-04-17 16:30 A | 739 | 100% |  |  | start no earlier than 2025-04-16 09:00 | Шуранов Ю | 2h | 2h |
| 741 | 1.330 | **режет кабель ЛУКАС силовой в лотке эстакада у КПП** | 444.5d | 2024-08-02 09:00 | 2026-04-16 13:00 |  |  |  | 242.09d |  |  | 4.5h |  |
| 742 | 1.330.1 | решение о переговорах ГП | 30min | 2024-08-02 09:00 | 2024-08-02 09:30 |  |  |  | 686.53d | start no earlier than 2024-08-02 09:00 | Домоводов К | 0.5h |  |
| 743 | 1.330.2 | перекладка кабель | 4h | 2026-04-16 09:00 | 2026-04-16 13:00 |  |  |  | 242.09d | start no earlier than 2026-04-16 08:00 | Олег | 4h |  |

| ID | WBS | Task | Duration | Start | Finish | Predecessors | Complete | Total slack | Constraint | Resources | Work | Actual work |
| --- | --- | --- | --- | --- | --- | --- | --- | --- | --- | --- | --- | --- |
| 744 | 1.331 | **ШР2.2 замена автомат на циклон на номинальный** | 5.06d | 2026-04-10 09:00 A | 2026-04-17 09:30 A |  | 100% |  |  |  | 41.5h | 41.5h |
| 745 | 1.331.1 | прорверить какой стоит / заявка по мощности мотора | 30min | 2026-04-10 09:00 A | 2026-04-10 09:30 A |  | 100% |  | start no earlier than 2026-04-10 09:00 | Тимофеев В | 0.5h | 0.5h |
| 746 | 1.331.2 | достьавка | 5d | 2026-04-10 09:30 A | 2026-04-17 09:30 A | 745 | 100% |  | start no earlier than 2024-03-04 09:00 | Малинина М | 40h | 40h |
| 747 | 1.331.3 | замена | 1h | 2026-04-16 09:30 A | 2026-04-16 10:30 A | 746 | 100% |  | start no earlier than 2026-04-06 09:00 | Шуранов Ю | 1h | 1h |
| 748 | 1.332 | **кронштейн фотометки ТЕКО усилить** | 10.12d | 2024-09-11 09:00 A | 2024-09-25 10:00 A |  | 100% |  |  |  | 82h | 82h |
| 749 | 1.332.1 | поиск заявка кронштейна для датчика с регулировкой в3 плоскостях | 1h | 2024-09-11 09:00 A | 2024-09-11 10:00 A |  | 100% |  | start no earlier than 2024-09-11 09:00 | Зорькин В | 1h | 1h |
| 750 | 1.332.2 | доставка | 10d | 2024-09-11 10:00 A | 2024-09-25 10:00 A | 749 | 100% |  | start no earlier than 2024-09-11 09:00 | Мультан | 80h | 80h |
| 751 | 1.332.3 | замена | 1h | 2024-09-21 10:00 A | 2024-09-23 10:00 A | 750 | 100% |  | start no earlier than 2024-09-11 09:00 | Тимофеев В | 1h | 1h |
| 752 | 1.333 | **квадропак греет пневмоцилиндр термоножа** | 14.5d | 2024-09-12 09:00 A | 2024-10-02 13:00 A |  | 100% |  |  |  | 85h | 85h |
| 753 | 1.333.1 | решение о применении теплоизоляц пластины / заявка | 1h | 2024-09-12 09:00 A | 2024-09-12 10:00 A |  | 100% |  | start no earlier than 2024-09-12 09:00 | Зорькин В | 1h | 1h |
| 754 | 1.333.2 | доставка | 10d | 2024-09-12 10:00 A | 2024-09-26 10:00 A | 753 | 100% |  | start no earlier than 2024-09-11 09:00 | Мультан | 80h | 80h |
| 755 | 1.333.3 | замена | 4h | 2024-10-02 09:00 A | 2024-10-02 13:00 A | 754 | 100% |  | start no earlier than 2024-10-02 09:00 | Тимофеев В | 4h | 4h |
| 756 | 1.334 | **ремонт комппрессора - сдать по гарантии** | 739.12d | 2023-10-31 09:00 A | 2026-08-31 10:00 A |  | 100% |  |  |  | 2h | 2h |
| 757 | 1.334.1 | контроль снабжения - отправитьт поставщику | 1h | 2023-10-31 09:00 A | 2023-10-31 10:00 A |  | 100% |  | start no earlier than 2023-10-31 09:00 | Лобанов И | 1h | 1h |
| 758 | 1.334.2 | контроль возврата | 1h | 2026-08-31 09:00 A | 2026-08-31 10:00 A | 757 | 100% |  | start no earlier than 2026-08-31 09:00 | Зорькин В | 1h | 1h |
| 759 | 1.335 | **убрать кабеля с пола на упаковке 1 цех** | 0.02d | 2026-09-01 09:00 | 2026-09-01 09:10 |  |  | 144.57d |  |  | 0.17h |  |
| 760 | 1.335.1 | проверить на актуальность | 10min | 2026-09-01 09:00 | 2026-09-01 09:10 |  |  | 144.57d | start no earlier than 2026-09-01 09:00 | Зорькин В | 0.17h |  |
| 761 | 1.336 | режет металлом изоляцию кабеля в прорходе стены в 1 цех угол комппрессора - обезвредить | 1h | 2023-12-28 09:00 A | 2023-12-28 10:00 A |  | 100% |  | start no earlier than 2023-12-28 09:00 | Бобренок В; Дедов В | 2h | 2h |
| 762 | 1.337 | **убрать кабеля с пола и заменить переноски штатными розетками - участок жира 1 цех** | 0.01d | 2026-09-01 09:00 | 2026-09-01 09:05 |  |  | 144.58d |  |  | 0.08h |  |
| 763 | 1.337.1 | проверить на актуальность | 5min | 2026-09-01 09:00 | 2026-09-01 09:05 |  |  | 144.58d | start no earlier than 2026-09-01 09:00 | Зорькин В | 0.08h |  |
| 764 | 1.338 | изготовить ключь для ТП | 2h | 2023-06-21 09:00 A | 2023-06-21 11:00 A |  | 100% |  | start no earlier than 2023-06-21 09:00 | Домоводов К | 2h | 2h |
| 765 | 1.339 | заменитьт автомат 63С кондиционер 1 цех | 1h | 2023-06-22 09:00 A | 2023-06-22 10:00 A |  | 100% |  | start no earlier than 2023-06-22 09:00 | Тимофеев В | 1h | 1h |
| 766 | 1.340 | **Барабаны 2 линия дражжировка** | 18d | 2026-04-21 09:00 A | 2026-05-14 18:00 A |  | 100% |  |  |  | 94.5h | 94.5h |
| 767 | 1.340.1 | Проработать модернизацию форсунок | 3h | 2026-04-22 09:00 A | 2026-04-22 12:00 A |  | 100% |  | start no earlier than 2026-04-22 09:00 | Зорькин В; Домоводов К | 6h | 6h |
| 768 | 1.340.2 | сделать заявку на доп форсунки, расходники | 30min | 2026-04-22 09:00 A | 2026-04-22 09:30 A |  | 100% |  | start no earlier than 2026-04-22 09:00 | Зорькин В | 0.5h | 0.5h |
| 769 | 1.340.3 | доставка | 10d | 2026-04-30 09:00 A | 2026-05-14 18:00 A |  | 100% |  | start no earlier than 2026-04-30 09:00 | Карабанов | 80h | 80h |
| 770 | 1.340.4 | Внедрение и монтаж | 2h | 2026-05-08 09:00 A | 2026-05-08 11:00 A |  | 100% |  | start no earlier than 2026-05-08 09:00 | Зорькин В; Тимофеев В | 4h | 4h |

| ID | WBS | Task | Type | Duration | Start | Finish | Predecessors | Complete | Actual start | Actual finish | Constraint | Resources | Work | Actual work |
| --- | --- | --- | --- | --- | --- | --- | --- | --- | --- | --- | --- | --- | --- | --- |
| 771 | 1.340.5 | **Парогенератор** |  | 0.25d | 2026-04-21 09:00 A | 2026-04-21 11:00 A |  | 100% |  |  |  |  | 4h | 4h |
| 772 | 1.340.5.1 | Проверить термадатчик (панельтемпературы) TC4R на корректность работы, скачет температура, по необходимости заменить |  | 2h | 2026-04-21 09:00 A | 2026-04-21 11:00 A |  | 100% |  |  | start no earlier than 2026-04-21 08:00 | Бундин В; Зорькин В | 4h | 4h |
| 773 | 1.341 | **Звонок на экструдер** |  | 14.12d | 2026-04-07 09:00 A | 2026-04-27 10:00 A |  | 100% |  |  |  |  | 6h | 6h |
| 774 | 1.341.1 | Протяжка кабеля от ворот к экструдерщикам |  | 4h | 2026-04-07 09:00 A | 2026-04-07 13:00 A |  | 100% |  |  | start no earlier than 2026-04-22 09:00 | Дедов В | 4h | 4h |
| 775 | 1.341.2 | монтаж звонка |  | 1h | 2026-04-25 09:00 A | 2026-04-27 10:00 A | 774 | 100% |  |  | start no earlier than 2026-04-25 09:00 | Дедов В | 1h | 1h |
| 776 | 1.341.3 | монтаж кнопки за воротами |  | 1h | 2026-04-25 10:00 A | 2026-04-27 10:00 A | 775 | 100% |  |  | start no earlier than 2026-04-21 08:00 | Дедов В | 1h | 1h |
| 777 | 1.342 | **Насос гидролизата** |  | 28.01d | 2026-08-04 09:00 A | 2026-09-10 09:05 A |  | 100% |  |  |  |  | 0.42h | 0.42h |
| 778 | 1.342.1 | Заказать ремкомплект шнек, резинка, трубка, связаться с производителем |  | 20min | 2026-08-04 09:00 A | 2026-08-04 09:20 A |  | 100% |  |  | start no earlier than 2026-08-04 09:00 | Зорькин В | 0.33h | 0.33h |
| 779 | 1.342.2 | Доставка контроль сам насос шетсрен |  | 5min | 2026-09-10 09:00 A | 2026-09-10 09:05 A |  | 100% |  |  | start no earlier than 2026-09-10 09:00 | Зорькин В | 0.08h | 0.08h |
| 780 | 1.343 | **Дражжировка конвейер №1 после печки** |  | 122.12d | 2026-04-22 08:00 A | 2026-09-30 10:00 A |  | 100% |  |  |  |  | 13.08h | 13.08h |
| 781 | 1.343.1 | Поставить резьбовые клепки на боковой кожух, где кончается лента |  | 1h | 2026-09-30 09:00 A | 2026-09-30 10:00 A |  | 100% |  |  | start no earlier than 2026-09-30 09:00 | Тимофеев В | 1h | 1h |
| 782 | 1.343.2 | Ремонт насоса от 2 линии 1 цех, статор взять на складе |  | 2h | 2026-09-10 09:00 A | 2026-09-10 11:00 A |  | 100% |  |  | start no earlier than 2026-09-10 09:00 | Некрасов А | 2h | 2h |
| 783 | 1.343.3 | контроль героторная пара оплата |  | 5min | 2026-08-21 09:00 A | 2026-08-21 09:05 A |  | 100% |  |  | start no earlier than 2026-08-21 09:00 | Зорькин В | 0.08h | 0.08h |
| 784 | 1.343.4 | Замена сальника на поворотном столе/проверить |  | 1h | 2026-07-23 09:00 A | 2026-07-23 10:00 A |  | 100% |  |  | start no earlier than 2026-07-23 08:00 | Бундин В | 1h | 1h |
| 785 | 1.343.5 | **дражжировка** |  | 0.62d | 2026-04-22 08:00 A | 2026-04-22 15:00 A |  | 100% |  |  |  |  | 9h | 9h |
| 786 | 1.343.5.1 | Установка рамы для фильтров |  | 3h | 2026-04-22 08:00 A | 2026-04-22 12:00 A |  | 100% |  |  | start no earlier than 2026-04-22 08:00 | Тимофеев В | 3h | 3h |
| 787 | 1.343.5.2 | установка счетчика |  | 1h | 2026-04-22 11:00 A | 2026-04-22 12:00 A | 786 | 100% |  |  | start no earlier than 2026-04-22 08:00 | Тимофеев В | 1h | 1h |
| 788 | 1.343.5.3 | кронштейн под пульт расходомера |  | 2h | 2026-04-22 12:00 A | 2026-04-22 15:00 A | 787 | 100% |  |  | start no earlier than 2026-04-22 08:00 | Тимофеев В | 2h | 2h |
| 789 | 1.343.5.4 | **Парогенератор** |  | 0.38d | 2026-04-22 09:00 A | 2026-04-22 12:00 A |  | 100% |  |  |  |  | 3h | 3h |
| 790 | 1.343.5.4.1 | чистка парогенераторов 1 и 2 линия |  | 3h | 2026-04-22 09:00 A | 2026-04-22 12:00 A |  | 100% |  |  | start no earlier than 2026-04-22 08:00 | Бундин В | 3h | 3h |
| 791 | 1.344 | **отмена** |  | 70.75d? | 2026-04-22 09:00 | 2026-07-29 16:00 A |  | 100% | 2026-07-08 09:00 |  |  |  | 12.33h | 12.33h |
| 792 | 1.344.1 | **Парогенератор** |  | 27.5d? | 2026-04-22 09:00 | 2026-05-25 13:00 |  | 100% | 2026-07-08 09:00 | 2026-07-29 16:00 |  |  | 12.33h | 12.33h |
| 793 | 1.344.1.1 | Замена говротрубы 1 линия |  | 1h | 2026-07-08 09:00 A | 2026-07-08 10:00 A |  | 100% |  |  | start no earlier than 2026-07-08 09:00 | Бобренок В | 1h | 1h |
| 794 | 1.344.1.2 | Осмотр стоек где стоит реле давления до расширительного бачка |  | 30min | 2026-07-27 09:00 A | 2026-07-27 09:30 A |  | 100% |  |  | start no earlier than 2026-07-27 09:00 | Тимофеев В | 0.5h | 0.5h |
| 795 | 1.344.1.3 | Составить список материала для ремонта и изготовления стоек |  | 30min | 2026-07-27 09:30 A | 2026-07-27 10:00 A | 794 | 100% |  |  | start no earlier than 2026-05-27 09:00 | Тимофеев В | 0.5h | 0.5h |
| 796 | 1.344.1.4 | Заказать недостающий материал |  | 20min | 2026-07-27 09:00 A | 2026-07-27 09:20 A |  | 100% |  |  | start no earlier than 2026-07-27 09:00 | Зорькин В | 0.33h | 0.33h |
| 797 | 1.344.1.5 | Изготовление стоек |  | 3h | 2026-07-29 09:00 A | 2026-07-29 12:00 A | 795 | 100% |  |  | start no earlier than 2026-07-29 09:00 | Некрасов А | 3h | 3h |
| 798 | 1.344.1.6 | Замена стойки под реле давления |  | 3h | 2026-07-29 12:00 A | 2026-07-29 16:00 A | 797 | 100% |  |  | start no earlier than 2026-05-27 09:00 | Некрасов А | 3h | 3h |
| 799 | 1.344.1.7 | Составить список материалов или заключение по 2-м частотникам из 1 цеха от теко 0,4 (поворотный стол и конвейер) |  | 1h | 2026-07-27 08:00 A | 2026-07-27 10:00 A |  | 100% |  |  | start no earlier than 2026-07-27 08:00 | Дедов В | 1h | 1h |
| 800 | 1.344.1.8 | Взять трубку в нашем кабинете и насверлить по всей длине симметрично отверстия самым маленьким сверлом которое у нас есть (по этому заданию позвонить) |  | 3h | 2026-07-28 08:00 A | 2026-07-28 12:00 A |  | 100% |  |  | start no earlier than 2026-07-28 08:00 | Макаревич А | 3h | 3h |
| 801 | 1.345 | Демонтаж разборка/сборка редукторы шлюз. Питателей циклона 1 и 2 линия | manual | 3h | 2026-04-24 09:00 A | 2026-04-24 12:00 A |  | 100% |  |  | start no earlier than 2026-04-24 09:00 | Бундин В | 3h | 3h |

| ID | WBS | Task | Type | Duration | Start | Finish | Predecessors | Complete | Remaining | Actual start | Total slack | Free slack | Constraint | Resources | Work | Actual work |
| --- | --- | --- | --- | --- | --- | --- | --- | --- | --- | --- | --- | --- | --- | --- | --- | --- |
| 802 | 1.346 | **Теко 0,4** |  | 0.38d | 2026-04-03 09:00 A | 2026-04-03 12:00 A |  | 100% |  |  |  |  |  |  | 3h | 3h |
| 803 | 1.346.1 | замена ковшей | manual | 3h | 2026-04-03 09:00 A | 2026-04-03 12:00 A |  | 100% |  |  |  |  | start no earlier than 2026-04-03 09:00 | Макаревич А | 3h | 3h |
| 804 | 2 | **2 цех** |  | 249d? | 2023-11-16 09:00 | 2024-10-29 18:00 |  | 87% | 31.23d? | 2024-01-08 09:00 |  |  |  |  | 2944.58h | 2590.75h |
| 805 | 2.1 | Снять аккумулятор со смесителя во время остановки |  | 30min | 2026-10-02 09:00 | 2026-10-02 09:30 |  |  |  |  | 114.53d |  | start no earlier than 2026-10-02 08:00 | Дедов В | 0.5h |  |
| 806 | 2.2 | Восстановление платы от рециркуляторной лампы, составление списка комплектующих, подбор аналога платы |  | 3h | 2026-10-02 09:00 | 2026-10-02 12:00 |  |  |  |  | 114.22d |  | start no earlier than 2026-10-02 08:00 | Дедов В | 3h |  |
| 807 | 2.3 | Ремонт шпингалета на воротох, где навески, получить у мастеров, если нет, звони Зорькину | manual | 1h | 2026-10-03 09:00 | 2026-10-03 10:00 |  |  |  |  |  |  | start no earlier than 2026-10-03 09:00 | Бобренок В | 1h |  |
| 808 | 2.4 | Замена дырявой трубы под парогенератором |  | 1h | 2026-10-08 09:00 | 2026-10-08 10:00 |  |  |  |  | 109.47d |  | start no earlier than 2026-10-08 09:00 | Некрасов | 1h |  |
| 809 | 2.5 | Плата связи RS485 замена |  | 1h | 2026-10-01 09:00 A | 2026-10-01 10:00 A |  | 100% |  |  |  |  | start no earlier than 2026-10-01 08:00 | Дедов В | 1h | 1h |
| 810 | 2.6 | Подключить кабель датчика пирометра с печи |  | 2h | 2026-10-08 09:00 | 2026-10-08 11:00 |  |  |  |  | 109.34d |  | start no earlier than 2026-10-08 09:00 | Дедов В | 2h |  |
| 811 | 2.7 | Изготовить пластину для удобного сбора гранулы лопатой, позвонить зорькину | manual | 2h | 2026-10-03 09:00 | 2026-10-03 11:00 |  |  |  |  |  |  | start no earlier than 2026-10-03 09:00 | Бобренок В | 2h |  |
| 812 | 2.8 | Посмотреть ручки на складе, по возможности замена, если их нет ,сообщить какие закупить. Если ничего нет и ремонт невозможен, фиксируем язычок или убираем его. | manual | 1h | 2026-10-03 09:00 | 2026-10-03 10:00 |  |  |  |  |  |  | start no earlier than 2026-10-03 09:00 | Бобренок В | 1h |  |
| 813 | 2.9 | Посмотреть пылесос от второго цеха, должен быть в слесарке, если нет, забрать | manual | 1h | 2026-09-29 09:00 A | 2026-09-29 10:00 A |  | 100% |  |  |  |  | start no earlier than 2026-09-29 09:00 | Бобренок В | 1h | 1h |
| 814 | 2.10 | Включить отопление в лабораторию |  | 1h | 2026-10-02 09:00 | 2026-10-02 10:00 |  |  |  |  | 114.47d |  | start no earlier than 2026-10-02 09:00 | Некрасов | 1h |  |
| 815 | 2.11 | **Ремонт бактерицидной лампы возле компрессора** |  | 6d? | 2026-10-02 09:00 | 2026-10-08 18:00 |  |  |  |  | 108.59d |  |  |  | 9.17h |  |
| 816 | 2.11.1 | Заявка на плату управления лампы |  | 1h | 2026-10-02 09:00 | 2026-10-02 10:00 |  |  |  |  | 114.47d |  | start no earlier than 2026-10-02 08:00 | Зорькин В | 1h |  |
| 817 | 2.11.2 | контроль |  | 10min | 2026-10-02 09:00 | 2026-10-02 09:10 |  |  |  |  | 114.57d |  | start no earlier than 2026-10-02 08:00 | Зорькин В | 0.17h |  |
| 818 | 2.11.3 | Ремонт |  | 1d? | 2026-10-08 09:00 | 2026-10-08 18:00 |  |  |  |  | 108.59d |  | start no earlier than 2026-10-08 09:00 | Дедов В | 8h |  |
| 819 | 2.12 | **пыление при загрузке при высыпании из мешка в бункер дозатора** |  | 13.59d | 2026-10-01 09:00 | 2026-10-19 14:45 |  |  |  |  | 102d |  |  |  | 4.75h |  |
| 820 | 2.12.1 | **изготовить рукав на дозатор для помещения в него мешка из гибкого герметичного матриала** |  | 13.59d | 2026-10-01 09:00 | 2026-10-19 14:45 |  |  |  |  | 102d |  |  |  | 4.75h |  |
| 821 | 2.12.1.1 | заявка на силикон/брезент полотно |  | 30min | 2026-10-01 09:00 | 2026-10-01 09:30 |  |  |  |  | 102d | 0d | start no earlier than 2026-10-01 09:00 | Зорькин В | 0.5h |  |
| 822 | 2.12.1.2 | доставка контроль |  | 15min | 2026-10-16 09:30 | 2026-10-16 09:45 | 821FS+12d |  |  |  | 102d | 0d | start no earlier than 2026-09-30 08:00 | Зорькин В | 0.25h |  |
| 823 | 2.12.1.3 | изготовление мешка |  | 4h | 2026-10-19 09:45 | 2026-10-19 14:45 | 822FS+1d |  |  |  | 102d |  | start no earlier than 2026-09-30 08:00 | Тимофеев В | 4h |  |
| 824 | 2.13 | **установить аспирационный рукав в зону бункера + фильтр + выход в цех/или общ обменную вент** |  | 17.09d? | 2026-10-05 09:00 | 2026-10-28 09:45 |  |  |  |  | 95.5d |  |  |  | 8.75h |  |
| 825 | 2.13.1 | заявка на аспирацию как в слесарке |  | 30min | 2026-10-05 09:00 | 2026-10-05 09:30 |  |  |  |  | 95.5d | 0d | start no earlier than 2026-10-05 09:00 | Зорькин В | 0.5h |  |
| 826 | 2.13.2 | доставка контроль |  | 15min | 2026-10-26 09:30 | 2026-10-26 09:45 | 825FS+15d |  |  |  | 95.5d | 0d | start no earlier than 2026-09-30 08:00 | Зорькин В | 0.25h |  |
| 827 | 2.13.3 | монтаж аспирационная установка |  | 1d? | 2026-10-27 09:45 | 2026-10-28 09:45 | 826FS+1d |  |  |  | 95.5d |  | start no earlier than 2026-09-30 08:00 | Тимофеев В | 8h |  |

| ID | WBS | Task | Duration | Start | Finish | Predecessors | Complete | Remaining | Total slack | Free slack | Constraint | Resources | Work | Actual work |
| --- | --- | --- | --- | --- | --- | --- | --- | --- | --- | --- | --- | --- | --- | --- |
| 828 | 2.14 | **пыление при дозации из шнека на продукт** | 0.38d | 2026-10-01 09:00 | 2026-10-01 12:00 |  |  |  | 115.22d |  |  |  | 5h |  |
| 829 | 2.14.1 | установить пластину НЕРЖ на выход шнека для отклонения порошка ближе к барабану | 2h | 2026-10-01 09:00 | 2026-10-01 11:00 |  |  |  | 115.34d |  | start no earlier than 2026-10-01 09:00 | Тимофеев В | 2h |  |
| 830 | 2.14.2 | **изготовить /купить патрубок типа 90 колено сантех** | 0.38d | 2026-10-01 09:00 | 2026-10-01 12:00 |  |  |  | 115.22d |  |  |  | 3h |  |
| 831 | 2.14.2.1 | модель + печать на 3д | 2h | 2026-10-01 09:00 | 2026-10-01 11:00 |  |  |  | 115.22d | 0d | start no earlier than 2026-10-01 09:00 | Домоводов К | 2h |  |
| 832 | 2.14.2.2 | монтаж | 1h | 2026-10-01 11:00 | 2026-10-01 12:00 | 831 |  |  | 115.22d |  | start no earlier than 2026-09-30 08:00 | Тимофеев В | 1h |  |
| 833 | 2.15 | **сыпит в одну точку барабана, образуя не нужное кольцо** | 4.12d | 2026-10-05 09:00 | 2026-10-09 10:00 |  |  |  | 108.47d |  |  |  | 9h |  |
| 834 | 2.15.1 | **перенос дозатора на второй барабан** | 4.12d | 2026-10-05 09:00 | 2026-10-09 10:00 |  |  |  | 108.47d |  |  |  | 9h |  |
| 835 | 2.15.1.1 | согласовоать с производством технологами старт переноса | 1h | 2026-10-05 09:00 | 2026-10-05 10:00 |  |  |  | 108.47d | 0d | start no earlier than 2026-10-05 09:00 | Зорькин В | 1h |  |
| 836 | 2.15.1.2 | изготовить раму - составить чертежи | 2h | 2026-10-07 10:00 | 2026-10-07 12:00 | 835FS+2d |  |  | 108.47d | 0d | start no earlier than 2026-10-06 09:00 | Труфанов А | 2h |  |
| 837 | 2.15.1.3 | сборка рама | 4h | 2026-10-07 12:00 | 2026-10-07 17:00 | 836 |  |  | 108.47d | 0d | start no earlier than 2026-10-02 09:00 | Труфанов А | 4h |  |
| 838 | 2.15.1.4 | перенос шнека дозатора / переключения | 2h | 2026-10-08 17:00 | 2026-10-09 10:00 | 837FS+1d |  |  | 108.47d |  | start no earlier than 2026-09-30 08:00 | Тимофеев В | 2h |  |
| 839 | 2.16 | Продуть всю вентиляшку на жирах с люльки | 2h | 2026-09-29 09:00 A | 2026-09-29 11:00 A |  | 100% |  |  |  | start no earlier than 2026-09-29 08:00 | Бундин В | 2h | 2h |
| 841 | 2.17 | Изготовить носик на подаче сухого гидролизата под уклоном ближе к барабану | 3h | 2026-09-29 09:00 | 2026-09-29 12:00 |  |  |  | 117.22d |  | start no earlier than 2026-09-29 09:00 | Тимофеев В | 3h |  |
| 842 | 2.18 | Изготовление рамы на ножках для переноса всего барабана с сухим гидролизатом к нижнему барабану | 4h | 2026-09-29 09:00 | 2026-09-29 13:00 |  |  |  | 117.09d |  | start no earlier than 2026-09-29 09:00 | Тимофеев В | 4h |  |
| 843 | 2.19 | изготовить ножки на бункер нории БЕСТРОМ | 3h | 2026-09-26 09:00 A | 2026-09-26 12:00 A |  | 100% |  |  |  | start no earlier than 2026-09-26 09:00 | Бобренок В | 3h | 3h |
| 844 | 2.20 | **установить 4 трубки с быстросъемами в барабаны жиров** | 3.5d | 2026-09-25 09:00 A | 2026-09-28 13:00 |  | 33% | 2.33d | 118.09d |  |  |  | 6h | 2h |
| 845 | 2.20.1 | подготовить сменную трубку для подачи жира, насверлить резьбу, отверстия | 2h | 2026-09-25 09:00 A | 2026-09-25 11:00 A |  | 100% |  |  |  | start no earlier than 2026-09-25 09:00 | Тимофеев В | 2h | 2h |
| 846 | 2.20.2 | подготовить трубку 3 и 4 | 4h | 2026-09-28 09:00 | 2026-09-28 13:00 |  |  |  | 118.09d |  | start no earlier than 2026-09-28 09:00 | Тимофеев В | 4h |  |
| 847 | 2.21 | кран на жирах нет стопора - вращение на 360 устранить, найти этот кран. | 30min | 2026-09-24 09:00 A | 2026-09-24 09:30 A |  | 100% |  |  |  | start no earlier than 2026-09-24 09:00 | Тимофеев В | 0.5h | 0.5h |
| 848 | 2.22 | Проверить весы на смесителе прыгают в диапазаоне 40кг | 1h | 2026-09-23 09:00 | 2026-09-23 10:00 |  |  |  | 123.47d |  | start no earlier than 2026-09-23 09:00 | Дедов В | 1h |  |
| 849 | 2.23 | **лаборатория** | 0.12d | 2026-09-22 09:00 A | 2026-09-22 10:00 A |  | 100% |  |  |  |  |  | 1.5h | 1.5h |
| 850 | 2.23.1 | Перегорел тэн на дигистре | 30min | 2026-09-22 09:00 A | 2026-09-22 09:30 A |  | 100% |  |  |  | start no earlier than 2026-09-22 09:00 | Тимофеев В | 0.5h | 0.5h |
| 851 | 2.23.2 | Поставить колбу в лаборотории на бульбуляторе, колба в лаборатории | 1h | 2026-09-22 09:00 A | 2026-09-22 10:00 A |  | 100% |  |  |  | start no earlier than 2026-09-22 09:00 | Тимофеев В | 1h | 1h |
| 852 | 2.24 | Сделать ручки и щеколду для мусорки на улице | 1h | 2026-09-25 09:00 A | 2026-09-25 10:00 A |  | 100% |  |  |  | start no earlier than 2026-09-25 09:00 | Бундин В | 1h | 1h |
| 853 | 2.25 | установить трубку жир ф12 - нарезать резьбу под фитинг / сверлить под "струйки" | 2h | 2026-09-24 09:00 A | 2026-09-24 11:00 A |  | 100% |  |  |  | start no earlier than 2026-09-24 09:00 | Тимофеев В | 2h | 2h |

| ID | WBS | Task | Type | Duration | Start | Finish | Predecessors | Complete | Remaining | Total slack | Free slack | Constraint | Resources | Work | Actual work |
| --- | --- | --- | --- | --- | --- | --- | --- | --- | --- | --- | --- | --- | --- | --- | --- |
| 854 | 2.26 | **система сброса муки с прекондиционера в мешки** |  | 2d? | 2026-09-18 09:00 A | 2026-09-19 18:00 A |  | 100% |  |  |  |  |  | 11h | 11h |
| 855 | 2.26.1 | Продумать варианты предложить, согласовать с Домоводовым и смонтировать, чтоб можно было вешать мешок на экструдере, под рассекатель потока муки выходящий из прекондиционера, который сделал Макаревич |  | 3h | 2026-09-18 09:00 A | 2026-09-18 12:00 A |  | 100% |  |  |  | start no earlier than 2026-09-18 09:00 | Бобренок В | 3h | 3h |
| 856 | 2.26.2 | изготовление тележки с креплением для 2х мешков. Покрасить |  | 1d? | 2026-09-19 09:00 A | 2026-09-19 18:00 A |  | 100% |  |  |  | start no earlier than 2026-09-19 09:00 | Бобренок В | 8h | 8h |
| 857 | 2.27 | Промывка дистилятора в лаборатории |  | 3h | 2026-09-18 09:00 A | 2026-09-18 12:00 A |  | 100% |  |  |  | start no earlier than 2026-09-18 09:00 | Бобренок В | 3h | 3h |
| 858 | 2.28 | Изготовить стопор для пленки на бестром (Обратиться к пацанам на фасовке или к мастеру, должны подсказать) |  | 2h | 2026-09-16 09:00 A | 2026-09-16 11:00 A |  | 100% |  |  |  | start no earlier than 2026-09-16 08:00 | Бундин В | 2h | 2h |
| 859 | 2.29 | ремонт лампа бактерициодная (это не инсекюьтер) на ГП (не горит табло). Ревизия. |  | 2h | 2026-09-13 09:00 A | 2026-09-13 11:00 A |  | 100% |  |  |  | start no earlier than 2026-09-13 09:00 | Дедов В | 2h | 2h |
| 860 | 2.30 | ремонт ворот ГП слетели тросы |  | 2h | 2026-09-11 09:00 A | 2026-09-11 11:00 A |  | 100% |  |  |  | start no earlier than 2026-09-11 08:00 | Бобренок В | 2h | 2h |
| 861 | 2.31 | ремонт светильник корридор у отк |  | 1h | 2026-09-14 09:00 A | 2026-09-14 10:00 A |  | 100% |  |  |  | start no earlier than 2026-09-14 09:00 | Макаревич А | 1h | 1h |
| 862 | 2.32 | замена квадрат ручка дверь экструдер |  | 1h | 2026-09-14 09:00 A | 2026-09-14 10:00 A |  | 100% |  |  |  | start no earlier than 2026-09-14 09:00 | Макаревич А | 1h | 1h |
| 863 | 2.33 | **ревизия сливной шланг моечная машинка** |  | 24.25d | 2026-09-14 09:00 A | 2026-10-09 11:00 |  | 36% | 15.59d | 108.34d |  |  |  | 3.5h | 1.25h |
| 864 | 2.33.1 | ревизия / удлинить |  | 1h | 2026-09-14 09:00 A | 2026-09-14 10:00 A |  | 100% |  |  |  | start no earlier than 2026-09-14 09:00 | Тимофеев В | 1h | 1h |
| 865 | 2.33.2 | заявка |  | 15min | 2026-09-18 09:00 A | 2026-09-18 09:15 A |  | 100% |  |  |  | start no earlier than 2026-09-18 09:00 | Зорькин В | 0.25h | 0.25h |
| 866 | 2.33.3 | контроль доставки |  | 15min | 2026-09-25 09:00 | 2026-09-25 09:15 | 865FS+5d |  |  | 120.31d | 11.97d | start no earlier than 2026-09-25 09:00 | Зорькин В | 0.25h |  |
| 867 | 2.33.4 | монтаж |  | 2h | 2026-10-09 09:00 | 2026-10-09 11:00 | 866FS+1d |  |  | 108.34d |  | start no earlier than 2026-10-09 09:00 | Тимофеев В | 2h |  |
| 868 | 2.34 | Проверка системы под давлением, при необходимости заменить шланги на пневматические?? |  | 1h | 2026-09-21 09:00 A | 2026-09-21 10:00 A |  | 100% |  |  |  | start no earlier than 2026-09-22 09:00 | Тимофеев В | 1h | 1h |
| 869 | 2.35 | Установить трубку на жирах, которую сделал викторович |  | 30min | 2026-09-09 09:00 A | 2026-09-09 09:30 A |  | 100% |  |  |  | start no earlier than 2026-09-09 08:00 | Тимофеев В | 0.5h | 0.5h |
| 870 | 2.36 | **реверс теплоносителя в приточном калорифере** |  | 28.25d | 2026-08-24 09:00 A | 2026-09-24 11:00 A |  | 100% |  |  |  |  |  | 2.5h | 2.5h |
| 871 | 2.36.1 | заявка |  | 15min | 2026-08-24 09:00 A | 2026-08-24 09:15 A |  | 100% |  |  |  | start no earlier than 2026-08-24 09:00 | Зорькин В | 0.25h | 0.25h |
| 872 | 2.36.2 | контроль доставки |  | 15min | 2026-09-14 09:05 A | 2026-09-14 09:20 A | 1084FS+5d | 100% |  |  |  | start no earlier than 2026-09-09 09:00 | Зорькин В | 0.25h | 0.25h |
| 873 | 2.36.3 | монтаж |  | 2h | 2026-09-24 09:00 A | 2026-09-24 11:00 A | 1085FS+1d | 100% |  |  |  | start no earlier than 2026-09-24 09:00 | Дедов В | 2h | 2h |
| 874 | 2.37 | востановить потерю токов в печи / ревизия . Замена тенов |  | 4h | 2026-09-09 09:00 A | 2026-09-09 13:00 A |  | 100% |  |  |  | start no earlier than 2026-09-09 09:00 | Бобренок В | 4h | 4h |
| 875 | 2.38 | Смазка подшипников привода охладителя | manual | 1h | 2026-09-09 09:00 A | 2026-09-09 10:00 A |  | 100% |  |  |  |  | Бобренок В | 1h | 1h |
| 876 | 2.39 | Обрезать пенку пвх на двери в охладителе ,сделать ее ровной |  | 1h | 2026-09-07 09:00 A | 2026-09-07 10:00 A |  | 100% |  |  |  | start no earlier than 2026-09-05 09:00 | Макаревич А | 1h | 1h |
| 877 | 2.40 | Переборка парогенератора, поиск неисправности (подключили перемычку между реле времени) |  | 4h | 2026-09-02 09:00 A | 2026-09-02 13:00 A |  | 100% |  |  |  | start no earlier than 2026-09-02 09:00 | Бобренок В | 4h | 4h |

| ID | WBS | Task | Type | Duration | Start | Finish | Predecessors | Complete | Total slack | Constraint | Resources | Work | Actual work |
| --- | --- | --- | --- | --- | --- | --- | --- | --- | --- | --- | --- | --- | --- |
| 878 | 2.41 | **Подготовить электрическую часть для подключения второго насоса без частотника (продолжаем эту задачу)** |  | 13.25d | 2026-09-03 09:00 A | 2026-09-17 11:00 A |  | 100% |  |  |  | 4.17h | 4.17h |
| 879 | 2.41.1 | установить на линию доп насос (резервный) |  | 1h | 2026-09-10 09:00 A | 2026-09-10 10:00 A |  | 100% |  | start no earlier than 2026-09-10 09:00 | Тимофеев В | 1h | 1h |
| 880 | 2.41.2 | монтаж |  | 1h | 2026-09-09 09:00 A | 2026-09-09 10:00 A |  | 100% |  | start no earlier than 2026-09-09 09:00 | Тимофеев В | 1h | 1h |
| 881 | 2.41.3 | Переместить розетки со стола, смонтировать площадку к раме и закрепить на эту раму |  | 2h | 2026-09-17 09:00 A | 2026-09-17 11:00 A |  | 100% |  | start no earlier than 2026-09-17 09:00 | Тимофеев В | 2h | 2h |
| 882 | 2.41.4 | Подумать место установки автомата |  | 10min | 2026-09-03 09:00 A | 2026-09-03 09:10 A |  | 100% |  | start no earlier than 2026-09-03 09:00 | Тимофеев В | 0.17h | 0.17h |
| 883 | 2.42 | Ремонт парогенератора, замена реле давления + отвалился контакт + замена мембраны |  | 1h | 2026-09-02 09:00 A | 2026-09-02 10:00 A |  | 100% |  | start no earlier than 2026-09-02 08:00 | Труфанов А | 1h | 1h |
| 884 | 2.43 | Замена редуктора на печи |  | 2h | 2026-09-01 09:00 A | 2026-09-01 11:00 A |  | 100% |  | start no earlier than 2026-09-01 09:00 | Бундин В | 2h | 2h |
| 885 | 2.44 | проверка котлов на приточку (замена клапана и тена на большую мощность) | manual | 2h | 2026-09-07 09:00 A | 2026-09-07 11:00 A |  | 100% |  | start no earlier than 2026-09-07 09:00 | Дедов В | 2h | 2h |
| 886 | 2.45 | проверка всех котлов на отопление по цеху | manual | 4h | 2026-08-30 09:00 A | 2026-08-30 13:00 A |  | 100% |  | start no earlier than 2026-08-30 09:00 | Дедов В | 4h | 4h |
| 887 | 2.46 | закрепить коробку двери снизу (возле ШУ приточка 2 этаж) |  | 2h | 2026-08-28 09:00 A | 2026-08-28 11:00 A |  | 100% |  | start no earlier than 2026-08-28 09:00 | Макаревич А | 2h | 2h |
| 888 | 2.47 | **заменить фильтры на воду в цехе (проверить мембрану на гидроаккумуляторе)** |  | 1d? | 2026-08-28 09:00 A | 2026-08-28 18:00 A |  | 100% |  |  | Бобренок В | 16h | 16h |
| 889 | 2.47.1 | заказать фильтры |  | 1d? | 2026-08-28 09:00 A | 2026-08-28 18:00 A |  | 100% |  | start no earlier than 2026-08-28 09:00 | Шуранов Ю | 8h | 8h |
| 890 | 2.48 | монтаж и подключение розетки для кондиционера в кабинет ОТК |  | 2h | 2026-08-26 08:00 A | 2026-08-26 11:00 A |  | 100% |  | start no earlier than 2026-08-26 08:00 | Бобренок В | 2h | 2h |
| 891 | 2.49 | сливной шланг от кондиционеров наш кабинет и Шелепова спрятать в кабель канал 30х25 (он на складе) |  | 2h | 2026-08-26 08:00 A | 2026-08-26 11:00 A |  | 100% |  | start no earlier than 2026-08-26 08:00 | Бобренок В | 2h | 2h |
| 892 | 2.50 | сливной шланг от кондиционеров кабинет Сапелина спрятать в кабель канал 30х25 (он на складе) с 10 до 11ч |  | 1h | 2026-08-31 09:00 A | 2026-08-31 10:00 A |  | 100% |  | start no earlier than 2026-08-31 09:00 | Тимофеев В | 1h | 1h |
| 893 | 2.51 | замерить токи на оборудование (таблица в слесарке) |  | 3h | 2026-08-27 09:00 A | 2026-08-27 12:00 A |  | 100% |  | start no earlier than 2026-08-27 09:00 | Бобренок В | 3h | 3h |
| 894 | 2.52 | **дренаж кондиционеров жир и упаковка установить отдельный насос от жиров** |  | 28.06d | 2026-08-24 09:00 A | 2026-09-24 09:30 A |  | 100% |  |  |  | 122.5h | 122.5h |
| 895 | 2.52.1 | заявка насос |  | 30min | 2026-08-24 09:00 A | 2026-08-24 09:30 A |  | 100% |  | start no earlier than 2026-08-24 09:00 | Шуранов Ю | 0.5h | 0.5h |
| 896 | 2.52.2 | контроль доставка |  | 15d | 2026-09-02 09:30 A | 2026-09-24 09:30 A | 895FS+7d | 100% |  | start no earlier than 2026-08-20 09:00 | Зорькин В | 120h | 120h |
| 897 | 2.52.3 | Разорвать контур от насоса и сделать слив в раковину | manual | 1h | 2026-09-01 09:00 A | 2026-09-01 10:00 A | 896FS+1d | 100% |  | start no earlier than 2026-09-01 09:00 | Некрасов А; Тимофеев В | 2h | 2h |
| 898 | 2.53 | **бетонирование крыльцо вход в 2ц** |  | 0.02d | 2026-08-31 09:00 | 2026-08-31 09:10 |  |  | 145.57d |  |  | 0.17h |  |
| 899 | 2.53.1 | заявка Олегу |  | 10min | 2026-08-31 09:00 | 2026-08-31 09:10 |  |  | 145.57d | start no earlier than 2026-08-31 09:00 | Шуранов Ю | 0.17h |  |
| 900 | 2.54 | течь кондиционер жиры - контроль работы слива |  | 30min | 2026-08-31 09:00 A | 2026-08-31 09:30 A |  | 100% |  | start no earlier than 2026-08-31 09:00 | Тимофеев В | 0.5h | 0.5h |
| 901 | 2.55 | контроль замена фитинги или трубки жир, устранить возможность произвольного срыва |  | 30min | 2026-09-01 09:00 A | 2026-09-01 09:30 A |  | 100% |  | start no earlier than 2026-09-03 09:00 | Некрасов А; Шуранов Ю | 1h | 1h |

| ID | WBS | Task | Type | Duration | Start | Finish | Predecessors | Complete | Remaining | Total slack | Free slack | Constraint | Resources | Work | Actual work |
| --- | --- | --- | --- | --- | --- | --- | --- | --- | --- | --- | --- | --- | --- | --- | --- |
| 902 | 2.56 | **разгрузка синего накопителя, в реверс шнек + окно** |  | 5.12d | 2026-08-20 09:00 A | 2026-08-27 10:00 A |  | 100% |  |  |  |  |  | 4h | 4h |
| 903 | 2.56.1 | выполнить люк в шнеке: вырезать окно, крепеж на шарнир + притвор с уплотнением + застежка | milestone | 0h | 2026-08-20 09:00 A | 2026-08-20 09:00 A |  | 100% |  |  |  | start no earlier than 2026-08-20 09:00 | Некрасов А; Тимофеев В |  |  |
| 904 | 2.56.2 | быстросъемное крепление |  | 1h | 2026-08-27 09:00 A | 2026-08-27 10:00 A |  | 100% |  |  |  | start no earlier than 2026-08-27 09:00 | Тимофеев В | 1h | 1h |
| 905 | 2.56.3 | изготовление фланца + труба для крепления гофротрубы ф250 |  | 3h | 2026-08-24 09:00 A | 2026-08-24 12:00 A |  | 100% |  |  |  | start no earlier than 2026-08-24 09:00 | Некрасов А | 3h | 3h |
| 906 | 2.57 | перенос розетка на стену инсекютер корридор у ОТК |  | 1h | 2026-08-15 09:00 A | 2026-08-17 10:00 A |  | 100% |  |  |  | start no earlier than 2026-08-15 09:00 | Бундин В | 1h | 1h |
| 907 | 2.58 | перенос инсекютер ниже на фасовке, для возможности доступа операторами |  | 1h | 2026-09-24 09:00 A | 2026-09-24 10:00 A |  | 100% |  |  |  | start no earlier than 2026-09-24 09:00 | Бундин В | 1h | 1h |
| 908 | 2.59 | изготовить лопатку для датчика сырья, что бы было 2-4 лопасти и ниже на 5-10см |  | 2h | 2026-08-13 09:00 A | 2026-08-13 11:00 A |  | 100% |  |  |  | start no earlier than 2026-08-13 09:00 | Макаревич А | 2h | 2h |
| 909 | 2.60 | прикрепить план увакуации на место (зона отстоя навесок, стенка мойки) |  | 30min | 2026-08-12 09:00 A | 2026-08-12 09:30 A |  | 100% |  |  |  | start no earlier than 2026-08-12 09:00 | Макаревич А | 0.5h | 0.5h |
| 910 | 2.61 | ремонт ручка в экструдер 2ц |  | 1h | 2026-08-14 09:00 A | 2026-08-14 10:00 A |  | 100% |  |  |  | start no earlier than 2026-08-14 09:00 | Труфанов А | 1h | 1h |
| 911 | 2.62 | **установить сифон ф110 в линию слива жиров** |  | 47.31d | 2026-08-12 09:00 A | 2026-10-06 11:30 |  | 29% | 33.79d | 111.28d |  |  |  | 3.5h | 1h |
| 912 | 2.62.1 | заявка на сифон, планирование монтаж |  | 1h | 2026-08-12 09:00 A | 2026-08-12 10:00 A |  | 100% |  |  |  | start no earlier than 2026-08-12 09:00 | Зорькин В | 1h | 1h |
| 913 | 2.62.2 | возможно ли убрать сифоны ф50, достаточно ли заслонки без гидрозатвора? Как сделать гидрозатвор ф100 |  | 15min | 2026-10-05 09:00 | 2026-10-05 09:15 |  |  |  | 111.28d | 0d | start no earlier than 2026-10-05 09:00 | Труфанов А | 0.25h |  |
| 914 | 2.62.3 | решение | milestone | 0d | 2026-10-06 09:15 | 2026-10-06 09:15 | 913FS+1d |  |  | 111.28d | 0d | start no earlier than 2026-09-08 08:00 | Зорькин В |  |  |
| 915 | 2.62.4 | контроль доставка |  | 15min | 2026-10-06 09:15 | 2026-10-06 09:30 | 912FS+7d, 914 |  |  | 111.28d | 0d | start no earlier than 2026-08-31 09:00 | Зорькин В | 0.25h |  |
| 916 | 2.62.5 | монтаж |  | 2h | 2026-10-06 09:30 | 2026-10-06 11:30 | 915 |  |  | 111.28d |  | start no earlier than 2026-09-07 09:00 | Бобренок В | 2h |  |
| 917 | 2.63 | **установить инсекютер дополнительный на экструдер** |  | 22.25d | 2026-08-21 09:00 A | 2026-09-17 11:00 A |  | 100% |  |  |  |  |  | 2.5h | 2.5h |
| 918 | 2.63.1 | заявка инстекютер |  | 15min | 2026-08-21 09:00 A | 2026-08-21 09:15 A |  | 100% |  |  |  | start no earlier than 2026-08-21 09:00 | Зорькин В | 0.25h | 0.25h |
| 919 | 2.63.2 | контроль доставки |  | 15min | 2026-09-09 09:00 A | 2026-09-09 09:15 A | 918FS+7d | 100% |  |  |  | start no earlier than 2026-09-09 09:00 | Зорькин В | 0.25h | 0.25h |
| 920 | 2.63.3 | монтаж розетка / кабель |  | 2h | 2026-09-17 09:00 A | 2026-09-17 11:00 A | 919FS+1d | 100% |  |  |  | start no earlier than 2026-09-17 09:00 | Труфанов А | 2h | 2h |
| 921 | 2.64 | маркировка канистры гидролизата - передать на время гровер нач цеха 2 |  | 20min | 2026-08-11 09:00 A | 2026-08-11 09:20 A |  | 100% |  |  |  | start no earlier than 2026-08-11 09:00 | Бобренок В | 0.33h | 0.33h |
| 922 | 2.65 | **ограждение мусорного контейнера у 2ц** |  | 15d | 2026-08-31 09:00 A | 2026-09-15 18:00 A |  | 100% |  |  |  |  |  | 34.75h | 34.75h |
| 923 | 2.65.1 | схема размещения |  | 1h | 2026-08-31 09:00 A | 2026-08-31 10:00 A |  | 100% |  |  |  | start no earlier than 2026-08-31 09:00 | Зорькин В | 1h | 1h |
| 924 | 2.65.2 | контроль остатков материала - каркас + обшивка стен |  | 30min | 2026-08-31 10:00 A | 2026-08-31 10:30 A | 923 | 100% |  |  |  | start no earlier than 2026-08-14 09:00 | Зорькин В | 0.5h | 0.5h |
| 925 | 2.65.3 | заявка материал / лист |  | 1h | 2026-09-01 10:30 A | 2026-09-01 11:30 A | 924FS+1d | 100% |  |  |  | start no earlier than 2026-08-10 08:00 | Зорькин В | 1h | 1h |
| 926 | 2.65.4 | контроль поставка |  | 15min | 2026-09-14 11:30 A | 2026-09-14 11:45 A | 925FS+10d | 100% |  |  |  | start no earlier than 2026-08-10 08:00 | Зорькин В | 0.25h | 0.25h |
| 927 | 2.65.5 | монтаж каркас + обшивка |  | 2d | 2026-09-14 09:00 A | 2026-09-15 18:00 A | 926FS+1d | 100% |  |  |  | start no earlier than 2026-08-10 08:00 | Некрасов А; Тимофеев В | 32h | 32h |

| ID | WBS | Task | Type | Duration | Start | Finish | Predecessors | Complete | Remaining | Total slack | Free slack | Constraint | Resources | Work | Actual work |
| --- | --- | --- | --- | --- | --- | --- | --- | --- | --- | --- | --- | --- | --- | --- | --- |
| 928 | 2.66 | **установить кондиционер контролерам ОТК в 2ц** |  | 7.38d | 2026-08-19 09:00 A | 2026-08-28 12:00 A |  | 100% |  |  |  |  |  | 7.5h | 7.5h |
| 929 | 2.66.1 | оапата счет контроль |  | 15min | 2026-08-19 09:00 A | 2026-08-19 09:15 A |  | 100% |  |  |  | start no earlier than 2026-08-19 09:00 | Домоводов К | 0.25h | 0.25h |
| 930 | 2.66.2 | длоставка контроль |  | 15min | 2026-08-24 09:15 A | 2026-08-24 09:30 A | 929FS+4d | 100% |  |  |  | start no earlier than 2026-08-17 09:00 | Домоводов К | 0.25h | 0.25h |
| 931 | 2.66.3 | монтаж |  | 4h | 2026-08-24 09:30 A | 2026-08-24 14:30 A | 930 | 100% |  |  |  | start no earlier than 2026-08-10 08:00 | оплот | 4h | 4h |
| 932 | 2.66.4 | монтаж крозетка |  | 3h | 2026-08-28 09:00 A | 2026-08-28 12:00 A | 931FS-1d | 100% |  |  |  | start no earlier than 2026-08-28 09:00 | Бобренок В | 3h | 3h |
| 933 | 2.67 | **усиление подогрев приточной вентиляции** |  | 58d? | 2026-08-17 09:00 A | 2026-10-23 18:00 |  | 33% | 38.93d? | 97.59d |  |  |  | 18.25h | 6h |
| 934 | 2.67.1 | планирование мощности для приточная вент до 200 квт + тепл завесы |  | 4h | 2026-08-17 09:00 A | 2026-08-17 13:00 A |  | 100% |  |  |  | start no earlier than 2026-08-17 09:00 | Домоводов К | 4h | 4h |
| 935 | 2.67.2 | Подключить колорифер в противоток, гибкую подводку получить на складе |  | 2h | 2026-09-24 09:00 A | 2026-09-24 11:00 A |  | 100% |  |  |  | start no earlier than 2026-09-24 08:00 | Дедов В | 2h | 2h |
| 936 | 2.67.3 | заявка доп котлы + автоматика |  | 4h | 2026-09-16 09:00 | 2026-09-16 13:00 | 934FS+1d |  |  | 119.06d | 0d | start no earlier than 2026-09-16 09:00 | Домоводов К | 4h |  |
| 937 | 2.67.4 | контроль поствки |  | 15min | 2026-09-26 14:00 | 2026-09-26 14:15 | 936FS+10d |  |  | 119.06d | 21.47d | start no earlier than 2026-08-10 08:00 | Зорькин В | 0.25h |  |
| 938 | 2.67.5 | монтаж |  | 1d? | 2026-10-23 09:00 | 2026-10-23 18:00 | 937 |  |  | 97.59d |  | start no earlier than 2026-10-23 09:00 | Некрасов А | 8h |  |
| 939 | 2.68 | собрать 4 стула и тумбочку. Находятся у мастера |  | 4h | 2026-08-10 08:00 A | 2026-08-10 13:00 A |  | 100% |  |  |  | start no earlier than 2026-08-10 08:00 | Бобренок В | 4h | 4h |
| 940 | 2.69 | кабель к вентилятору печи примыкание гофры к трубе выполнить без пустот фото Фадеевой |  | 1h | 2026-08-11 09:00 A | 2026-08-11 10:00 A |  | 100% |  |  |  | start no earlier than 2026-08-11 09:00 | Бобренок В | 1h | 1h |
| 941 | 2.70 | закрыить все эл щщитки на ключь |  | 1h | 2026-08-10 08:00 A | 2026-08-10 10:00 A |  | 100% |  |  |  | start no earlier than 2026-08-10 08:00 | Бобренок В | 1h | 1h |
| 942 | 2.71 | установить отбойник склад навесок, стена мойки |  | 1h | 2026-08-10 08:00 A | 2026-08-10 10:00 A |  | 100% |  |  |  | start no earlier than 2026-08-10 08:00 | Бобренок В | 1h | 1h |
| 943 | 2.72 | **обеспечить не менее +15 зимой в зоне хранения навесок** |  | 66.34d? | 2026-08-04 09:00 A | 2026-10-23 11:45 |  | 22% | 52.03d? | 98.25d |  |  |  | 38.25h | 8.25h |
| 944 | 2.72.1 | **утепление стены** |  | 39d? | 2026-09-01 09:00 A | 2026-10-13 18:00 |  | 11% | 34.78d? | 105.59d |  |  |  | 9.25h | 1h |
| 945 | 2.72.1.1 | расчет количство утеплителя + профлист/саморезы. Заявка |  | 1h | 2026-09-09 09:00 A | 2026-09-09 10:00 A |  | 100% |  |  |  | start no earlier than 2026-09-09 09:00 | Зорькин В | 1h | 1h |
| 946 | 2.72.1.2 | получить цену / решение о тепловой завесе | milestone | 0d | 2026-09-01 09:00 A | 2026-09-01 09:00 A |  | 100% |  |  |  | start no earlier than 2026-09-01 09:00 | Домоводов К |  |  |
| 947 | 2.72.1.3 | контроль даты доставки |  | 15min | 2026-09-14 10:00 | 2026-09-14 10:15 | 945FS+5d |  |  | 130.44d | 24.84d | start no earlier than 2026-08-27 08:00 | Зорькин В | 0.25h |  |
| 948 | 2.72.1.4 | монтаж утеплитель и листы |  | 1d? | 2026-10-13 09:00 | 2026-10-13 18:00 | 947FS+1d |  |  | 105.59d |  | start no earlier than 2026-10-13 09:00 | Некрасов А | 8h |  |
| 949 | 2.72.1.5 | решение об утеплении стены сравнить с затратами на тепловые завесы | milestone | 0h | 2026-09-01 09:00 | 2026-09-01 09:00 | 946, 965 |  |  | 123.25d | 25d | start no earlier than 2026-08-24 09:00 | Домоводов К |  |  |
| 950 | 2.72.2 | **кап ремонт стен зона хранения навесок. Промерзают** |  | 5.12d | 2026-08-04 09:00 A | 2026-08-11 10:00 A |  | 100% |  |  |  |  |  | 5h | 5h |
| 951 | 2.72.2.1 | установить листы на место склад навесо стена с эл щитком |  | 1h | 2026-08-11 09:00 A | 2026-08-11 10:00 A |  | 100% |  |  |  | start no earlier than 2026-08-11 09:00 | Тимофеев В | 1h | 1h |
| 952 | 2.72.2.2 | вскрытие стен дя составления плана работ. Демонтировать несколько листов в зоне промерзания (гдещиток) |  | 4h | 2026-08-04 09:00 A | 2026-08-04 13:00 A |  | 100% |  |  |  | start no earlier than 2026-08-04 09:00 | Тимофеев В | 4h | 4h |

| ID | WBS | Task | Type | Duration | Start | Finish | Predecessors | Complete | Remaining | Total slack | Free slack | Constraint | Resources | Work | Actual work |
| --- | --- | --- | --- | --- | --- | --- | --- | --- | --- | --- | --- | --- | --- | --- | --- |
| 953 | 2.72.3 | **тепловые завесы в 2ц зона подачи навесок** |  | 57.34d? | 2026-08-17 09:00 A | 2026-10-23 11:45 |  | 8% | 52.51d? | 98.25d |  |  |  | 23.75h | 2h |
| 954 | 2.72.3.1 | **монтаж теплокалориферов** |  | 20.34d? | 2026-09-28 09:00 | 2026-10-23 11:45 |  |  |  | 98.25d |  |  |  | 10.75h |  |
| 955 | 2.72.3.1.1 | заявка |  | 2h | 2026-09-28 09:00 | 2026-09-28 11:00 | 949FS+1d |  |  | 98.25d | 0d | start no earlier than 2026-09-28 09:00 | Домоводов К | 2h |  |
| 956 | 2.72.3.1.2 | контроль оплаты\ |  | 15min | 2026-09-30 11:00 | 2026-09-30 11:15 | 955FS+2d |  |  | 98.25d | 0d | start no earlier than 2026-09-07 09:00 | Зорькин В | 0.25h |  |
| 957 | 2.72.3.1.3 | контроль доставки |  | 15min | 2026-10-20 11:15 | 2026-10-20 11:30 | 956FS+15d |  |  | 98.25d | 0d | start no earlier than 2026-08-10 08:00 | Зорькин В | 0.25h |  |
| 958 | 2.72.3.1.4 | приемка |  | 15min | 2026-10-21 11:30 | 2026-10-21 11:45 | 957FS+1d |  |  | 98.25d | 0d | start no earlier than 2026-08-10 08:00 | Зорькин В | 0.25h |  |
| 959 | 2.72.3.1.5 | монтаж калориферов |  | 1d? | 2026-10-22 11:45 | 2026-10-23 11:45 | 958FS+1d |  |  | 98.25d |  | start no earlier than 2026-08-10 08:00 | Некрасов А | 8h |  |
| 960 | 2.72.3.2 | **монтаж кабель** |  | 44.38d? | 2026-08-17 09:00 A | 2026-10-06 12:00 |  | 15% | 37.55d? | 111.22d |  |  |  | 13h | 2h |
| 961 | 2.72.3.2.1 | планирование мощности |  | 2h | 2026-08-17 09:00 A | 2026-08-17 11:00 A |  | 100% |  |  |  | start no earlier than 2026-08-17 09:00 | Домоводов К | 2h | 2h |
| 962 | 2.72.3.2.2 | заявка кабель /щиток |  | 2h | 2026-09-28 09:00 | 2026-09-28 11:00 | 961 |  |  | 111.22d | 0d | start no earlier than 2026-09-28 09:00 | Домоводов К | 2h |  |
| 963 | 2.72.3.2.3 | контроль доставка |  | 1h | 2026-10-04 11:00 | 2026-10-04 12:00 | 962FS+5d |  |  | 111.22d | 0d | start no earlier than 2026-08-10 08:00 | Зорькин В | 1h |  |
| 964 | 2.72.3.2.4 | монтаж |  | 1d? | 2026-10-05 12:00 | 2026-10-06 12:00 | 963FS+1d |  |  | 111.22d |  | start no earlier than 2026-08-10 08:00 | Некрасов А | 8h |  |
| 965 | 2.72.4 | контроль достаточности если не крепить верхние саморезы |  | 15min | 2026-08-13 09:00 A | 2026-08-13 09:15 A |  | 100% |  |  |  | start no earlier than 2026-08-13 09:00 | Домоводов К | 0.25h | 0.25h |
| 966 | 2.73 | **дверь в мойку сделать герметичный притвор** |  | 1.25d | 2026-08-14 09:00 A | 2026-08-17 11:00 A |  | 100% |  |  |  |  |  | 2.33h | 2.33h |
| 967 | 2.73.1 | подбор уплотнителя / заказать |  | 20min | 2026-08-14 09:00 A | 2026-08-14 09:20 A |  | 100% |  |  |  | start no earlier than 2026-08-14 09:00 | Домоводов К | 0.33h | 0.33h |
| 968 | 2.73.2 | монтаж резинки на клей |  | 2h | 2026-08-16 09:00 A | 2026-08-17 11:00 A |  | 100% |  |  |  | start no earlier than 2026-08-16 09:00 | Бобренок В | 2h | 2h |
| 969 | 2.74 | **пролистыватель с апликтором заказ** |  | 49d? | 2026-08-10 09:00 A | 2026-10-05 18:00 |  | 12% | 42.93d? | 111.59d |  |  |  | 9.42h | 1.17h |
| 970 | 2.74.1 | получить договор + счет |  | 1h | 2026-08-10 09:00 A | 2026-08-10 10:00 A |  | 100% |  |  |  | start no earlier than 2026-08-10 08:00 | Зорькин В | 1h | 1h |
| 971 | 2.74.2 | **согласвоание договор** |  | 3.02d | 2026-08-12 09:00 A | 2026-08-17 09:10 A |  | 100% |  |  |  |  |  | 0.17h | 0.17h |
| 972 | 2.74.2.1 | подать договор |  | 5min | 2026-08-12 09:00 A | 2026-08-12 09:05 A |  | 100% |  |  |  | start no earlier than 2026-08-12 09:00 | Домоводов К | 0.08h | 0.08h |
| 973 | 2.74.2.2 | контроль |  | 5min | 2026-08-17 09:05 A | 2026-08-17 09:10 A | 972FS+5d | 100% |  |  |  | start no earlier than 2026-08-12 09:00 | Домоводов К | 0.08h | 0.08h |
| 974 | 2.74.3 | оплата подать счет | milestone | 0d | 2026-08-12 09:00 A | 2026-08-12 09:00 A |  | 100% |  |  |  | start no earlier than 2026-08-12 09:00 | Домоводов К |  |  |
| 975 | 2.74.4 | доставка конетроль |  | 15min | 2026-09-18 09:00 | 2026-09-18 09:15 | 974FS+30d |  |  | 126.56d | 14.97d | start no earlier than 2026-08-10 08:00 | Зорькин В | 0.25h |  |
| 976 | 2.74.5 | монтаж |  | 1d? | 2026-10-05 09:00 | 2026-10-05 18:00 | 975FS+1d |  |  | 111.59d |  | start no earlier than 2026-10-05 09:00 | Тимофеев В | 8h |  |

| ID | WBS | Task | Type | Duration | Start | Finish | Predecessors | Complete | Remaining | Total slack | Free slack | Constraint | Resources | Work | Actual work |
| --- | --- | --- | --- | --- | --- | --- | --- | --- | --- | --- | --- | --- | --- | --- | --- |
| 977 | 2.75 | **вентиляция мойка приточно-вытяжная 1ц 2 линия** |  | 9.19d | 2026-08-13 09:00 A | 2026-08-26 10:30 A |  | 100% |  |  |  |  |  | 20h | 20h |
| 978 | 2.75.1 | монтаж вытяжной трубы в колектор. После переноса вентиляторов отключен |  | 4h | 2026-08-17 09:00 A | 2026-08-17 13:00 A |  | 100% |  |  |  | start no earlier than 2026-08-16 09:00 | Бобренок В | 4h | 4h |
| 979 | 2.75.2 | составить проект |  | 4h | 2026-08-13 09:00 A | 2026-08-13 13:00 A |  | 100% |  |  |  | start no earlier than 2026-08-13 09:00 | Домоводов К | 4h | 4h |
| 980 | 2.75.3 | заявка материалы |  | 1h | 2026-08-24 09:00 A | 2026-08-24 10:00 A | 979FS+7d | 100% |  |  |  | start no earlier than 2026-08-24 09:00 | Зорькин В | 1h | 1h |
| 981 | 2.75.4 | контроль поставки |  | 30min | 2026-08-25 10:00 A | 2026-08-25 10:30 A | 980FS+1d | 100% |  |  |  | start no earlier than 2026-08-10 08:00 | Зорькин В | 0.5h | 0.5h |
| 982 | 2.75.5 | монтаж |  | 1d | 2026-08-25 10:30 A | 2026-08-26 10:30 A | 981 | 100% |  |  |  | start no earlier than 2026-08-10 08:00 | Некрасов А; Тимофеев В | 10.5h | 10.5h |
| 983 | 2.76 | **выполнить обрамление двери в охладитель, что бы скрыть поверхность** |  | 27.25d | 2026-08-14 09:00 A | 2026-09-17 11:00 A |  | 100% |  |  |  |  |  | 4.5h | 4.5h |
| 984 | 2.76.1 | заказ декоративный уголок |  | 15min | 2026-08-14 09:00 A | 2026-08-14 09:15 A |  | 100% |  |  |  | start no earlier than 2026-08-14 09:00 | Домоводов К | 0.25h | 0.25h |
| 985 | 2.76.2 | контроль доставки |  | 15min | 2026-09-09 09:00 A | 2026-09-09 09:15 A | 984FS+5d | 100% |  |  |  | start no earlier than 2026-09-09 09:00 | Зорькин В | 0.25h | 0.25h |
| 986 | 2.76.3 | обить дверь в охладитель профлистом оцнк |  | 2h | 2026-09-17 09:00 A | 2026-09-17 11:00 A |  | 100% |  |  |  | start no earlier than 2026-09-17 09:00 | Некрасов А | 2h | 2h |
| 987 | 2.76.4 | монтаж |  | 2h | 2026-09-03 09:00 A | 2026-09-03 11:00 A | 985FS+1d | 100% |  |  |  | start no earlier than 2026-09-03 09:00 | Труфанов А | 2h | 2h |
| 988 | 2.77 | **ремонт осушителя компрессора 2ц** |  | 47.31d | 2026-08-09 09:00 A | 2026-10-04 11:30 |  | 80% | 9.59d | 113.28d |  |  |  | 13.58h | 11.08h |
| 989 | 2.77.1 | проверка давления фреона |  | 1h | 2026-09-17 09:00 A | 2026-09-17 10:00 A |  | 100% |  |  |  | start no earlier than 2026-09-17 09:00 | Труфанов А; Некрасов А | 2h | 2h |
| 990 | 2.77.2 | заявка фреон 134а |  | 15min | 2026-09-25 09:00 | 2026-09-25 09:15 | 989 |  |  | 113.28d | 0d | start no earlier than 2026-09-25 09:00 | Зорькин В | 0.25h |  |
| 991 | 2.77.3 | доставка контроль |  | 15min | 2026-10-02 09:15 | 2026-10-02 09:30 | 990FS+7d |  |  | 113.28d | 0d | start no earlier than 2026-09-18 08:00 | Зорькин В | 0.25h |  |
| 992 | 2.77.4 | заправить хладогент |  | 2h | 2026-10-04 09:30 | 2026-10-04 11:30 | 991FS+1d |  |  | 113.28d |  | start no earlier than 2026-10-01 09:00 | Некрасов А | 2h |  |
| 993 | 2.77.5 | фото шильдик для поиск в продаже |  | 10min | 2026-08-11 09:00 A | 2026-08-11 09:10 A |  | 100% |  |  |  | start no earlier than 2026-08-11 09:00 | Некрасов А | 0.17h | 0.17h |
| 994 | 2.77.6 | связь с сервисным отделом получить дату |  | 1h | 2026-08-12 09:00 A | 2026-08-12 10:00 A |  | 100% |  |  |  | start no earlier than 2026-08-12 09:00 | Зорькин В | 1h | 1h |
| 995 | 2.77.7 | фото шильдик для поиск в продаже |  | 1h | 2026-08-12 09:00 A | 2026-08-12 10:00 A |  | 100% |  |  |  | start no earlier than 2026-08-12 09:00 | Зорькин В | 1h | 1h |
| 996 | 2.77.8 | слить конденсат с компрессора, чистка фильтров | manual | 3h | 2026-08-09 09:00 A | 2026-08-09 12:00 A |  | 100% |  |  |  | start no earlier than 2026-08-09 09:00 | Бобренок В | 3h | 3h |
| 997 | 2.77.9 | попробовать смазать подшипники вентилятора осушителя |  | 15min | 2026-08-18 09:00 A | 2026-08-18 09:15 A |  | 100% |  |  |  | start no earlier than 2026-08-18 09:00 | Некрасов А | 0.25h | 0.25h |
| 998 | 2.77.10 | замер размеров вентилятора |  | 15min | 2026-08-18 09:00 A | 2026-08-18 09:15 A |  | 100% |  |  |  | start no earlier than 2026-08-18 09:00 | Зорькин В; Некрасов А | 0.5h | 0.5h |
| 999 | 2.77.11 | подбор аналога вентилятора погабариту |  | 1h | 2026-08-18 09:15 A | 2026-08-18 10:15 A | 998 | 100% |  |  |  | start no earlier than 2026-08-14 09:00 | Зорькин В | 1h | 1h |
| 1000 | 2.77.12 | заменить вентилятор на осушителе (от охладителя, лежит на компрессоре). В 6 утра остановка |  | 2h | 2026-08-19 09:00 A | 2026-08-19 11:00 A |  | 100% |  |  |  | start no earlier than 2026-08-19 09:00 | Бобренок В | 2h | 2h |
| 1001 | 2.77.13 | Заявка в сервис не работает осушитель |  | 10min | 2026-08-31 09:00 A | 2026-08-31 09:10 A |  | 100% |  |  |  | start no earlier than 2026-08-31 09:00 | Зорькин В | 0.17h | 0.17h |
| 1002 | 2.78 | установить защитные крышки на клемник вентиляторов охладителя. От 3д печать | manual | 4h | 2026-09-16 09:00 A | 2026-09-16 13:00 A |  | 100% |  |  |  | start no earlier than 2026-09-16 09:00 | Труфанов А | 4h | 4h |
| 1003 | 2.79 | заменить резинки на красном баке (выдать, если будет остановка, поменять) | manual | 1h | 2026-08-31 09:00 A | 2026-08-31 10:00 A |  | 100% |  |  |  | start no earlier than 2026-08-31 09:00 | Бобренок В | 1h | 1h |
| 1004 | 2.80 | на приемной горловине красного смесителя закрутить второй ленточный хомут, чтобы не выпадала мука |  | 1h | 2026-08-06 09:00 A | 2026-08-06 10:00 A |  | 100% |  |  |  | start no earlier than 2026-08-06 08:00 | Труфанов А | 1h | 1h |

| ID | WBS | Task | Type | Duration | Start | Finish | Predecessors | Complete | Actual start | Actual finish | Constraint | Resources | Work | Actual work |
| --- | --- | --- | --- | --- | --- | --- | --- | --- | --- | --- | --- | --- | --- | --- |
| 1005 | 2.81 | **закрутить болты на петлях двери печи** |  | 0.12d | 2026-09-02 09:00 A | 2026-09-02 10:00 A |  | 100% |  |  |  |  | 1h | 1h |
| 1006 | 2.81.1 | попробовать закрутить на винтовые заклепки |  | 1h | 2026-09-02 09:00 A | 2026-09-02 10:00 A |  | 100% |  |  | start no earlier than 2026-09-04 09:00 | Некрасов А | 1h | 1h |
| 1007 | 2.82 | установка фильтров на подачу жира (осн. + резерв) |  | 2h | 2026-08-06 08:00 A | 2026-08-06 11:00 A |  | 100% |  |  | start no earlier than 2026-08-06 08:00 | Тимофеев В | 2h | 2h |
| 1008 | 2.83 | эксперимент с лейкой подача жиров |  | 1h | 2026-08-06 08:00 A | 2026-08-06 10:00 A |  | 100% |  |  | start no earlier than 2026-08-06 08:00 | Тимофеев В | 1h | 1h |
| 1009 | 2.84 | **по аналогии второй линии насверлить сверлом 1 мм отверстия в трубке для жиров** |  | 0.12d | 2026-08-06 09:00 A | 2026-08-06 10:00 A |  | 100% |  |  |  | Макаревич А | 2h | 2h |
| 1010 | 2.84.1 | установка трубки на жиры |  | 1h | 2026-08-06 09:00 A | 2026-08-06 10:00 A |  | 100% |  |  | start no earlier than 2026-08-06 09:00 | Тимофеев В | 1h | 1h |
| 1011 | 2.85 | поломоечная машинка вырезать из силикона шторку захвата воды |  | 2h | 2026-08-03 08:00 A | 2026-08-03 11:00 A |  | 100% |  |  | start no earlier than 2026-08-03 08:00 | Бобренок В | 2h | 2h |
| 1012 | 2.86 | **втулка фторопласт заказать 26х44х5** |  | 1d? | 2026-08-04 09:00 A | 2026-08-04 18:00 A |  | 100% |  |  |  | Шуранов Ю | 8h | 8h |
| 1013 | 2.86.1 | счет доставка |  | 1d? | 2026-08-04 09:00 A | 2026-08-04 18:00 A |  | 100% |  |  | start no earlier than 2026-08-04 08:00 |  |  |  |
| 1014 | 2.87 | **посмотреть вентилятор Сапелина у нас в кабинете (не работает)** |  | 1d? | 2026-08-04 09:00 A | 2026-08-04 18:00 A |  | 100% |  |  |  | Бобренок В | 8h | 8h |
| 1015 | 2.87.1 | сгорел двигатель |  | 1d? | 2026-08-04 09:00 A | 2026-08-04 18:00 A |  | 100% |  |  | start no earlier than 2026-08-04 08:00 |  |  |  |
| 1016 | 2.88 | слить конденсат с компрессора |  | 0.5h | 2026-08-02 09:00 A | 2026-08-03 09:30 A |  | 100% |  |  | start no earlier than 2026-08-02 09:00 | Бобренок В | 0.5h | 0.5h |
| 1017 | 2.89 | **продолжить изготовление приемной горловины по аналогии 3 ц.** |  | 4h? | 2026-08-10 09:00 | 2026-08-10 13:00 |  | 100% | 2026-07-29 09:00 | 2026-09-04 11:00 |  |  | 14.08h | 14.08h |
| 1018 | 2.89.1 | заказать прут нерж. |  | 1d? | 2026-07-29 09:00 A | 2026-07-29 18:00 A |  | 100% |  |  | start no earlier than 2026-07-29 09:00 | Зорькин В | 8h | 8h |
| 1019 | 2.89.2 | контроль доставка |  | 5min | 2026-08-18 09:00 A | 2026-08-18 09:05 A |  | 100% |  |  | start no earlier than 2026-08-18 09:00 | Зорькин В | 0.08h | 0.08h |
| 1020 | 2.89.3 | изготовление / установка |  | 4h | 2026-08-20 09:00 A | 2026-08-20 13:00 A | 1019 | 100% |  |  | start no earlier than 2026-08-20 09:00 | Макаревич А | 4h | 4h |
| 1021 | 2.89.4 | Корректировка горловины, сделать более плотные зазоры, посмотреть по месту |  | 2h | 2026-09-04 09:00 A | 2026-09-04 11:00 A |  | 100% |  |  | start no earlier than 2026-09-04 09:00 | Макаревич А | 2h | 2h |
| 1022 | 2.90 | прикрутить лотки охладителя, чтобы не задевали сетку (лишние отверстия заварить) | manual | 2h | 2026-08-03 09:00 A | 2026-08-03 11:00 A |  | 100% |  |  | start no earlier than 2026-08-03 09:00 | Бобренок В | 2h | 2h |
| 1023 | 2.91 | чистка фильтров кондиционеров | manual | 1h | 2026-08-01 09:00 A | 2026-08-01 10:00 A |  | 100% |  |  | start no earlier than 2026-08-01 09:00 | Бундин В | 1h | 1h |
| 1024 | 2.92 | слить конденсат с компрессора |  | 1h | 2026-07-30 08:00 A | 2026-07-30 10:00 A |  | 100% |  |  | start no earlier than 2026-07-30 08:00 | Дедов В | 1h | 1h |
| 1025 | 2.93 | слив конденсата с кондиционеров прочистить трубу | manual | 2h | 2026-08-01 09:00 A | 2026-08-01 11:00 A |  | 100% |  |  | start no earlier than 2026-08-01 09:00 | Бундин В | 2h | 2h |
| 1026 | 2.94 | Настройка частотника питателя (созвон с Валентином) |  | 1h | 2026-07-31 09:00 A | 2026-07-31 10:00 A |  | 100% |  |  | start no earlier than 2026-07-31 09:00 | Бундин В | 1h | 1h |
| 1027 | 2.95 | дверь металлическая зона выдачи ГП ревизия, плоход закрывается |  | 1h | 2026-07-15 09:00 A | 2026-07-15 10:00 A |  | 100% |  |  | start no earlier than 2026-07-15 09:00 | Бундин В | 1h | 1h |
| 1028 | 2.96 | крепление доводчик дверь входная |  | 1h | 2026-07-15 09:00 A | 2026-07-15 10:00 A |  | 100% |  |  | start no earlier than 2026-07-15 09:00 | Бундин В | 1h | 1h |
| 1029 | 2.97 | снять меющийся, установить новый прайсчекер (лежит у мастеров) |  | 1h | 2026-07-15 09:00 A | 2026-07-15 10:00 A |  | 100% |  |  | start no earlier than 2026-07-15 09:00 | Бундин В | 1h | 1h |
| 1030 | 2.98 | ремонт кронштейна датчик давления |  | 30min | 2026-07-10 09:00 A | 2026-07-10 09:30 A |  | 100% |  |  | start no earlier than 2026-07-10 09:00 | Бобренок В | 0.5h | 0.5h |
| 1031 | 2.99 | замерить демонтированные шнеки, заполнить ьабличку Зорькина |  | 1h | 2026-07-11 09:00 A | 2026-07-13 10:00 A |  | 100% |  |  | start no earlier than 2026-07-11 09:00 | Макаревич А | 1h | 1h |
| 1032 | 2.100 | обшить входной проем п-образным профилем (на складе лежит) | manual | 3h | 2026-07-08 09:00 A | 2026-07-08 12:00 A |  | 100% |  |  | start no earlier than 2026-07-08 09:00 | Некрасов А; Тимофеев В | 6h | 6h |
| 1033 | 2.101 | чистка воздушных клапанов на септике |  | 1d? | 2026-07-02 09:00 A | 2026-07-02 18:00 A |  | 100% |  |  | start no earlier than 2026-07-02 09:00 | Олег | 8h | 8h |
| 1034 | 2.102 | закрепить щиток транспортера у стены на фасовке, малый дозатор) | manual | 1h | 2026-07-04 09:00 A | 2026-07-04 10:00 A |  | 100% |  |  | start no earlier than 2026-07-04 09:00 | Дедов В | 1h | 1h |

| ID | WBS | Task | Type | Duration | Start | Finish | Complete | Constraint | Resources | Work | Actual work |
| --- | --- | --- | --- | --- | --- | --- | --- | --- | --- | --- | --- |
| 1035 | 2.103 | **под экструдером масло- ревизия откуда** |  | 0.12d | 2026-07-03 09:00 A | 2026-07-03 10:00 A | 100% |  |  | 1h | 1h |
| 1036 | 2.103.1 | заменить шланг 20мм (лежит черный на стеллаже справа, где кабель) при остановке- согласовать с мастером |  | 1h | 2026-07-03 09:00 A | 2026-07-03 10:00 A | 100% | start no earlier than 2026-07-03 09:00 | Макаревич А | 1h | 1h |
| 1037 | 2.104 | чистка труб сброса конденсата с кондиционеров |  | 2h | 2026-06-30 09:00 A | 2026-06-30 11:00 A | 100% | start no earlier than 2026-06-30 09:00 | Некрасов А; Тимофеев В | 2h | 2h |
| 1038 | 2.105 | чистка всех фильтров на кондиционеры, разобраться с питанием внутреннего блока |  | 1d? | 2026-06-29 09:00 A | 2026-06-29 18:00 A | 100% | start no earlier than 2026-06-29 09:00 |  |  |  |
| 1039 | 2.106 | ТО бестром |  | 2h | 2026-06-30 09:00 A | 2026-06-30 11:00 A | 100% | start no earlier than 2026-06-30 09:00 | Бундин В | 2h | 2h |
| 1040 | 2.107 | промыть внешние блоки кондиционеров |  | 3h | 2026-06-26 09:00 A | 2026-06-26 12:00 A | 100% | start no earlier than 2026-06-26 09:00 | Тимофеев В; Дедов В | 6h | 6h |
| 1041 | 2.108 | вернуть кожух защиты на прекондиционер (подогнать в размер) на остановке линии |  | 2h | 2026-06-24 09:00 A | 2026-06-24 11:00 A | 100% | start no earlier than 2026-06-24 09:00 | Труфанов А | 2h | 2h |
| 1042 | 2.109 | подключение тепловой защиты на приточке и вытяжке |  | 2h | 2026-06-23 08:00 A | 2026-06-23 11:00 A | 100% | start no earlier than 2026-06-23 08:00 | Тимофеев В; Макаревич А | 4h | 4h |
| 1043 | 2.110 | заменить фильтр приточка 2 этаж и указать кол-во остатка на складе |  | 1h | 2026-06-20 09:00 A | 2026-06-22 10:00 A | 100% | start no earlier than 2026-06-20 09:00 | Дедов В | 1h | 1h |
| 1044 | 2.111 | сделать защиту жировика от холода (изготовить из сенгвич панели на навесках 2ц.) жировик расскажет | manual | 2h | 2026-06-21 09:00 A | 2026-06-21 11:00 A | 100% | start no earlier than 2026-06-21 09:00 | Бундин В | 2h | 2h |
| 1045 | 2.112 | проверка теко 0,4 -пакет запаенный |  | 1h | 2026-06-18 08:00 A | 2026-06-18 10:00 A | 100% | start no earlier than 2026-06-18 08:00 | Дедов В | 1h | 1h |
| 1046 | 2.113 | подключение датчика давления через гидрошланг |  | 1h | 2026-07-09 09:00 A | 2026-07-09 10:00 A | 100% | start no earlier than 2026-07-09 09:00 | Бундин В | 1h | 1h |
| 1047 | 2.114 | чистка парогенератора |  | 2h | 2026-06-18 08:00 A | 2026-06-18 11:00 A | 100% | start no earlier than 2026-06-18 08:00 | Тимофеев В | 2h | 2h |
| 1048 | 2.115 | слив конденсата с компрессора и продуть радиаторы и фильтры |  | 1h | 2026-06-20 09:00 A | 2026-06-22 10:00 A | 100% | start no earlier than 2026-06-20 09:00 | Бобренок В | 1h | 1h |
| 1049 | 2.116 | проверить, есть ли давление во всех гидроаккумуляторах на отоплении по цеху, зафиксировать с порванными мембранами |  | 2h | 2026-06-11 09:00 A | 2026-06-11 11:00 A | 100% | start no earlier than 2026-06-11 09:00 | Дедов В | 2h | 2h |
| 1050 | 2.117 | дверь охладителя и угол - прикрутить наружний уголок 20х50 и 50х50, чтобы не резали руки (уголок на входе напротив ворот в синем складе) |  | 3h | 2026-06-12 09:00 A | 2026-06-12 12:00 A | 100% | start no earlier than 2026-06-12 09:00 | Дедов В | 3h | 3h |
| 1051 | 2.118 | взять на складе специальный п-образный профиль и обшить дверной проем вход в охладитель | manual | 2h | 2026-07-05 09:00 A | 2026-07-05 11:00 A | 100% | start no earlier than 2026-07-05 09:00 |  |  |  |
| 1052 | 2.119 | проверка гидроаккумулятора на водоподготовке |  | 0.5h | 2026-06-11 09:00 A | 2026-06-11 09:30 A | 100% | start no earlier than 2026-06-11 09:00 | Дедов В | 0.5h | 0.5h |
| 1053 | 2.120 | чистка парогенератора |  | 2h | 2026-06-11 09:00 A | 2026-06-11 11:00 A | 100% | start no earlier than 2026-06-11 09:00 | Тимофеев В | 2h | 2h |
| 1054 | 2.121 | **посмотреть на желтом складе шибер, если найдем устанавливаем на аквариум зона экструдера** |  | 0.12d | 2026-06-12 09:00 A | 2026-06-12 10:00 A | 100% |  |  | 1h | 1h |
| 1055 | 2.121.1 | монтаж воздуховод под углом на шибер- настройка с операторами направление обдува |  | 1h | 2026-06-12 09:00 A | 2026-06-12 10:00 A | 100% | start no earlier than 2026-06-12 09:00 | Бундин В | 1h | 1h |
| 1056 | 2.122 | **ворота выход готовой продукции (прикрутить ролик, ролик у нас в кабинете)** |  | 1d? | 2026-06-11 09:00 A | 2026-06-11 18:00 A | 100% |  |  | 8h | 8h |
| 1057 | 2.122.1 | выкл. Ручной режим |  | 1d? | 2026-06-11 09:00 A | 2026-06-11 18:00 A | 100% | start no earlier than 2026-06-11 09:00 | Дедов В | 8h | 8h |
| 1058 | 2.123 | промерить шнеки / гильзы износ. Маркировать |  | 1h | 2026-07-08 09:00 A | 2026-07-08 10:00 A | 100% | start no earlier than 2026-07-08 09:00 | Зорькин В | 1h | 1h |
| 1059 | 2.124 | сверлить сетку от фильеры, сверлом на станке, все отверстия. |  | 4h | 2026-06-06 09:00 A | 2026-06-08 13:00 A | 100% | start no earlier than 2026-06-06 09:00 | Бобренок В | 4h | 4h |

| ID | WBS | Task | Type | Duration | Start | Finish | Predecessors | Complete | Remaining | Actual start | Actual finish | Total slack | Free slack | Constraint | Resources | Work | Actual work |
| --- | --- | --- | --- | --- | --- | --- | --- | --- | --- | --- | --- | --- | --- | --- | --- | --- | --- |
| 1060 | 2.125 | **заменаить сальник редуктора транспортер №3** |  | 0.12d | 2026-06-18 09:00 A | 2026-06-18 10:00 A |  | 100% |  |  |  |  |  |  |  | 2h | 2h |
| 1061 | 2.125.1 | заменаить редутор из зип |  | 1h | 2026-06-18 09:00 A | 2026-06-18 10:00 A |  | 100% |  |  |  |  |  | start no earlier than 2026-06-18 09:00 | Тимофеев В | 1h | 1h |
| 1062 | 2.125.2 | замена сальник на снятом |  | 1h | 2026-06-18 09:00 A | 2026-06-18 10:00 A |  | 100% |  |  |  |  |  | start no earlier than 2026-06-19 09:00 | Тимофеев В | 1h | 1h |
| 1063 | 2.126 | законтрогаить шпильки-ножки запайщиков |  | 1h | 2026-06-06 09:00 A | 2026-06-08 10:00 A |  | 100% |  |  |  |  |  | start no earlier than 2026-06-06 09:00 | Бобренок В | 1h | 1h |
| 1064 | 2.127 | **нория квадропак -устранить просыпание** |  | 1d? | 2026-06-04 09:00 A | 2026-06-04 18:00 A |  | 100% |  |  |  |  |  |  | Тимофеев В | 16h | 16h |
| 1065 | 2.127.1 | добавить частоту частотника до 70 на норию |  | 1d? | 2026-06-04 09:00 A | 2026-06-04 18:00 A |  | 100% |  |  |  |  |  | start no earlier than 2026-06-04 09:00 | Дедов В | 8h | 8h |
| 1066 | 2.128 | Замена шнеков (усиленные) - по уровню |  | 4h | 2026-06-04 09:00 A | 2026-06-04 13:00 A |  | 100% |  |  |  |  |  | start no earlier than 2026-06-04 09:00 | Тимофеев В | 4h | 4h |
| 1067 | 2.129 | монтаж воздуховод приточный в площадку загрузки смесителя |  | 3h | 2026-06-05 09:00 A | 2026-06-05 12:00 A |  | 100% |  |  |  |  |  | start no earlier than 2026-06-05 09:00 | Некрасов А | 3h | 3h |
| 1068 | 2.130 | очистка вентилятора окно экструдер |  | 40min | 2026-06-04 09:00 A | 2026-06-04 09:40 A |  | 100% |  |  |  |  |  | start no earlier than 2026-06-04 09:00 | Некрасов А; Бундин В | 1.33h | 1.33h |
| 1069 | 2.131 | **доп освещение зона охладитель** |  | 4.75d? | 2026-06-09 09:00 | 2026-06-15 16:00 |  | 100% |  | 2026-06-10 09:00 | 2026-08-06 11:00 |  |  |  |  | 12.67h | 12.67h |
| 1070 | 2.131.1 | спланировать монтаж / проверить наличие матералов |  | 20min | 2026-06-25 09:00 A | 2026-06-25 09:20 A |  | 100% |  |  |  |  |  | start no earlier than 2026-06-25 09:00 | Шуранов Ю; Дедов В | 0.67h | 0.67h |
| 1071 | 2.131.2 | заказать |  | 1d? | 2026-06-10 09:00 A | 2026-06-10 18:00 A |  | 100% |  |  |  |  |  | start no earlier than 2026-06-10 09:00 | Шуранов Ю | 8h | 8h |
| 1072 | 2.131.3 | монтаж |  | 2h | 2026-08-06 09:00 A | 2026-08-06 11:00 A | 1070 | 100% |  |  |  |  |  | start no earlier than 2026-08-06 09:00 | Тимофеев В; Бундин В | 4h | 4h |
| 1073 | 2.132 | отключить двигатель зиплока бестром |  | 1h | 2026-06-12 09:00 A | 2026-06-12 10:00 A |  | 100% |  |  |  |  |  | start no earlier than 2026-06-12 09:00 | Бундин В | 1h | 1h |
| 1074 | 2.133 | ж гардероб душ кабина осмотр гидрозатвор - сильный запах |  | 2h | 2026-05-30 09:00 A | 2026-06-01 11:00 A |  | 100% |  |  |  |  |  | start no earlier than 2026-05-30 09:00 | Бобренок В | 2h | 2h |
| 1075 | 2.134 | ремонт кресло , паук находится на складе у Веры |  | 1h | 2026-06-13 09:00 A | 2026-06-15 10:00 A |  | 100% |  |  |  |  |  | start no earlier than 2026-06-13 09:00 | Бобренок В | 1h | 1h |
| 1076 | 2.135 | ревизия нихром запайщик |  | 1h | 2026-05-29 09:00 A | 2026-05-29 10:00 A |  | 100% |  |  |  |  |  | start no earlier than 2026-05-29 08:00 | Бундин В | 1h | 1h |
| 1077 | 2.136 | штабелер 2ц ревизия колес |  | 1h | 2026-06-01 09:00 A | 2026-06-01 10:00 A |  | 100% |  |  |  |  |  | start no earlier than 2026-06-01 09:00 | Макаревич А | 1h | 1h |
| 1078 | 2.137 | **ремонт эл котел №3 охладитель** |  | 79.25d? | 2026-06-05 09:00 A | 2026-09-19 11:00 |  | 92% | 6.54d? |  |  | 121.31d |  |  |  | 24.25h | 22.25h |
| 1079 | 2.137.1 | заказать плату |  | 1d? | 2026-07-15 09:00 A | 2026-07-15 18:00 A |  | 100% |  |  |  |  |  | start no earlier than 2026-07-15 09:00 | Зорькин В | 8h | 8h |
| 1080 | 2.137.2 | замена силовой платы зота в районе мойки экструдера (плата на складе) -проверка | manual | 2h | 2026-08-09 09:00 A | 2026-08-09 11:00 A |  | 100% |  |  |  |  |  | start no earlier than 2026-08-09 09:00 | Бобренок В | 2h | 2h |
| 1081 | 2.137.3 | котел №3 проверка платы силовой управления тенами (после откл управления перегрелся пошел дым) на складе есть платы 2 шт. для ЗОТА. Слава плату заменил грешит на д температуры |  | 2h | 2026-09-01 09:00 A | 2026-09-01 11:00 A |  | 100% |  |  |  |  |  | start no earlier than 2026-09-01 09:00 | Дедов В | 2h | 2h |
| 1082 | 2.137.4 | Замена силовой платы, где сгорела 1 ТТР |  | 2h | 2026-08-31 08:00 A | 2026-08-31 11:00 A |  | 100% |  |  |  |  |  | start no earlier than 2026-08-31 08:00 | Дедов В | 2h | 2h |
| 1083 | 2.137.5 | Не работает блок тенов, заказать |  | 10min | 2026-09-01 09:00 A | 2026-09-01 09:10 A |  | 100% |  |  |  |  |  | start no earlier than 2026-09-01 08:00 | Зорькин В | 0.17h | 0.17h |
| 1084 | 2.137.6 | Контроль доставки |  | 5min | 2026-09-09 09:00 A | 2026-09-09 09:05 A |  | 100% |  |  |  |  |  | start no earlier than 2026-09-09 09:00 | Зорькин В | 0.08h | 0.08h |
| 1085 | 2.137.7 | замена блок тенов |  | 2h | 2026-09-19 09:00 | 2026-09-19 11:00 |  |  |  |  |  | 121.31d | 0d | start no earlier than 2026-09-19 09:00 | Дедов В | 2h |  |
| 1086 | 2.137.8 | заказать плату управления |  | 1d? | 2026-06-05 09:00 A | 2026-06-05 18:00 A |  | 100% |  |  |  |  |  | start no earlier than 2026-06-05 09:00 | Зорькин В | 8h | 8h |
| 1087 | 2.138 | замена задних подшипников на прекондиционере (посмотреть итальянские на складе) |  | 6h | 2026-05-26 09:00 A | 2026-05-26 16:00 A |  | 100% |  |  |  |  |  | start no earlier than 2026-05-26 09:00 | Тимофеев В; Некрасов А | 12h | 12h |
| 1088 | 2.139 | перемотать трубы скотчем серым и по низу стык улиток "загерметизировать" |  | 2h | 2026-05-25 08:00 A | 2026-05-25 11:00 A |  | 100% |  |  |  |  |  | start no earlier than 2026-05-25 08:00 | Макаревич А | 2h | 2h |

| ID | WBS | Task | Type | Duration | Start | Finish | Complete | Actual finish | Constraint | Resources | Work | Actual work |
| --- | --- | --- | --- | --- | --- | --- | --- | --- | --- | --- | --- | --- |
| 1089 | 2.140 | **изготовить мойка малая из нерж** |  | 0.5d | 2026-06-01 08:00 A | 2026-06-01 13:00 A | 100% |  |  | Макаревич А | 8h | 8h |
| 1090 | 2.140.1 | подключить мойку на месте (по телефону обсудим) |  | 4h | 2026-06-01 08:00 A | 2026-06-01 13:00 A | 100% |  | start no earlier than 2026-06-01 08:00 | Макаревич А | 4h | 4h |
| 1091 | 2.141 | **дополнительное освещение в зоне жиров** |  | 6.5d | 2026-05-26 09:00 A | 2026-06-01 13:00 | 100% | 2026-06-04 09:30 |  |  | 5h | 5h |
| 1092 | 2.141.1 | заказ светильников |  | 1h | 2026-05-26 09:00 A | 2026-05-26 10:00 A | 100% |  | start no earlier than 2026-05-26 09:00 | Шуранов Ю | 1h | 1h |
| 1093 | 2.141.2 | монтаж |  | 4h | 2026-06-01 09:00 A | 2026-06-01 13:00 A | 100% |  | start no earlier than 2026-06-01 09:00 | Макаревич А | 4h | 4h |
| 1094 | 2.141.3 | подключить к автомату на мойке |  | 0.5h | 2026-06-04 09:00 A | 2026-06-04 09:30 A | 100% |  | start no earlier than 2026-06-04 09:00 |  |  |  |
| 1095 | 2.142 | подключить пк мастеров через ИБП (согласовать с мастером 1 цеха) |  | 1h | 2026-05-25 09:00 A | 2026-05-25 10:00 A | 100% |  | start no earlier than 2026-05-25 08:00 | Шуранов Ю | 1h | 1h |
| 1096 | 2.143 | заменить помпу на термопоте в кухне |  | 1h | 2026-05-27 09:00 A | 2026-05-27 10:00 A | 100% |  | start no earlier than 2026-05-27 09:00 | Дедов В | 1h | 1h |
| 1097 | 2.144 | лопнул шланг от насосной станции до редуктора- заменить |  | 1h | 2026-05-25 08:00 A | 2026-05-25 10:00 A | 100% |  | start no earlier than 2026-05-25 08:00 | Макаревич А | 1h | 1h |
| 1098 | 2.145 | установить влагоотделитель на квадропак |  | 1h | 2026-05-25 08:00 A | 2026-05-25 10:00 A | 100% |  | start no earlier than 2026-05-25 08:00 | Дедов В | 1h | 1h |
| 1099 | 2.146 | закрепить монтажную коробку в коридоре до жировика слева, от кондиционера |  | 1h | 2026-05-22 09:00 A | 2026-05-22 10:00 A | 100% |  | start no earlier than 2026-05-22 09:00 | Бобренок В | 1h | 1h |
| 1100 | 2.147 | закрепить на доп. Клипсы трубу-воздух к стене за бестромом |  | 1h | 2026-05-23 09:00 A | 2026-05-25 10:00 A | 100% |  | start no earlier than 2026-05-23 09:00 | Бобренок В | 1h | 1h |
| 1101 | 2.148 | заменить сетку печки (находиться в слесарке) | manual | 3h | 2026-05-24 09:00 A | 2026-05-24 12:00 A | 100% |  | start no earlier than 2026-05-24 09:00 | Макаревич А | 3h | 3h |
| 1102 | 2.149 | уложить красиво и закрепить гофру от нории до красного смесителя | manual | 2h | 2026-05-24 09:00 A | 2026-05-24 11:00 A | 100% |  | start no earlier than 2026-05-24 09:00 | Макаревич А | 2h | 2h |
| 1103 | 2.150 | взять ножевой узел с желтого склада и фильеры, подготовить и передать во второй цех на экструдер |  | 1h | 2026-05-21 09:00 A | 2026-05-21 10:00 A | 100% |  | start no earlier than 2026-05-21 08:00 | Бундин В | 1h | 1h |
| 1104 | 2.151 | проверить все лотки на охладителе, чтобы не задевали сетку- если нужно поднять. |  | 1h | 2026-05-21 09:00 A | 2026-05-21 10:00 A | 100% |  | start no earlier than 2026-05-21 08:00 | Бундин В | 1h | 1h |
| 1105 | 2.152 | чистка парогенератора, если нужно замена электродов |  | 2h | 2026-05-21 08:00 A | 2026-05-21 11:00 A | 100% |  | start no earlier than 2026-05-21 08:00 | Тимофеев В | 2h | 2h |
| 1106 | 2.153 | чистка фильтра редуктора экструдера, проверка уровня масла |  | 1h | 2026-05-21 08:00 A | 2026-05-21 10:00 A | 100% |  | start no earlier than 2026-05-21 08:00 | Тимофеев В | 1h | 1h |
| 1107 | 2.154 | проверить пневмоцилиндры на встряхивателях квадропака |  | 1h | 2026-05-21 08:00 A | 2026-05-21 10:00 A | 100% |  | start no earlier than 2026-05-21 08:00 | Бобренок В | 1h | 1h |
| 1108 | 2.155 | проверка токов на печи, если просадка проверяем перемычки, тены |  | 1h | 2026-05-21 09:00 A | 2026-05-21 10:00 A | 100% |  | start no earlier than 2026-05-21 08:00 | Некрасов А | 1h | 1h |
| 1109 | 2.156 | коротит на баке жиров все проверить |  | 1h | 2026-05-21 09:00 A | 2026-05-21 10:00 A | 100% |  | start no earlier than 2026-05-21 08:00 |  |  |  |
| 1110 | 2.157 | в зоне фасовки сделать конструкцию, чтобы не выпадала макулатура |  | 6h | 2026-08-31 09:00 A | 2026-08-31 16:00 A | 100% |  | start no earlier than 2026-08-31 09:00 | Макаревич А | 6h | 6h |
| 1111 | 2.158 | закрепить доводчик на входной двери |  | 1h | 2026-05-23 09:00 A | 2026-05-25 10:00 A | 100% |  | start no earlier than 2026-05-23 09:00 | Бундин В | 1h | 1h |
| 1112 | 2.159 | установить розетку для палетооботчика на его колону |  | 2h | 2026-05-18 09:00 A | 2026-05-18 11:00 A | 100% |  | start no earlier than 2026-05-18 09:00 | Дедов В | 2h | 2h |

| ID | WBS | Task | Type | Duration | Start | Finish | Predecessors | Complete | Constraint | Resources | Work | Actual work |
| --- | --- | --- | --- | --- | --- | --- | --- | --- | --- | --- | --- | --- |
| 1113 | 2.160 | **ИБП установить на принтер SAVEMA** |  | 5.25d | 2026-05-19 09:00 A | 2026-05-26 11:00 A |  | 100% |  |  | 3.25h | 3.25h |
| 1114 | 2.160.1 | подбор и заявка ИБП |  | 1h | 2026-05-19 09:00 A | 2026-05-19 10:00 A |  | 100% | start no earlier than 2026-05-19 09:00 | Шуранов Ю | 1h | 1h |
| 1115 | 2.160.2 | контроль поставки |  | 15min | 2026-05-26 09:00 A | 2026-05-26 09:15 A |  | 100% | start no earlier than 2026-05-26 09:00 | Шуранов Ю | 0.25h | 0.25h |
| 1116 | 2.160.3 | монтаж и подключение в шкафу | manual | 2h | 2026-05-26 09:00 A | 2026-05-26 11:00 A | 1115 | 100% | start no earlier than 2026-05-26 09:00 | Дедов В | 2h | 2h |
| 1117 | 2.161 | **переместить на склад ЗИП палет сетка, зарядка АКБ штабелера** |  | 0.12d | 2026-06-01 09:00 A | 2026-06-01 10:00 A |  | 100% |  |  | 1h | 1h |
| 1118 | 2.161.1 | зарядку АКБ переместить в контейнер, она находится в мойке зона экструдера | manual | 1h | 2026-06-01 09:00 A | 2026-06-01 10:00 A |  | 100% | start no earlier than 2026-06-01 09:00 | Макаревич А | 1h | 1h |
| 1119 | 2.162 | **бестром замена линейный подшипник прижима красных ремней** |  | 24.5d | 2026-05-15 09:00 A | 2026-06-18 13:00 A |  | 100% |  |  | 5.25h | 5.25h |
| 1120 | 2.162.1 | заявка |  | 1h | 2026-05-15 09:00 A | 2026-05-15 10:00 A |  | 100% | start no earlier than 2026-05-15 09:00 | Зорькин В | 1h | 1h |
| 1121 | 2.162.2 | доставка контроль |  | 15min | 2026-05-27 10:00 A | 2026-05-27 10:15 A | 1120FS+10d | 100% | start no earlier than 2026-05-14 08:00 | Зорькин В | 0.25h | 0.25h |
| 1122 | 2.162.3 | замена |  | 4h | 2026-06-18 09:00 A | 2026-06-18 13:00 A | 1121 | 100% | start no earlier than 2026-06-18 09:00 | Тимофеев В | 4h | 4h |
| 1123 | 2.163 | осмотр цепи муфты редуктора экструдера |  | 1h | 2026-05-14 09:00 A | 2026-05-14 10:00 A |  | 100% | start no earlier than 2026-05-14 09:00 | Тимофеев В | 1h | 1h |
| 1124 | 2.164 | Линия 3 на жирах нужно поменять колеса на транспортёре, который идет на охладитель |  | 1h | 2026-05-14 09:00 A | 2026-05-14 10:00 A |  | 100% | start no earlier than 2026-05-14 09:00 | Макаревич А | 1h | 1h |
| 1125 | 2.165 | осмотр прекондиционер "звон" |  | 30min | 2026-05-14 09:00 A | 2026-05-14 09:30 A |  | 100% | start no earlier than 2026-05-14 09:00 | Тимофеев В | 0.5h | 0.5h |
| 1126 | 2.166 | **заменить гофра унитаз правый отсек** |  | 16.12d | 2026-05-13 09:00 A | 2026-06-04 10:00 A |  | 100% |  |  | 41.25h | 41.25h |
| 1127 | 2.166.1 | заявка гофра |  | 15min | 2026-05-13 09:00 A | 2026-05-13 09:15 A |  | 100% | start no earlier than 2026-05-13 09:00 | Зорькин В | 0.25h | 0.25h |
| 1128 | 2.166.2 | доставка |  | 5d | 2026-05-13 09:15 A | 2026-05-20 09:15 A | 1127 | 100% | start no earlier than 2026-05-12 08:00 | Карабанов | 40h | 40h |
| 1129 | 2.166.3 | замена |  | 1h | 2026-06-04 09:00 A | 2026-06-04 10:00 A | 1128 | 100% | start no earlier than 2026-06-04 09:00 | Бобренок В | 1h | 1h |
| 1130 | 2.167 | замена смазка шприц на экструдере |  | 30min | 2026-05-13 09:00 A | 2026-05-13 09:30 A |  | 100% | start no earlier than 2026-05-13 09:00 | Некрасов А | 0.5h | 0.5h |
| 1131 | 2.168 | замена передний подшипник + набивка прекондиционер |  | 1h | 2026-05-14 09:00 A | 2026-05-14 10:00 A |  | 100% | start no earlier than 2026-05-14 09:00 | Тимофеев В | 1h | 1h |
| 1132 | 2.169 | прикрутить лоток выше на 1 ярусе, задевает сетку со сторону редуктора |  | 1h | 2026-05-08 08:00 A | 2026-05-08 10:00 A |  | 100% | start no earlier than 2026-05-08 08:00 | Макаревич А | 1h | 1h |
| 1133 | 2.170 | взять шайбу у нас в кабинете и шлифануть одну сторону |  | 1h | 2026-05-08 09:00 A | 2026-05-08 10:00 A |  | 100% | start no earlier than 2026-05-08 09:00 | Макаревич А | 1h | 1h |
| 1134 | 2.171 | смотровое окно на загрузке прекондиционера установить |  | 4h | 2026-08-25 09:00 A | 2026-08-25 13:00 A |  | 100% | start no earlier than 2026-08-31 09:00 | Тимофеев В | 4h | 4h |
| 1135 | 2.172 | добавить воду в систему отопления зота охладитель |  | 1h | 2026-05-09 09:00 A | 2026-05-11 10:00 A |  | 100% | start no earlier than 2026-05-09 09:00 | Макаревич А | 1h | 1h |
| 1136 | 2.173 | монтаж сетки на палетообмотчике | manual | 4h | 2026-05-14 09:00 A | 2026-05-14 13:00 A |  | 100% | start no earlier than 2026-05-14 09:00 | Некрасов А; Труфанов А | 8h | 8h |
| 1137 | 2.174 | Собрать стул, находится в кабинете мастеров 2 цех |  | 1h | 2026-05-13 09:00 A | 2026-05-13 10:00 A |  | 100% | start no earlier than 2026-05-13 09:00 | Бундин В | 1h | 1h |

| ID | WBS | Task | Type | Duration | Start | Finish | Complete | Actual start | Actual finish | Constraint | Resources | Work | Actual work |
| --- | --- | --- | --- | --- | --- | --- | --- | --- | --- | --- | --- | --- | --- |
| 1138 | 2.175 | **взять у нас на складе инсектицидные светильники и повесить их во 2 цехе, где нет** |  | 1.12d | 2026-05-12 09:00 A | 2026-05-13 10:00 A | 100% |  |  |  |  | 3h | 3h |
| 1139 | 2.175.1 | ремонт |  | 2h | 2026-05-12 09:00 A | 2026-05-12 11:00 A | 100% |  |  | start no earlier than 2026-05-12 09:00 | Бундин В | 2h | 2h |
| 1140 | 2.175.2 | монтаж ламп / заполнить в журнал мастера |  | 1h | 2026-05-13 09:00 A | 2026-05-13 10:00 A | 100% |  |  | start no earlier than 2026-05-13 09:00 | Бундин В | 1h | 1h |
| 1141 | 2.176 | герметиком замазать гофру на унитазах (запах) | manual | 1h | 2026-05-07 08:00 A | 2026-05-07 09:00 A | 100% |  |  | start no earlier than 2026-05-07 08:00 | Бобренок В | 1h | 1h |
| 1142 | 2.177 | заменить фильтр на приточку 2 этаж |  | 1h | 2026-05-07 08:00 A | 2026-05-07 10:00 A | 100% |  |  | start no earlier than 2026-05-07 08:00 | Тимофеев В | 1h | 1h |
| 1143 | 2.178 | ревизия перемычек, тен на печи - замена |  | 4h | 2026-05-07 09:00 A | 2026-05-07 13:00 A | 100% |  |  | start no earlier than 2026-05-07 08:00 | Труфанов А | 4h | 4h |
| 1144 | 2.179 | **повесить на места светильники инсектицидные (замена ламп)** |  | 1d? | 2026-05-11 09:00 | 2026-05-11 18:00 | 100% | 2026-05-12 09:00 | 2026-05-12 11:00 |  |  | 2h | 2h |
| 1145 | 2.179.1 | **заказать досели** |  | 0.25d | 2026-05-12 09:00 A | 2026-05-12 11:00 A | 100% |  |  |  |  | 2h | 2h |
| 1146 | 2.179.1.1 | ремонт не рабочих светильников |  | 2h | 2026-05-12 09:00 A | 2026-05-12 11:00 A | 100% |  |  | start no earlier than 2026-05-12 09:00 | Бундин В | 2h | 2h |
| 1147 | 2.180 | уложить кабель в гофре вдоль экструдера в лоток |  | 2h | 2026-05-04 09:00 A | 2026-05-04 11:00 A | 100% |  |  | start no earlier than 2026-05-04 08:00 | Бундин В | 2h | 2h |
| 1148 | 2.181 | **подготовить ТРМ для парогенератора цех 2** |  | 0d | 2026-05-16 09:00 A | 2026-05-16 10:00 A | 100% |  |  |  | Дедов В | 1h | 1h |
| 1149 | 2.181.1 | установить на остановке ТРМ (который сняли отдать Дедову для восстановления) восстановить кнопку | manual | 1h | 2026-05-16 09:00 A | 2026-05-16 10:00 A | 100% |  |  | start no earlier than 2026-05-16 09:00 | Дедов В | 1h | 1h |
| 1150 | 2.182 | повесить светильники 3шт. |  | 1h | 2026-05-04 09:00 A | 2026-05-04 10:00 A | 100% |  |  | start no earlier than 2026-05-04 08:00 | Труфанов А | 1h | 1h |
| 1151 | 2.183 | монтаж свет на фасовке |  | 8h | 2026-05-05 09:00 A | 2026-05-05 18:00 A | 100% |  |  | start no earlier than 2026-05-05 09:00 | Тимофеев В; Труфанов А | 15h | 15h |
| 1152 | 2.184 | заменить кулер в ШУ на жирах |  | 1h | 2026-04-29 08:00 A | 2026-04-29 10:00 A | 100% |  |  | start no earlier than 2026-04-29 08:00 | Дедов В | 1h | 1h |
| 1153 | 2.185 | заменить 3х ходовой кран и фитинги с гайкой на жирах |  | 1h | 2026-04-29 09:00 A | 2026-04-29 10:00 A | 100% |  |  | start no earlier than 2026-04-30 09:00 | Дедов В | 1h | 1h |
| 1154 | 2.186 | закрепить на подножке резинку на штабелере зона экструдера (можно на саморез/клепки) |  | 1h | 2026-04-29 08:00 A | 2026-04-29 10:00 A | 100% |  |  | start no earlier than 2026-04-29 08:00 | Дедов В | 1h | 1h |
| 1155 | 2.187 | **заменить сетку для печи из зип** |  | 0.38d | 2026-05-05 09:00 A | 2026-05-05 12:00 A | 100% |  |  |  |  | 5h | 5h |
| 1156 | 2.187.1 | **заменить сетку , которую сняли с печи** |  | 3h | 2026-05-05 09:00 A | 2026-05-05 12:00 A | 100% |  |  |  | Бундин В | 5h | 5h |
| 1157 | 2.187.1.1 | ремонт сетки |  | 2h | 2026-05-05 09:00 A | 2026-05-05 11:00 A | 100% |  |  | start no earlier than 2026-05-05 09:00 | Бобренок В | 2h | 2h |
| 1158 | 2.188 | под норией сыпит сырье устранить |  | 4h | 2026-04-30 09:00 A | 2026-04-30 13:00 A | 100% |  |  | start no earlier than 2026-04-30 09:00 | Труфанов А; Некрасов А | 8h | 8h |
| 1159 | 2.189 | устранить течь, сброс пара под прекондиционером |  | 1h | 2026-05-01 09:00 A | 2026-05-01 10:00 A | 100% |  |  | start no earlier than 2026-05-01 09:00 | Дедов В | 1h | 1h |
| 1160 | 2.190 | устранить течь редуктор прекондиционера |  | 5h | 2026-04-29 09:00 A | 2026-04-29 15:00 A | 100% |  |  | start no earlier than 2026-04-29 08:00 | Некрасов А; Труфанов А | 10h | 10h |
| 1161 | 2.191 | почистить фильтр на поломоечной машинке |  | 1h | 2026-04-29 09:00 A | 2026-04-29 10:00 A | 100% |  |  | start no earlier than 2026-04-29 09:00 | Тимофеев В | 1h | 1h |
| 1162 | 2.192 | Полное ТО квадропак (чистка тен, смазка штоков пневмоцилиндров, шприцевание подшипников) |  | 3h | 2026-04-28 09:00 A | 2026-04-28 12:00 A | 100% |  |  | start no earlier than 2026-04-28 09:00 | Тимофеев В | 3h | 3h |
| 1163 | 2.193 | Полное ТО бестром (чистка тен, смазка штоков пневмоцилиндров, шприцевание подшипников) |  | 2h | 2026-04-28 09:00 A | 2026-04-28 11:00 A | 100% |  |  | start no earlier than 2026-04-28 09:00 | Тимофеев В | 2h | 2h |
| 1164 | 2.194 | демонтаж инсектютерной ламп на очистку / продуть |  | 1h | 2026-04-27 08:00 A | 2026-04-27 10:00 A | 100% |  |  | start no earlier than 2026-04-27 08:00 | Тимофеев В | 1h | 1h |
| 1165 | 2.195 | ремонт инсектецидных ламп взять у Мастера в каб. (проверить контакты соединения самих лам, дросели). 3 исправно/1 сломан дросель |  | 1h | 2026-04-29 09:00 A | 2026-04-29 10:00 A | 100% |  |  | start no earlier than 2026-04-29 09:00 | Дедов В | 1h | 1h |

| ID | WBS | Task | Type | Duration | Start | Finish | Predecessors | Complete | Remaining | Actual start | Total slack | Constraint | Resources | Work | Actual work |
| --- | --- | --- | --- | --- | --- | --- | --- | --- | --- | --- | --- | --- | --- | --- | --- |
| 1166 | 2.196 | **замена дроселя инсекцидной лампы** |  | 17.38d | 2026-04-30 09:00 A | 2026-05-25 12:00 A |  | 100% |  |  |  |  |  | 84.25h | 84.25h |
| 1167 | 2.196.1 | заявка |  | 15min | 2026-04-30 09:00 A | 2026-04-30 09:15 A |  | 100% |  |  |  | start no earlier than 2026-04-30 08:00 | Шуранов Ю | 0.25h | 0.25h |
| 1168 | 2.196.2 | замена |  | 3h | 2026-05-25 08:00 A | 2026-05-25 12:00 A |  | 100% |  |  |  | start no earlier than 2026-05-25 08:00 | Дедов В | 3h | 3h |
| 1169 | 2.196.3 | доставка |  | 10d | 2026-05-04 09:00 A | 2026-05-18 18:00 A | 1167 | 100% |  |  |  | start no earlier than 2026-05-04 09:00 | Карабанов | 80h | 80h |
| 1170 | 2.196.4 | замена |  | 1h | 2026-05-12 09:00 A | 2026-05-12 10:00 A |  | 100% |  |  |  | start no earlier than 2026-05-12 09:00 | Бундин В | 1h | 1h |
| 1171 | 2.197 | поликарбанат в зоне седла жировика оторвался, ремонт |  | 1h | 2026-04-30 09:00 A | 2026-04-30 10:00 A |  | 100% |  |  |  | start no earlier than 2026-04-30 09:00 | Бундин В | 1h | 1h |
| 1172 | 2.198 | зачистить и покрасить решетку на входе в 2 ц. |  | 4h | 2026-04-28 09:00 A | 2026-04-28 13:00 A |  | 100% |  |  |  | start no earlier than 2026-04-28 09:00 | Дворник | 4h | 4h |
| 1173 | 2.199 | поднять лотки на 10 мм на охладителе со стороны фасовки (видео вышлю) |  | 1h | 2026-04-24 09:00 A | 2026-04-24 10:00 A |  | 100% |  |  |  | start no earlier than 2026-04-24 08:00 | Бундин В | 1h | 1h |
| 1174 | 2.200 | добавить в систему отопления котла в мойке и в охладителе воды | manual | 2h | 2026-04-24 09:00 A | 2026-04-24 11:00 A |  | 100% |  |  |  | start no earlier than 2026-04-24 09:00 | Бундин В | 2h | 2h |
| 1175 | 2.201 | на углы установить отбойники выход с зоны экструдера |  | 2h | 2026-04-23 09:00 A | 2026-04-23 11:00 A |  | 100% |  |  |  | start no earlier than 2026-04-23 08:00 | Бундин В | 2h | 2h |
| 1176 | 2.202 | сделать ТО Бестром (чистка тен и т.д.) |  | 2h | 2026-04-22 08:00 A | 2026-04-22 11:00 A |  | 100% |  |  |  | start no earlier than 2026-04-22 08:00 | Дедов В | 2h | 2h |
| 1177 | 2.203 | собрать кабинку в мужской раздевалке, она там стоит в коробке |  | 1h | 2026-04-23 09:00 A | 2026-04-23 10:00 A |  | 100% |  |  |  | start no earlier than 2026-04-23 09:00 | Дедов В | 1h | 1h |
| 1178 | 2.204 | заменить датчик переполнения на загрузке с синего бункера, на складе взять |  | 1h | 2026-04-29 09:00 A | 2026-04-29 10:00 A |  | 100% |  |  |  | start no earlier than 2026-04-29 09:00 | Дедов В | 1h | 1h |
| 1179 | 2.205 | **включить все исектицидные светильники по цеху, проверить есть ли напряжение в розетках** |  | 0.12d | 2026-04-23 09:00 A | 2026-04-23 10:00 A |  | 100% |  |  |  |  | Дедов В | 2h | 2h |
| 1180 | 2.205.1 | проверить напряжение в розетке светильника на фасовке |  | 1h | 2026-04-23 09:00 A | 2026-04-23 10:00 A |  | 100% |  |  |  | start no earlier than 2026-04-23 08:00 | Бундин В | 1h | 1h |
| 1181 | 2.206 | **установить кольцо "вентури" в фильеру** |  | 2.38d? | 2026-05-04 09:00 | 2026-05-06 12:00 |  | 78% | 0.53d? | 2026-04-27 09:00 |  |  |  | 4.5h | 3.5h |
| 1182 | 2.206.1 | определить диаметр отверстия кольца |  | 1h | 2026-04-27 09:00 A | 2026-04-27 10:00 A |  | 100% |  |  |  | start no earlier than 2026-04-27 09:00 | Зорькин В | 1h | 1h |
| 1183 | 2.206.2 | заявка на изготовление |  | 1h | 2026-04-28 10:00 A | 2026-04-28 11:00 A | 1182FS+1d | 100% |  |  |  | start no earlier than 2026-04-20 08:00 | Зорькин В | 1h | 1h |
| 1184 | 2.206.3 | контроль |  | 1h | 2026-05-04 09:00 A | 2026-05-04 10:00 A | 1183FS+1d | 100% |  |  |  | start no earlier than 2026-05-04 09:00 | Зорькин В | 1h | 1h |
| 1185 | 2.206.4 | заявка на выжечь проставку лдя кольца |  | 30min | 2026-07-15 09:00 A | 2026-07-15 09:30 A |  | 100% |  |  |  | start no earlier than 2026-07-15 09:00 | Зорькин В | 0.5h | 0.5h |
| 1186 | 2.206.5 | контроль доставки | milestone | 0d | 2026-07-22 09:30 A | 2026-07-22 09:30 A | 1185FS+5d | 100% |  |  |  | start no earlier than 2026-07-15 09:00 | Зорькин В |  |  |
| 1187 | 2.206.6 | провести тест |  | 1h | 2026-09-10 09:00 | 2026-09-10 10:00 |  |  |  |  | 136.47d | start no earlier than 2026-09-10 09:00 | Зорькин В | 1h |  |
| 1188 | 2.207 | замена фильтр вода подача в накопитель |  | 1h | 2026-04-21 09:00 A | 2026-04-21 10:00 A |  | 100% |  |  |  | start no earlier than 2026-04-21 09:00 | Тимофеев В | 1h | 1h |
| 1189 | 2.208 | замена потускневших ламп в инсекютере. Мастеру сообщить кол-во. б/у складывать в коробку |  | 2h | 2026-05-04 09:00 A | 2026-05-04 11:00 A |  | 100% |  |  |  | start no earlier than 2026-05-04 09:00 | Макаревич А | 2h | 2h |

| ID | WBS | Task | Type | Duration | Start | Finish | Predecessors | Complete | Actual start | Actual finish | Constraint | Resources | Work | Actual work |
| --- | --- | --- | --- | --- | --- | --- | --- | --- | --- | --- | --- | --- | --- | --- |
| 1190 | 2.209 | **ограждение палетообмотчика** |  | 19.25d | 2026-04-17 08:00 A | 2026-05-14 11:00 A |  | 100% |  |  |  |  | 190.5h | 190.5h |
| 1191 | 2.209.1 | **подготовка и монтаж рамы** |  | 6.75d | 2026-04-17 08:00 A | 2026-04-27 16:00 A |  | 100% |  |  |  |  | 24h | 24h |
| 1192 | 2.209.1.1 | изготовить ограждения для палетообмотчика (размеры обговорим) |  | 10h | 2026-04-17 08:00 A | 2026-04-20 11:00 A |  | 100% |  |  | start no earlier than 2026-04-17 08:00 | Макаревич А | 10h | 10h |
| 1193 | 2.209.1.2 | очистка, покраска рам ограждения. Быстросохн грунт-эмаль по ржавчине 3в1. |  | 4h | 2026-04-20 08:00 A | 2026-04-20 13:00 A |  | 100% |  |  | start no earlier than 2026-04-20 08:00 | Макаревич А | 4h | 4h |
| 1194 | 2.209.1.3 | монтаж рамы ограждения |  | 4h | 2026-04-27 09:00 A | 2026-04-27 13:00 A | 1193 | 100% |  |  | start no earlier than 2026-04-27 09:00 | Тимофеев В | 4h | 4h |
| 1195 | 2.209.1.4 | приварить пластины под стойки ограждения и закрепить к полу, чтобы оператор был вне зоны опасности) |  | 6h | 2026-04-25 09:00 A | 2026-04-27 16:00 A |  | 100% |  |  | start no earlier than 2026-04-25 09:00 | Макаревич А | 6h | 6h |
| 1196 | 2.209.2 | **обклеить рамы лентой** |  | 17.25d | 2026-04-21 09:00 A | 2026-05-14 11:00 A |  | 100% |  |  |  |  | 82.25h | 82.25h |
| 1197 | 2.209.2.1 | заявка клейка лента сигнальная черно-желтая / негабарит |  | 15min | 2026-04-21 09:00 A | 2026-04-21 09:15 A |  | 100% |  |  | start no earlier than 2026-04-21 09:00 | Зорькин В | 0.25h | 0.25h |
| 1198 | 2.209.2.2 | доставка |  | 10d | 2026-04-21 09:15 A | 2026-05-05 09:15 A | 1197 | 100% |  |  | start no earlier than 2026-04-20 08:00 | Карабанов | 80h | 80h |
| 1199 | 2.209.2.3 | монтаж ленты черно-желтой |  | 2h | 2026-05-14 09:00 A | 2026-05-14 11:00 A | 1198 | 100% |  |  | start no earlier than 2026-05-14 09:00 | Бобренок В | 2h | 2h |
| 1200 | 2.209.3 | **монтаж сетки на раму** |  | 10.03d | 2026-04-21 09:00 A | 2026-05-05 09:15 A |  | 100% |  |  |  |  | 84.25h | 84.25h |
| 1201 | 2.209.3.1 | заявка сетка для ограждения |  | 15min | 2026-04-21 09:00 A | 2026-04-21 09:15 A |  | 100% |  |  | start no earlier than 2026-04-21 09:00 | Зорькин В | 0.25h | 0.25h |
| 1202 | 2.209.3.2 | доставка сетка |  | 10d | 2026-04-21 09:15 A | 2026-05-05 09:15 A | 1201 | 100% |  |  | start no earlier than 2026-04-20 08:00 | Карабанов | 80h | 80h |
| 1203 | 2.209.3.3 | монтаж сетка |  | 4h | 2026-05-04 09:15 A | 2026-05-04 14:15 A | 1202 | 100% |  |  | start no earlier than 2026-04-20 08:00 | Некрасов А | 4h | 4h |
| 1204 | 2.210 | воздухозабоник циклона отпилить и вернуть как было раньше |  | 1h | 2026-04-28 09:00 A | 2026-04-28 10:00 A |  | 100% |  |  | start no earlier than 2026-04-28 09:00 | Тимофеев В | 1h | 1h |
| 1205 | 2.211 | проверка всех гидроаккумуляторов парогенератор, в вент комнате и отопительные |  | 2h | 2026-04-17 09:00 A | 2026-04-17 11:00 A |  | 100% |  |  | start no earlier than 2026-04-17 08:00 |  |  |  |
| 1206 | 2.212 | сборка полетообмотчика на фасовке |  | 1h | 2026-04-16 09:00 A | 2026-04-16 10:00 A |  | 100% |  |  | start no earlier than 2026-04-16 09:00 | Бобренок В | 1h | 1h |
| 1207 | 2.213 | заменить ремень на охладителе |  | 1h | 2026-04-15 09:00 A | 2026-04-15 10:00 A |  | 100% |  |  | start no earlier than 2026-04-15 08:00 | Некрасов А | 1h | 1h |
| 1208 | 2.214 | оторвался контроллер мониторинга на ШУ экструдера |  | 1h | 2026-04-15 09:00 A | 2026-04-15 10:00 A |  | 100% |  |  | start no earlier than 2026-04-15 08:00 | Некрасов А | 1h | 1h |
| 1209 | 2.215 | **сделать горловину на быстросъемах прекондиционер** |  | 3.88d? | 2026-04-16 09:00 | 2026-04-21 17:00 |  | 100% | 2026-08-20 09:00 | 2026-09-14 12:00 |  |  | 23h | 23h |
| 1210 | 2.215.1 | заказать защелки |  | 1d? | 2026-08-31 09:00 A | 2026-08-31 18:00 A |  | 100% |  |  | start no earlier than 2026-08-31 09:00 | Шуранов Ю | 8h | 8h |
| 1211 | 2.215.2 | Удлинить носик, чтоб можно было вешать мешок, куда будет ссыпаться мука |  | 3h | 2026-09-14 09:00 A | 2026-09-14 12:00 A |  | 100% |  |  | start no earlier than 2026-09-14 08:00 | Макаревич А | 3h | 3h |
| 1212 | 2.215.3 | изготовить установить люк для чистки с обр стороны как в 3ц (шапочка) |  | 4h | 2026-09-12 09:00 A | 2026-09-12 13:00 A |  | 100% |  |  | start no earlier than 2026-09-12 09:00 | Макаревич А | 4h | 4h |
| 1213 | 2.215.4 | установка |  | 1d? | 2026-08-20 09:00 A | 2026-08-20 18:00 A |  | 100% |  |  | start no earlier than 2026-09-02 09:00 | Тимофеев В | 8h | 8h |
| 1214 | 2.216 | перенести светильник квадропака (на край мезонина) |  | 2h | 2026-04-13 09:00 A | 2026-04-13 11:00 A |  | 100% |  |  | start no earlier than 2026-04-13 09:00 | Труфанов А | 2h | 2h |
| 1215 | 2.217 | сделать или мусоросборник на лотке выхода экструдера, или обратный лоток в сторону охдадителя (обсудим по телефону) |  | 4h | 2026-08-31 09:00 A | 2026-08-31 13:00 A |  | 100% |  |  | start no earlier than 2026-08-31 09:00 | Макаревич А | 4h | 4h |
| 1216 | 2.218 | слить конденсат с компрессора, продуть радиаторы, чистка фильтров | manual | 2h | 2026-04-12 09:00 A | 2026-04-12 11:00 A |  | 100% |  |  | start no earlier than 2026-04-12 09:00 | Труфанов А | 2h | 2h |
| 1217 | 2.219 | добавить в систему отопления воды (зона экструдера, вход в мойку) | manual | 2h | 2026-04-12 09:00 A | 2026-04-12 11:00 A |  | 100% |  |  | start no earlier than 2026-04-12 09:00 | Труфанов А | 2h | 2h |
| 1218 | 2.220 | починить стул Шелепову (выстучать середину и посадить на хомут) |  | 1h | 2026-04-11 09:00 A | 2026-04-13 10:00 A |  | 100% |  |  | start no earlier than 2026-04-11 09:00 | Труфанов А | 1h | 1h |
| 1219 | 2.221 | не работает вентилятор третий справа, плохой контакт- прикрутить |  | 1h | 2026-04-10 08:00 A | 2026-04-10 10:00 A |  | 100% |  |  | start no earlier than 2026-04-10 08:00 | Бобренок В | 1h | 1h |
| 1220 | 2.222 | взять канистру со склада и сделать подачу снизу, взять сгон с канистры 2 линии (канистру я видел в гидрализатной 1 ц.) |  | 1h | 2026-04-26 09:00 A | 2026-04-27 10:00 A |  | 100% |  |  | start no earlier than 2026-04-26 09:00 | Макаревич А | 1h | 1h |
| 1221 | 2.223 | сделать лоток под канистру рыбий жир - подача в прекондиционер |  | 3h | 2026-04-11 09:00 A | 2026-04-13 12:00 A |  | 100% |  |  | start no earlier than 2026-04-11 09:00 | Макаревич А | 3h | 3h |
| 1222 | 2.224 | перескочила цепь на 2ом ярусе охладителя -поправить |  | 1h | 2026-04-10 08:00 A | 2026-04-10 10:00 A |  | 100% |  |  | start no earlier than 2026-04-10 08:00 | Макаревич А | 1h | 1h |

| ID | WBS | Task | Type | Duration | Start | Finish | Predecessors | Complete | Remaining | Total slack | Constraint | Resources | Work | Actual work |
| --- | --- | --- | --- | --- | --- | --- | --- | --- | --- | --- | --- | --- | --- | --- |
| 1223 | 2.225 | **установка фосунок - подача жира 2 линия** |  | 5d | 2026-04-24 09:00 A | 2026-04-30 18:00 A |  | 100% |  |  |  |  | 8.42h | 8.42h |
| 1224 | 2.225.1 | заявка краны 1/2 |  | 15min | 2026-04-24 09:00 A | 2026-04-24 09:15 A |  | 100% |  |  | start no earlier than 2026-04-24 08:00 | Зорькин В | 0.25h | 0.25h |
| 1225 | 2.225.2 | доставка контроль |  | 10min | 2026-04-30 09:15 A | 2026-04-30 09:25 A | 1224FS+5d | 100% |  |  | start no earlier than 2026-04-24 08:00 | Зорькин В | 0.17h | 0.17h |
| 1226 | 2.225.3 | сборка кронштейн для фильтров + счетчик |  | 4h | 2026-04-30 09:25 A | 2026-04-30 14:25 A | 1225 | 100% |  |  | start no earlier than 2026-04-24 08:00 | Тимофеев В | 4h | 4h |
| 1227 | 2.225.4 | монтаж на линию фильтры + кронштейн + форсунка |  | 4h | 2026-04-30 13:25 A | 2026-04-30 18:00 A | 1226 | 100% |  |  | start no earlier than 2026-04-24 08:00 | Тимофеев В | 4h | 4h |
| 1228 | 2.226 | вывести на синий склад старые цепи от печи зона навесок |  | 2h | 2026-05-22 09:00 A | 2026-05-22 11:00 A |  | 100% |  |  | start no earlier than 2026-04-09 08:00 | Тимофеев В | 2h | 2h |
| 1229 | 2.227 | прикрутить уголок снизу выхода охладителя, забивается кормом (фото скину) |  | 1h | 2026-04-08 09:00 A | 2026-04-08 10:00 A |  | 100% |  |  | start no earlier than 2026-04-08 08:00 | Бундин В | 1h | 1h |
| 1230 | 2.228 | закрыть шибер кондиционера над жировиком |  | 1h | 2026-04-09 09:00 A | 2026-04-09 10:00 A |  | 100% |  |  | start no earlier than 2026-04-09 09:00 | Бобренок В | 1h | 1h |
| 1231 | 2.229 | прикрутить оргстекло в аквариуме где забрасывают навески в смеситель |  | 1h | 2026-04-08 09:00 A | 2026-04-08 10:00 A |  | 100% |  |  | start no earlier than 2026-04-08 09:00 | Бундин В | 1h | 1h |
| 1232 | 2.230 | ревизия двигатель, контакты ножевого узла |  | 1h | 2026-04-09 09:00 A | 2026-04-09 10:00 A |  | 100% |  |  | start no earlier than 2026-04-09 09:00 | Тимофеев В | 1h | 1h |
| 1233 | 2.231 | земена сеток печи |  | 2h | 2026-05-04 09:00 A | 2026-05-04 11:00 A |  | 100% |  |  | start no earlier than 2026-05-04 09:00 | Макаревич А; Некрасов А; Тимофеев В | 4h | 4h |
| 1234 | 2.232 | получить метал-лоток 100х50, закрепить слева от двери выхода с зоны экструдера и уложить все провода | manual | 2h | 2026-04-11 09:00 A | 2026-04-11 11:00 A |  | 100% |  |  |  | Труфанов А | 2h | 2h |
| 1235 | 2.233 | получить аллюминевый скотч- замотать стыки циклона, улитки печек, место рычага шибера улитки | manual | 2h | 2026-04-05 09:00 A | 2026-04-05 11:00 A |  | 100% |  |  | start no earlier than 2026-04-05 09:00 | Труфанов А | 2h | 2h |
| 1236 | 2.234 | **установить водоподготовку на парогенератор** |  | 141d? | 2026-04-08 09:00 A | 2026-10-09 18:00 |  | 3% | 137.19d? | 107.59d |  |  | 17.25h | 0.25h |
| 1237 | 2.234.1 | планирование монтажа |  | 1h | 2026-10-05 09:00 | 2026-10-05 10:00 |  |  |  | 112.47d | start no earlier than 2026-10-05 09:00 | Домоводов К | 1h |  |
| 1238 | 2.234.2 | запрос КП | milestone | 0min | 2026-04-08 09:00 A | 2026-04-08 09:00 A |  | 100% |  |  | start no earlier than 2026-04-08 09:00 | Зорькин В |  |  |
| 1239 | 2.234.3 | решение о покупке | milestone | 0d | 2026-04-08 18:00 A | 2026-04-08 18:00 A | 1238FS+1d | 100% |  |  | start no earlier than 2026-04-03 08:00 | Домоводов К |  |  |
| 1240 | 2.234.4 | контроль поставки |  | 15min | 2026-04-27 09:00 A | 2026-04-27 09:15 A |  | 100% |  |  | start no earlier than 2026-04-27 09:00 | Зорькин В | 0.25h | 0.25h |
| 1241 | 2.234.5 | монтаж (установка) |  | 1d? | 2026-10-09 09:00 | 2026-10-09 18:00 |  |  |  | 107.59d | start no earlier than 2026-10-09 09:00 | Тимофеев В; Некрасов А | 16h |  |
| 1242 | 2.235 | **изготовить сетку перед фильерой экструдера от костей** |  | 11d | 2026-04-17 09:00 A | 2026-05-01 18:00 A |  | 100% |  |  |  |  | 83.25h | 83.25h |
| 1243 | 2.235.1 | составить чертеж |  | 2h | 2026-04-17 09:00 A | 2026-04-17 11:00 A |  | 100% |  |  | start no earlier than 2026-04-17 09:00 | Зорькин В | 2h | 2h |
| 1244 | 2.235.2 | разместить заказ |  | 1h | 2026-04-18 11:00 A | 2026-04-20 10:00 A | 1243FS+1d | 100% |  |  | start no earlier than 2026-04-03 08:00 | Зорькин В | 1h | 1h |
| 1245 | 2.235.3 | изготовление |  | 10d | 2026-04-18 12:00 A | 2026-05-01 18:00 A | 1244 | 100% |  |  | start no earlier than 2026-04-03 08:00 | Подрядчик | 80h | 80h |
| 1246 | 2.235.4 | контроль | milestone | 0d | 2026-04-30 12:00 A | 2026-04-30 12:00 A | 1245 | 100% |  |  | start no earlier than 2026-04-03 08:00 | Зорькин В |  |  |
| 1247 | 2.235.5 | орг забрать |  | 15min | 2026-05-01 12:00 A | 2026-05-01 12:15 A | 1246FS+1d | 100% |  |  | start no earlier than 2026-04-03 08:00 | Зорькин В | 0.25h | 0.25h |

| ID | WBS | Task | Type | Duration | Start | Finish | Predecessors | Complete | Actual start | Actual finish | Constraint | Resources | Work | Actual work |
| --- | --- | --- | --- | --- | --- | --- | --- | --- | --- | --- | --- | --- | --- | --- |
| 1248 | 2.236 | **вешалка для дамских сумочек в тамбур при надевании бахил** |  | 13.25d | 2026-05-04 09:00 | 2026-05-18 11:00 |  | 100% | 2026-04-17 09:00 | 2026-06-15 10:00 |  |  | 82h | 82h |
| 1249 | 2.236.1 | заявка |  | 1h | 2026-04-17 09:00 A | 2026-04-17 10:00 A |  | 100% |  |  | start no earlier than 2026-04-17 09:00 | Зорькин В | 1h | 1h |
| 1250 | 2.236.2 | доставка |  | 10d | 2026-04-17 10:00 A | 2026-05-01 10:00 A | 1249 | 100% |  |  | start no earlier than 2026-04-02 08:00 | Карабанов | 80h | 80h |
| 1251 | 2.236.3 | монтаж |  | 1h | 2026-06-13 09:00 A | 2026-06-15 10:00 A | 1250 | 100% |  |  | start no earlier than 2026-06-13 09:00 | Бобренок В | 1h | 1h |
| 1252 | 2.237 | Врезка фитинга 1/2х12мм в дверку прекондиционера 2 цех (созвон с Зорькиным) |  | 30min | 2026-04-09 09:00 A | 2026-04-09 09:30 A |  | 100% |  |  | start no earlier than 2026-04-09 09:00 | Тимофеев В | 0.5h | 0.5h |
| 1253 | 2.238 | проверить контур управления насосом ПГ |  | 1h | 2026-04-02 09:00 A | 2026-04-02 10:00 A |  | 100% |  |  | start no earlier than 2026-04-02 09:00 | Тимофеев В | 1h | 1h |
| 1254 | 2.239 | замена электродной группы или чистка до металла электродов |  | 1h | 2026-04-16 09:00 A | 2026-04-16 10:00 A |  | 100% |  |  | start no earlier than 2026-04-16 09:00 | Макаревич А | 1h | 1h |
| 1255 | 2.240 | закрепить шкаф управления приточной вентиляцией |  | 30min | 2026-04-01 08:00 A | 2026-04-01 09:30 A |  | 100% |  |  | start no earlier than 2026-04-01 08:00 | Бобренок В | 0.5h | 0.5h |
| 1256 | 2.241 | установить пневмо пистолеты на охладители с длинным носиком (у мастеров) |  | 1h | 2026-04-01 08:00 A | 2026-04-01 10:00 A |  | 100% |  |  | start no earlier than 2026-04-01 08:00 | Бобренок В | 1h | 1h |
| 1257 | 2.242 | утечка группа безопасности котел склад навесок устранить |  | 30min | 2026-03-31 08:00 A | 2026-03-31 09:30 A |  | 100% |  |  | start no earlier than 2026-03-31 08:00 | Бобренок В | 0.5h | 0.5h |
| 1258 | 2.243 | закрепить две трубы подачи воздуха в охладителе, пневмо шланг подачи в улитку крепим к стене |  | 2h | 2026-03-27 09:00 A | 2026-03-27 11:00 A |  | 100% |  |  | start no earlier than 2026-03-27 08:00 | Труфанов А | 2h | 2h |
| 1259 | 2.244 | изготовить 2 лотка 700х400х50 мм из нерж под транспортерную ленту транспортер №1 и №2 |  | 6h | 2026-04-04 09:00 A | 2026-04-06 16:00 A |  | 100% |  |  | start no earlier than 2026-04-04 09:00 | Макаревич А | 6h | 6h |
| 1260 | 2.245 | открутить вилку-розетку возле насоса подачи жиров в экструдер |  | 1h | 2026-04-01 09:00 A | 2026-04-01 10:00 A |  | 100% |  |  | start no earlier than 2026-04-01 09:00 | Бобренок В | 1h | 1h |
| 1261 | 2.246 | прикруть кусок металлопрофиля ,чтобы заделать отверстие куда проходит труба отопления (зона где привозят навески) фото скину | manual | 1h | 2026-03-29 09:00 A | 2026-03-29 10:00 A |  | 100% |  |  | start no earlier than 2026-03-29 09:00 | Бундин В | 1h | 1h |
| 1262 | 2.247 | **замена ленты нория** |  | 4.5d | 2026-03-27 08:00 A | 2026-04-02 13:00 A |  | 100% |  |  |  |  | 39.5h | 39.5h |
| 1263 | 2.247.1 | получить материал весь | manual | 30min | 2026-03-29 09:00 A | 2026-03-29 09:30 A |  | 100% |  |  | start no earlier than 2026-03-29 09:00 | Тимофеев В | 0.5h | 0.5h |
| 1264 | 2.247.2 | подготовка кондуктора |  | 2h | 2026-03-27 08:00 A | 2026-03-27 11:00 A |  | 100% |  |  | start no earlier than 2026-03-27 08:00 | Некрасов А; Тимофеев В | 4h | 4h |
| 1265 | 2.247.3 | подготовить к установке норийную ленту, ковши, болты |  | 15h | 2026-03-28 09:00 A | 2026-03-31 17:00 A |  | 100% |  |  | start no earlier than 2026-03-28 09:00 | Дедов В | 15h | 15h |
| 1266 | 2.247.4 | подготовка крепления лебедки для затягивания ленты |  | 4h | 2026-03-31 09:00 A | 2026-03-31 13:00 A |  | 100% |  |  | start no earlier than 2026-03-31 09:00 | Труфанов А; Некрасов А | 8h | 8h |
| 1267 | 2.247.5 | замена ленты |  | 4h | 2026-04-02 09:00 A | 2026-04-02 13:00 A |  | 100% |  |  | start no earlier than 2026-04-02 09:00 | Некрасов А; Макаревич А; Тимофеев В | 12h | 12h |
| 1268 | 2.248 | закрепить гофру на трос -рефрежераторы на территории |  | 1h | 2026-03-27 09:00 A | 2026-03-27 10:00 A |  | 100% |  |  | start no earlier than 2026-03-27 09:00 | Некрасов А | 1h | 1h |
| 1269 | 2.249 | монтаж розетки до канистры с жиром для подачи в экструдер (подключение весов) |  | 2h | 2026-03-26 09:00 A | 2026-03-26 11:00 A |  | 100% |  |  | start no earlier than 2026-03-26 09:00 | Дедов В | 2h | 2h |
| 1270 | 2.250 | заделать щели / маршпуты крыс . Зона хранения навесок (закрутить профлист и запенить отверстие под трубу) |  | 1h | 2026-03-26 09:00 A | 2026-03-26 10:00 A |  | 100% |  |  | start no earlier than 2026-03-26 09:00 | Некрасов А | 1h | 1h |
| 1271 | 2.251 | оперативная замена шнеков |  | 6h | 2026-03-23 09:00 A | 2026-03-23 16:00 A |  | 100% |  |  | start no earlier than 2026-03-23 09:00 | Бобренок В; Бундин В | 12h | 12h |
| 1272 | 2.252 | выдать шланг для продувки бестрома |  | 1h | 2026-03-23 09:00 A | 2026-03-23 10:00 A |  | 100% |  |  | start no earlier than 2026-03-23 09:00 | Бундин В | 1h | 1h |
| 1273 | 2.253 | приварить уголок на лотке в охладитель (фото скину) |  | 2h | 2026-03-24 09:00 A | 2026-03-24 11:00 A |  | 100% |  |  | start no earlier than 2026-03-24 09:00 | Бобренок В | 2h | 2h |
| 1274 | 2.254 | на транспортере с охладителя отрезать концы саморезов на оргстекле (зарапают руки) |  | 1h | 2026-03-23 09:00 A | 2026-03-23 10:00 A |  | 100% |  |  | start no earlier than 2026-03-23 08:00 | Бундин В | 1h | 1h |
| 1275 | 2.255 | насосная станция включить и проверить на кз (выбивало автомат) |  | 2h | 2026-03-31 09:00 A | 2026-03-31 11:00 A |  | 100% |  |  | start no earlier than 2026-03-31 09:00 | Тимофеев В | 2h | 2h |
| 1276 | 2.256 | закрепить трубу РР к стене в районе хранения кубов гидролизат |  | 1h | 2026-03-26 09:00 A | 2026-03-26 10:00 A |  | 100% |  |  | start no earlier than 2026-03-26 09:00 | Тимофеев В | 1h | 1h |
| 1277 | 2.257 | настройка продувка ПГ ч/з 30 мин |  | 30min | 2026-04-02 09:00 A | 2026-04-02 09:30 A |  | 100% |  |  | start no earlier than 2026-04-02 09:00 | Шуранов Ю | 0.5h | 0.5h |
| 1278 | 2.258 | на красном смесителе закусывает ручку шибера - разобраться |  | 2h | 2026-03-26 09:00 A | 2026-03-26 11:00 A |  | 100% |  |  | start no earlier than 2026-03-26 09:00 | Тимофеев В | 2h | 2h |
| 1279 | 2.259 | посмотреть эл. магнит на двери вход ц.2 |  | 1h | 2026-03-27 09:00 A | 2026-03-27 10:00 A |  | 100% |  |  | start no earlier than 2026-03-27 09:00 | Тимофеев В | 1h | 1h |
| 1280 | 2.260 | ящик возле нашего кабинета- прибить или прикрутить дно |  | 1h | 2026-03-22 09:00 A | 2026-03-23 10:00 A |  | 100% |  |  | start no earlier than 2026-03-22 09:00 | Бобренок В | 1h | 1h |
| 1281 | 2.261 | слить конденсат, почистить фильтры и продуть радиаторы |  | 1h | 2026-03-21 09:00 A | 2026-03-23 10:00 A |  | 100% |  |  | start no earlier than 2026-03-21 09:00 | Дедов В | 1h | 1h |
| 1282 | 2.262 | забрать кресло Сапелина на ремонт в слесарку с каб. Шелепова |  | 2h | 2026-03-23 09:00 A | 2026-03-23 11:00 A |  | 100% |  |  | start no earlier than 2026-03-23 09:00 | Тимофеев В | 2h | 2h |
| 1283 | 2.263 | закрепить кабель в гофре на клипсы от розетки слева от ворот жировика |  | 1h | 2026-03-26 09:00 A | 2026-03-26 10:00 A |  | 100% |  |  | start no earlier than 2026-03-26 09:00 | Труфанов А | 1h | 1h |
| 1284 | 2.264 | уложить выше подиума и красиво закрепить на клипсы кабель в гофре от ворот справа (фото вышлю) |  | 1h | 2026-04-16 09:00 A | 2026-04-16 10:00 A |  | 100% |  |  | start no earlier than 2026-04-10 09:00 | Тимофеев В | 1h | 1h |
| 1285 | 2.265 | монтаж отбойников по периметру |  | 4h | 2026-03-25 09:00 A | 2026-03-25 13:00 A |  | 100% |  |  | start no earlier than 2026-03-25 09:00 | Бундин В | 4h | 4h |
| 1286 | 2.266 | перенос отбойник ГП с стороны эл щита, что бы не входл палет |  | 2h | 2026-03-19 08:00 A | 2026-03-19 11:00 A |  | 100% |  |  | start no earlier than 2026-03-19 08:00 | Бобренок В | 2h | 2h |
| 1287 | 2.267 | установить лист сендвич панель на стену жир/экструдер с стороны мойки |  | 3h | 2026-04-07 09:00 A | 2026-04-07 12:00 A |  | 100% |  |  | start no earlier than 2026-04-07 09:00 | Некрасов А; Труфанов А | 6h | 6h |
| 1288 | 2.268 | подлючить пневмоулитку к воздуху в охладителе |  | 1h | 2026-03-31 09:00 A | 2026-03-31 10:00 A |  | 100% |  |  | start no earlier than 2026-03-31 09:00 | Бобренок В | 1h | 1h |
| 1289 | 2.269 | выдать уплотнение на крышки прекондиционера |  | 30min | 2026-03-19 08:00 A | 2026-03-19 09:30 A |  | 100% |  |  | start no earlier than 2026-03-19 08:00 | Бобренок В | 0.5h | 0.5h |

| ID | WBS | Task | Type | Duration | Start | Finish | Predecessors | Complete | Actual start | Actual finish | Constraint | Resources | Work | Actual work |
| --- | --- | --- | --- | --- | --- | --- | --- | --- | --- | --- | --- | --- | --- | --- |
| 1290 | 2.270 | **ворота фасовка** |  | 0.12d | 2026-03-26 09:00 A | 2026-03-26 10:00 A |  | 100% |  |  |  |  | 1h | 1h |
| 1291 | 2.270.1 | закрепить гофру до розетки слева от ворот и закрыть монтажную коробку |  | 1h | 2026-03-26 09:00 A | 2026-03-26 10:00 A |  | 100% |  |  | start no earlier than 2026-03-26 09:00 | Некрасов А | 1h | 1h |
| 1292 | 2.271 | **забивает лоток прекондиционер/экструдер, передалать** |  | 1.62d | 2026-08-31 09:00 A | 2026-09-01 15:00 A |  | 100% |  |  |  |  | 5h | 5h |
| 1293 | 2.271.1 | изготовить чертежи лекалы для воронки |  | 1h | 2026-08-31 09:00 A | 2026-08-31 10:00 A |  | 100% |  |  | start no earlier than 2026-08-31 09:00 | Шуранов Ю | 1h | 1h |
| 1294 | 2.271.2 | изготовление воронки |  | 4h | 2026-09-01 10:00 A | 2026-09-01 15:00 A | 1293FS+1d | 100% |  |  | start no earlier than 2026-09-01 09:00 | Макаревич А | 4h | 4h |
| 1295 | 2.272 | уложить в лоток пучек управления заслонками, отвязать от батареи |  | 1h | 2026-03-17 08:00 A | 2026-03-17 10:00 A |  | 100% |  |  | start no earlier than 2026-03-17 08:00 | Бобренок В | 1h | 1h |
| 1296 | 2.273 | распред коробка подкл вентилятора которого уже нет (кондиционер №3 жиры) - облогородить |  | 30min | 2026-03-17 08:00 A | 2026-03-17 09:30 A |  | 100% |  |  | start no earlier than 2026-03-17 08:00 | Бобренок В | 0.5h | 0.5h |
| 1297 | 2.274 | удалить лотаки с барана |  | 2h | 2026-03-19 09:00 A | 2026-03-19 11:00 A |  | 100% |  |  | start no earlier than 2026-03-19 08:00 | Труфанов А; Некрасов А | 4h | 4h |
| 1298 | 2.275 | упорядочить проводку регистратора данных - стянуть в пучек |  | 1h | 2026-03-20 09:00 A | 2026-03-20 10:00 A |  | 100% |  |  | start no earlier than 2026-03-20 09:00 | Дедов В | 1h | 1h |
| 1299 | 2.276 | **открыть люк у бестрома / ревизяия / закрыть на герметик** |  | 0.12d | 2026-03-19 09:00 A | 2026-03-19 10:00 A |  | 100% |  |  |  | Труфанов А | 2h | 2h |
| 1300 | 2.276.1 | хим. Лаборатория устранить течь с оборудования |  | 1h | 2026-03-19 09:00 A | 2026-03-19 10:00 A |  | 100% |  |  | start no earlier than 2026-03-19 08:00 | Труфанов А | 1h | 1h |
| 1301 | 2.277 | **изготовить 2 лотка из нерж. в зоне жиров по аналогии с первым цехом под транспортером тип 1 и тип 2** |  | 0.25d | 2026-03-16 09:00 A | 2026-03-16 11:00 A |  | 100% |  |  |  | Макаревич А | 4h | 4h |
| 1302 | 2.277.1 | установить отбойник в зону ХХХ, брать в 5А |  | 2h | 2026-03-16 09:00 A | 2026-03-16 11:00 A |  | 100% |  |  | start no earlier than 2026-03-16 09:00 | Бобренок В | 2h | 2h |
| 1303 | 2.278 | **сточить острый край лотка загрузки в охладитель** |  | 0.12d | 2026-03-15 09:00 A | 2026-03-16 10:00 A |  | 100% |  |  |  | Некрасов А | 3h | 3h |
| 1304 | 2.278.1 | вывезти люльку, вывезти бойлер, провода на жирах спрятать в коробку |  | 1h | 2026-03-15 09:00 A | 2026-03-16 10:00 A |  | 100% |  |  | start no earlier than 2026-03-15 09:00 | Бобренок В | 1h | 1h |
| 1305 | 2.278.2 | бойлер в душе - установить трубку на клапан сброса и смонтировать её по стене до канализ трубы |  | 1h | 2026-03-16 09:00 A | 2026-03-16 10:00 A |  | 100% |  |  | start no earlier than 2026-03-16 09:00 | Макаревич А | 1h | 1h |
| 1306 | 2.279 | облогородить кабельный пучек, сделать аккуратно/закрыить крышкой. Слева от двери экструдер/тамбур под лестницей |  | 6h | 2026-04-09 09:00 A | 2026-04-09 16:00 A |  | 100% |  |  | start no earlier than 2026-04-11 09:00 | Труфанов А | 6h | 6h |
| 1307 | 2.280 | **изготовить сетку после барабана по аналогии с сущ 10мм** |  | 2.5d | 2026-03-12 09:00 A | 2026-03-16 13:00 A |  | 100% |  |  |  | Макаревич А | 25.5h | 25.5h |
| 1308 | 2.280.1 | на лоток загрузки в охладитель - установить доп борт с левой стороны, такой же как с правой (съемный) |  | 4h | 2026-03-15 09:00 A | 2026-03-16 13:00 A |  | 100% |  |  | start no earlier than 2026-03-15 09:00 | Бобренок В | 4h | 4h |
| 1309 | 2.280.2 | квадропак стол подачи пакетов устновить кайки с барашком/приварить. + зафиксировать от бокового смещения |  | 1h | 2026-03-16 09:00 A | 2026-03-16 10:00 A |  | 100% |  |  | start no earlier than 2026-03-16 09:00 | Тимофеев В | 1h | 1h |
| 1310 | 2.280.3 | изменить время разгон/торожение привод барабана |  | 30min | 2026-03-12 09:00 A | 2026-03-12 09:30 A |  | 100% |  |  | start no earlier than 2026-03-13 09:00 | Дедов В | 0.5h | 0.5h |
| 1311 | 2.281 | изготовить кожух на шестерни прекондиционера |  | 6h | 2026-04-03 09:00 A | 2026-04-03 16:00 A |  | 100% |  |  | start no earlier than 2026-04-03 09:00 | Макаревич А | 6h | 6h |
| 1312 | 2.282 | **ремонт датчик давления линия 3** |  | 30.25d | 2026-03-26 09:00 | 2026-04-30 11:00 |  | 100% | 2026-05-14 09:00 | 2026-06-11 12:00 |  |  | 124.75h | 124.75h |
| 1313 | 2.282.1 | заявка переходник G1/4 /M20*1.5 токарю |  | 15min | 2026-05-14 09:00 A | 2026-05-14 09:15 A |  | 100% |  |  | start no earlier than 2026-05-14 09:00 | Зорькин В | 0.25h | 0.25h |
| 1314 | 2.282.2 | контроль изг/орг доставка | milestone | 0d | 2026-05-14 09:15 A | 2026-05-14 09:15 A | 1313 | 100% |  |  | start no earlier than 2026-03-20 08:00 |  |  |  |
| 1315 | 2.282.3 | заказ замена + в ЗИП |  | 15min | 2026-05-14 09:15 A | 2026-05-14 09:30 A | 1314 | 100% |  |  | start no earlier than 2026-03-13 09:00 | Зорькин В | 0.25h | 0.25h |
| 1316 | 2.282.4 | заявка на РВД удлинитель |  | 15min | 2026-05-14 09:30 A | 2026-05-14 09:45 A | 1315 | 100% |  |  | start no earlier than 2026-03-12 08:00 | Зорькин В | 0.25h | 0.25h |
| 1317 | 2.282.5 | доставка |  | 15d | 2026-05-14 09:45 A | 2026-06-04 09:45 A | 1316 | 100% |  |  | start no earlier than 2026-03-12 08:00 | Карабанов | 120h | 120h |
| 1318 | 2.282.6 | монтаж |  | 1h | 2026-06-04 09:00 A | 2026-06-04 10:00 A |  | 100% |  |  | start no earlier than 2026-06-04 09:00 | Тимофеев В | 1h | 1h |
| 1319 | 2.282.7 | датчик давления экструдера проверка подключения |  | 3h | 2026-06-11 09:00 A | 2026-06-11 12:00 A |  | 100% |  |  | start no earlier than 2026-06-11 09:00 | Дедов В | 3h | 3h |

| ID | WBS | Task | Duration | Start | Finish | Predecessors | Complete | Constraint | Resources | Work | Actual work |
| --- | --- | --- | --- | --- | --- | --- | --- | --- | --- | --- | --- |
| 1320 | 2.283 | **установить сирену при отключении автомата ПГ** | 28.12d | 2026-03-13 09:00 A | 2026-04-22 10:00 A |  | 100% |  |  | 81.5h | 81.5h |
| 1321 | 2.283.1 | заявка на реле / сирена | 30min | 2026-03-13 09:00 A | 2026-03-13 09:30 A |  | 100% | start no earlier than 2026-03-13 09:00 | Шуранов Ю | 0.5h | 0.5h |
| 1322 | 2.283.2 | доставка | 10d | 2026-03-13 09:30 A | 2026-03-27 09:30 A | 1321 | 100% | start no earlier than 2026-03-12 08:00 | Карабанов | 80h | 80h |
| 1323 | 2.283.3 | монтаж в схему (проверить почему не срабатывает) | 1h | 2026-04-22 09:00 A | 2026-04-22 10:00 A | 1322 | 100% | start no earlier than 2026-04-22 09:00 | Дедов В | 1h | 1h |
| 1324 | 2.284 | **установить сирену на отключение автоматов в печи** | 16d | 2026-03-11 09:00 A | 2026-04-01 18:00 A |  | 100% |  |  | 44.25h | 44.25h |
| 1325 | 2.284.1 | заявка сирена | 15min | 2026-03-13 09:30 A | 2026-03-13 09:45 A | 1321 | 100% | start no earlier than 2026-03-12 08:00 | Шуранов Ю | 0.25h | 0.25h |
| 1326 | 2.284.2 | доставка | 5d | 2026-03-13 09:45 A | 2026-03-20 09:45 A | 1325 | 100% | start no earlier than 2026-03-12 08:00 | Карабанов | 40h | 40h |
| 1327 | 2.284.3 | монтаж | 2h | 2026-03-19 09:00 A | 2026-03-19 11:00 A | 1326 | 100% | start no earlier than 2026-03-19 09:00 | Дедов В | 2h | 2h |
| 1328 | 2.284.4 | доставка сирены | 10d | 2026-03-19 09:00 A | 2026-04-01 18:00 A |  | 100% | start no earlier than 2026-03-19 08:00 |  |  |  |
| 1329 | 2.284.5 | монтаж сирены | 1h | 2026-03-31 09:00 A | 2026-03-31 10:00 A | 1328 | 100% | start no earlier than 2026-03-31 09:00 | Дедов В | 1h | 1h |
| 1330 | 2.284.6 | настройка доводчика дверь вход в зону экструдера | 1h | 2026-03-11 09:00 A | 2026-03-11 10:00 A |  | 100% | start no earlier than 2026-03-11 09:00 | Макаревич А | 1h | 1h |
| 1331 | 2.285 | **выпадает фильера с матрицы - делать стпор** | 0.5d | 2026-04-27 09:00 A | 2026-04-27 13:00 A |  | 100% |  |  | 4.5h | 4.5h |
| 1332 | 2.285.1 | подготовка сверла / метчика | 30min | 2026-04-27 09:00 A | 2026-04-27 09:30 A |  | 100% | start no earlier than 2026-04-27 09:00 | Шуранов Ю | 0.5h | 0.5h |
| 1333 | 2.285.2 | сверлить и резать резьбу для фикс болта | 4h | 2026-04-27 09:00 A | 2026-04-27 13:00 A |  | 100% | start no earlier than 2026-04-27 09:00 | Подрядчик | 4h | 4h |
| 1334 | 2.286 | **замена поликарбанат на перегородках металопрофилем** | 68.75d | 2026-03-11 09:00 A | 2026-06-15 16:00 A |  | 100% |  |  | 114h | 114h |
| 1335 | 2.286.1 | расчет материал стена охладитель | 1h | 2026-03-19 09:00 A | 2026-03-19 10:00 A |  | 100% | start no earlier than 2026-03-19 09:00 | Шуранов Ю | 1h | 1h |
| 1336 | 2.286.2 | заявка | 1h | 2026-03-19 10:00 A | 2026-03-19 11:00 A | 1335 | 100% | start no earlier than 2026-03-12 08:00 | Шуранов Ю | 1h | 1h |
| 1337 | 2.286.3 | доставка | 10d | 2026-03-19 11:00 A | 2026-04-02 11:00 A | 1336 | 100% | start no earlier than 2026-03-12 08:00 | Карабанов | 80h | 80h |
| 1338 | 2.286.4 | из металлопрофиля 3м. Обшиваем охладитель внутри и снаружи + утеплитель | 5h | 2026-05-29 09:00 A | 2026-05-29 15:00 A |  | 100% | start no earlier than 2026-05-29 09:00 | Некрасов А; Бобренок В | 10h | 10h |
| 1339 | 2.286.5 | продолжить монтаж (со стороны охладителя и со стороны жиров) | 6h | 2026-06-15 09:00 A | 2026-06-15 16:00 A | 1337 | 100% | start no earlier than 2026-06-15 09:00 | Некрасов А; Бундин В | 12h | 12h |
| 1340 | 2.286.6 | замена шланг реле давление и настройка. фильтр приточная офис | 1h | 2026-03-12 09:00 A | 2026-03-12 10:00 A |  | 100% | start no earlier than 2026-03-13 09:00 | Дедов В | 1h | 1h |
| 1341 | 2.286.7 | замена насос гидролизата | 1h | 2026-03-12 08:00 A | 2026-03-12 10:00 A |  | 100% | start no earlier than 2026-03-12 08:00 | Бундин В; Тимофеев В | 2h | 2h |
| 1342 | 2.286.8 | замена подшипник прекондиционер | 1h | 2026-03-12 09:00 A | 2026-03-12 10:00 A |  | 100% | start no earlier than 2026-03-12 08:00 | Бундин В | 1h | 1h |
| 1343 | 2.286.9 | ремонт вал охладитель | 4h | 2026-03-12 09:00 A | 2026-03-12 13:00 A |  | 100% | start no earlier than 2026-03-19 09:00 | Тимофеев В | 4h | 4h |
| 1344 | 2.286.10 | плохо закр дверь на фасовку. заменить личинку двери / выравнить напильником в коробке. | 1h | 2026-03-11 09:00 A | 2026-03-11 10:00 A |  | 100% | start no earlier than 2026-03-11 09:00 | Макаревич А | 1h | 1h |
| 1345 | 2.286.11 | крепить поликарбанат стена печь/жир длинная часть | 1h | 2026-03-11 09:00 A | 2026-03-11 10:00 A |  | 100% | start no earlier than 2026-03-11 09:00 | Макаревич А | 1h | 1h |
| 1346 | 2.287 | сетку на выходе барабана жир закрепить. Устр вспомогактельные крепжи операторам | 1h | 2026-03-19 09:00 A | 2026-03-19 10:00 A |  | 100% | start no earlier than 2026-03-19 09:00 | Тимофеев В | 1h | 1h |

| ID | WBS | Task | Duration | Start | Finish | Predecessors | Complete | Constraint | Resources | Work | Actual work |
| --- | --- | --- | --- | --- | --- | --- | --- | --- | --- | --- | --- |
| 1347 | 2.288 | **установить / снять трубу от ПГ для чистки сетки** | 0.25d | 2026-03-12 09:00 A | 2026-03-12 11:00 A |  | 100% |  | Тимофеев В | 7h | 7h |
| 1348 | 2.288.1 | чистка циклон снаружи от копоти. Средство для чистки выдаст Шелепов К | 2h | 2026-03-12 09:00 A | 2026-03-12 11:00 A |  | 100% | start no earlier than 2026-03-12 09:00 | Тимофеев В; Бундин В | 4h | 4h |
| 1349 | 2.288.2 | замена датчик расхода пара | 1h | 2026-03-12 09:00 A | 2026-03-12 10:00 A |  | 100% | start no earlier than 2026-03-12 09:00 | Некрасов А | 1h | 1h |
| 1350 | 2.289 | **замениь фитинги на жир** | 0.25d | 2026-03-10 09:00 A | 2026-03-10 11:00 A | 675 | 100% |  | Некрасов А | 4h | 4h |
| 1351 | 2.289.1 | замена бойлер в мойке экструдера на бойлер который весит за экструдером | 2h | 2026-03-10 09:00 A | 2026-03-10 11:00 A |  | 100% | start no earlier than 2026-03-10 09:00 | Дедов В | 2h | 2h |
| 1352 | 2.290 | **переключить освещение на автолномный выключатель, запитанный от системы освещения, а не от оборудования.** | 15.38d | 2026-03-05 09:00 A | 2026-03-26 12:00 A |  | 100% |  |  | 13h | 13h |
| 1353 | 2.290.1 | ножевой узел | 1.5h | 2026-03-26 09:00 A | 2026-03-26 10:30 A |  | 100% | start no earlier than 2026-03-26 09:00 | Дедов В; Некрасов А | 3h | 3h |
| 1354 | 2.290.2 | бестром | 1.5h | 2026-03-26 09:00 A | 2026-03-26 10:30 A |  | 100% | start no earlier than 2026-03-26 09:00 | Некрасов А; Дедов В | 3h | 3h |
| 1355 | 2.290.3 | выход с охладителя | 1.5h | 2026-03-26 10:30 A | 2026-03-26 12:00 A | 1353 | 100% | start no earlier than 2026-03-26 09:00 | Дедов В; Некрасов А | 3h | 3h |
| 1356 | 2.290.4 | переключить норию квадропака стационрно, без розетки | 2h | 2026-03-05 09:00 A | 2026-03-05 11:00 A |  | 100% | start no earlier than 2026-03-05 09:00 | Дедов В | 2h | 2h |
| 1357 | 2.290.5 | перемонтаж провода заземления нории квадропак эстетично и удобно для прохода и уборщицы | 2h | 2026-03-05 09:00 A | 2026-03-05 11:00 A |  | 100% | start no earlier than 2026-03-05 09:00 | Дедов В | 2h | 2h |
| 1358 | 2.291 | **сетки на дно печи в зип изготовить** | 10.5d | 2026-03-10 09:00 A | 2026-03-24 13:00 A |  | 100% |  |  | 85h | 85h |
| 1359 | 2.291.1 | заявка сетка уголки | 1h | 2026-03-10 09:00 A | 2026-03-10 10:00 A |  | 100% | start no earlier than 2026-03-10 09:00 | Шуранов Ю | 1h | 1h |
| 1360 | 2.291.2 | доставка | 10d | 2026-03-10 10:00 A | 2026-03-24 10:00 A | 1359 | 100% | start no earlier than 2026-03-06 08:00 | Карабанов | 80h | 80h |
| 1361 | 2.291.3 | изготовление | 4h | 2026-03-24 09:00 A | 2026-03-24 13:00 A | 1360 | 100% | start no earlier than 2026-03-24 09:00 | Тимофеев В | 4h | 4h |
| 1362 | 2.292 | закрепить лоток для совка с спиртом. Изготовить усилит косынку | 2h | 2026-03-07 09:00 A | 2026-03-09 11:00 A |  | 100% | start no earlier than 2026-03-07 09:00 | Бундин В | 2h | 2h |
| 1363 | 2.293 | **установить монтажную коробку квадропак. Инструктаж Шуранов по тлф** | 0.12d | 2026-03-06 08:00 A | 2026-03-06 10:00 A |  | 100% |  | Бундин В | 2h | 2h |
| 1364 | 2.293.1 | Не уходит вода в душевой кабине, посмотреть, устранить. | 1h | 2026-03-06 08:00 A | 2026-03-06 10:00 A |  | 100% | start no earlier than 2026-03-06 08:00 | Бобренок В | 1h | 1h |
| 1365 | 2.294 | ревизия вентиляторов охладителя, не закрываются крышки | 30min | 2026-03-05 09:00 A | 2026-03-05 09:30 A |  | 100% | start no earlier than 2026-03-05 09:00 | Тимофеев В | 0.5h | 0.5h |
| 1366 | 2.295 | **Квадропак** | 0.38d | 2026-03-05 09:00 A | 2026-03-05 12:00 A |  | 100% |  |  | 3h | 3h |
| 1367 | 2.295.1 | Уложить красиво провода на лестнице квадропака цех 2 (созвон с Шурановым) | 3h | 2026-03-05 09:00 A | 2026-03-05 12:00 A |  | 100% | start no earlier than 2026-03-05 09:00 | Дедов В | 3h | 3h |
| 1368 | 2.296 | **Сброс ошибо Н4 и Е9 на кондиционерах** | 0.08d | 2026-03-04 09:00 A | 2026-03-04 09:40 A |  | 100% |  |  | 0.67h | 0.67h |
| 1369 | 2.296.1 | Договориться с оплотом по решению | 30min | 2026-03-04 09:00 A | 2026-03-04 09:30 A |  | 100% | start no earlier than 2026-03-04 09:00 | Зорькин В | 0.5h | 0.5h |
| 1370 | 2.296.2 | устранить ошибки | 10min | 2026-03-04 09:30 A | 2026-03-04 09:40 A | 1369 | 100% | start no earlier than 2026-03-03 08:00 | Зорькин В | 0.17h | 0.17h |
| 1371 | 2.297 | закреить поликарбанат по периметру | 4h | 2026-03-08 09:00 A | 2026-03-09 13:00 A |  | 100% | start no earlier than 2026-03-08 09:00 | Макаревич А | 4h | 4h |
| 1372 | 2.298 | смазать ручки и шарниры дверей | 1h | 2026-03-08 09:00 A | 2026-03-09 10:00 A |  | 100% | start no earlier than 2026-03-08 09:00 | Макаревич А | 1h | 1h |

| ID | WBS | Task | Duration | Start | Finish | Predecessors | Complete | Constraint | Resources | Work | Actual work |
| --- | --- | --- | --- | --- | --- | --- | --- | --- | --- | --- | --- |
| 1373 | 2.299 | **сделать ровным порог вход в мойку экструдера** | 23.5d | 2026-03-03 09:00 A | 2026-04-03 13:00 A |  | 100% |  |  | 86.25h | 86.25h |
| 1374 | 2.299.1 | Показать Олегу порог | 30min | 2026-03-03 09:00 A | 2026-03-03 09:30 A |  | 100% | start no earlier than 2026-03-03 08:00 | Зорькин В; Олег лукас | 1h | 1h |
| 1375 | 2.299.2 | составить план ремонта | 15min | 2026-03-03 09:00 A | 2026-03-03 09:15 A |  | 100% | start no earlier than 2026-03-03 09:00 | Зорькин В; Некрасов А; Труфанов А | 0.75h | 0.75h |
| 1376 | 2.299.3 | составить заявку на материал | 30min | 2026-03-04 09:00 A | 2026-03-04 09:30 A | 1375 | 100% | start no earlier than 2026-03-04 09:00 | Зорькин В | 0.5h | 0.5h |
| 1377 | 2.299.4 | доставка | 10d | 2026-03-04 09:30 A | 2026-03-18 09:30 A | 1376 | 100% | start no earlier than 2026-03-03 08:00 | Карабанов | 80h | 80h |
| 1378 | 2.299.5 | реализация | 4h | 2026-04-03 09:00 A | 2026-04-03 13:00 A | 1377 | 100% | start no earlier than 2026-04-03 09:00 | Олег | 4h | 4h |
| 1379 | 2.300 | востановить профлист. Проход навески экструдер. Обрезками с 3ц, цвет любой | 5h | 2026-03-08 09:00 A | 2026-03-09 15:00 A |  | 100% | start no earlier than 2026-03-08 09:00 | Макаревич А | 5h | 5h |
| 1380 | 2.301 | установить отбойники в проход и углы проезд навесок. Барть с 5а | 4h | 2026-03-09 09:00 A | 2026-03-09 13:00 A |  | 100% | start no earlier than 2026-03-09 09:00 | Макаревич А | 4h | 4h |
| 1381 | 2.302 | **установить отбойники в углы проезд навесок** | 24.25d | 2026-03-13 09:00 A | 2026-04-16 11:00 A |  | 100% |  |  | 82.17h | 82.17h |
| 1382 | 2.302.1 | заявка 2 отбойника | 10min | 2026-03-13 09:00 A | 2026-03-13 09:10 A |  | 100% | start no earlier than 2026-03-13 09:00 | Зорькин В | 0.17h | 0.17h |
| 1383 | 2.302.2 | доставка | 10d | 2026-03-13 09:10 A | 2026-03-27 09:10 A | 1382 | 100% | start no earlier than 2026-03-12 08:00 | Карабанов | 80h | 80h |
| 1384 | 2.302.3 | монтаж | 2h | 2026-04-16 09:00 A | 2026-04-16 11:00 A | 1383 | 100% | start no earlier than 2026-04-16 09:00 | Бундин В | 2h | 2h |
| 1385 | 2.303 | **наростить ножки на бестроме бункер, вместо деревянной** | 3.38d | 2026-03-05 09:00 A | 2026-03-10 12:00 A |  | 100% |  | Макаревич А | 39h | 39h |
| 1386 | 2.303.1 | **мойка** | 0.38d | 2026-03-05 09:00 A | 2026-03-05 12:00 A |  | 100% |  |  | 6h | 6h |
| 1387 | 2.303.1.1 | ревизия вытяжка принудительная из печи (нерж вентилятор), очистка | 3h | 2026-03-05 09:00 A | 2026-03-05 12:00 A |  | 100% | start no earlier than 2026-03-05 09:00 | Некрасов А; Труфанов А | 6h | 6h |
| 1388 | 2.303.2 | ремонт колесо штабелер/замена подшипник | 3h | 2026-03-10 09:00 A | 2026-03-10 12:00 A |  | 100% | start no earlier than 2026-03-10 09:00 | Тимофеев В; Дедов В | 6h | 6h |
| 1389 | 2.304 | **увеличить освещение в зоне квадропака** | 41.88d | 2026-03-02 09:00 A | 2026-04-28 17:00 A |  | 100% |  |  | 101h | 101h |
| 1390 | 2.304.1 | составить список мматериал для монтажа | 30min | 2026-03-02 09:00 A | 2026-03-02 09:30 A |  | 100% | start no earlier than 2026-03-02 09:00 | Труфанов А; Некрасов А; Зорькин В | 1.5h | 1.5h |
| 1391 | 2.304.2 | заявка светильники | 30min | 2026-03-02 09:30 A | 2026-03-02 10:00 A | 1390 | 100% | start no earlier than 2026-02-27 08:00 | Зорькин В | 0.5h | 0.5h |
| 1392 | 2.304.3 | доставка | 10d | 2026-03-02 10:00 A | 2026-03-16 10:00 A | 1391 | 100% | start no earlier than 2026-02-27 08:00 | Карабанов | 80h | 80h |
| 1393 | 2.304.4 | монтаж светильников зона фасовки 8 светильников, операторы помогут | 15h | 2026-04-25 09:00 A | 2026-04-28 17:00 A |  | 100% | start no earlier than 2026-04-25 09:00 | Бобренок В | 15h | 15h |
| 1394 | 2.304.5 | монтаж светильников зона квадропак 1шт - перевесить светильник | 1h | 2026-04-16 09:00 A | 2026-04-16 10:00 A |  | 100% | start no earlier than 2026-04-16 09:00 | Тимофеев В | 1h | 1h |
| 1395 | 2.304.6 | монтаж | 2h | 2026-03-06 09:00 A | 2026-03-06 11:00 A |  | 100% | start no earlier than 2026-03-06 09:00 | Бобренок В | 2h | 2h |
| 1396 | 2.304.7 | **замена сетка печи на мелкую** | 0.12d | 2026-03-02 09:00 A | 2026-03-02 10:00 A |  | 100% |  |  | 1h | 1h |
| 1397 | 2.304.7.1 | согласовать спецификацию / оплата счет | 1h | 2026-03-02 09:00 A | 2026-03-02 10:00 A |  | 100% | start no earlier than 2026-03-02 09:00 | Домоводов К | 1h | 1h |

| ID | WBS | Task | Duration | Start | Finish | Predecessors | Complete | Remaining | Total slack | Free slack | Constraint | Resources | Work | Actual work |
| --- | --- | --- | --- | --- | --- | --- | --- | --- | --- | --- | --- | --- | --- | --- |
| 1398 | 2.305 | **монтаж дозации жира в экструдер** | 34.25d? | 2026-02-27 09:00 A | 2026-04-16 11:00 |  | 38% | 21.26d? | 242.34d |  |  |  | 25h | 15h |
| 1399 | 2.305.1 | монтаж частотного привода | 2h | 2026-02-27 09:00 A | 2026-02-27 11:00 A |  | 100% |  |  |  | start no earlier than 2026-02-27 09:00 | Тимофеев В | 2h | 2h |
| 1400 | 2.305.2 | монтаж трассы гидравлической | 2h | 2026-03-02 09:00 A | 2026-03-02 11:00 A | 1399 | 100% |  |  |  | start no earlier than 2026-03-02 09:00 | Тимофеев В | 2h | 2h |
| 1401 | 2.305.3 | сборка канистры с фитингом | 1h | 2026-03-02 11:00 A | 2026-03-02 12:00 A | 1400 | 100% |  |  |  | start no earlier than 2026-02-26 08:00 | Тимофеев В | 1h | 1h |
| 1402 | 2.305.4 | калибровка на нужный расход | 1h | 2026-03-03 09:00 A | 2026-03-03 10:00 A |  | 100% |  |  |  | start no earlier than 2026-03-03 09:00 | Зорькин В; Тимофеев В | 2h | 2h |
| 1403 | 2.305.5 | испытание | 1h | 2026-03-04 09:00 A | 2026-03-04 10:00 A |  | 100% |  |  |  | start no earlier than 2026-03-04 09:00 | Зорькин В | 1h | 1h |
| 1404 | 2.305.6 | подключить управление насосом синхронно с запуском ножей экструдера. Проложить кабель, изучить параметары, передать по смене что подключать | 4h | 2026-03-04 09:00 | 2026-03-04 13:00 |  |  |  | 273.09d |  | start no earlier than 2026-03-04 09:00 | Дедов В | 4h |  |
| 1405 | 2.305.7 | подключить кабель/ неастроить параметры, что передаст Дедов | 1h | 2026-03-05 09:00 | 2026-03-05 10:00 |  |  |  | 272.47d |  | start no earlier than 2026-03-05 09:00 | Труфанов А | 1h |  |
| 1406 | 2.305.8 | поставка контрллра | 1d? | 2026-03-11 09:00 | 2026-03-11 18:00 |  |  |  | 267.34d | 25d | start no earlier than 2026-03-11 09:00 |  |  |  |
| 1407 | 2.305.9 | подключить контрллера расходомер | 2h | 2026-04-16 09:00 | 2026-04-16 11:00 | 1406 |  |  | 242.34d |  | start no earlier than 2026-04-16 09:00 | Тимофеев В | 2h |  |
| 1408 | 2.305.10 | Прокинуть интерфейсный кабель от черной коробочки до нового частотника на синем бункере (проложить так чтоб ни где ничего не торчало) | 3h | 2026-03-05 09:00 | 2026-03-05 12:00 |  |  |  | 272.22d |  | start no earlier than 2026-03-05 08:00 | Дедов В | 3h |  |
| 1409 | 2.305.11 | сделать регулировку угла наклона приемная воронка конв в охладитель после жира | 3h | 2026-03-05 09:00 A | 2026-03-05 12:00 A |  | 100% |  |  |  | start no earlier than 2026-03-05 09:00 | Некрасов А; Труфанов А | 6h | 6h |
| 1410 | 2.305.12 | сборка и монтаж полка для дез раствора на охладитель | 1h | 2026-03-02 09:00 A | 2026-03-02 10:00 A |  | 100% |  |  |  | start no earlier than 2026-03-02 09:00 | Тимофеев В | 1h | 1h |
| 1411 | 2.306 | **настройка блокировок отключения котла, если отключена приточка** | 130.25d | 2026-03-03 09:00 A | 2026-09-01 11:00 |  | 7% | 120.93d | 144.34d |  |  |  | 86.17h | 6.17h |
| 1412 | 2.306.1 | внести в схему котла блокировку либо от трм 33 либо от частотника | 4h | 2026-03-03 09:00 A | 2026-03-03 13:00 A |  | 100% |  |  |  | start no earlier than 2026-03-03 09:00 | Дедов В | 4h | 4h |
| 1413 | 2.306.2 | Заявка на реле протока воды | 10min | 2026-03-10 09:00 A | 2026-03-10 09:10 A |  | 100% |  |  |  | start no earlier than 2026-03-10 09:00 | Зорькин В | 0.17h | 0.17h |
| 1414 | 2.306.3 | Доставка | 10d | 2026-03-10 09:10 | 2026-03-24 09:10 | 1413 |  |  | 259.57d |  | start no earlier than 2026-03-02 09:00 | Карабанов | 80h |  |
| 1415 | 2.306.4 | Замена | 2h | 2026-09-01 09:00 A | 2026-09-01 11:00 A | 1414 | 100% |  |  |  | start no earlier than 2026-09-01 09:00 | Дедов В | 2h | 2h |
| 1416 | 2.307 | Запрет работы вентилятора если низкая температура калорифера | 2h | 2026-03-12 09:00 A | 2026-03-12 11:00 A |  | 100% |  |  |  | start no earlier than 2026-03-12 09:00 | Дедов В | 2h | 2h |
| 1417 | 2.308 | **установить на охладитель ролики + скольжение трубы** | 33d? | 2026-09-01 09:00 | 2026-10-05 18:00 |  |  |  | 111.59d |  |  |  | 10h |  |
| 1418 | 2.308.1 | печать кронштейнов | 2h | 2026-09-01 09:00 | 2026-09-01 11:00 |  |  |  | 144.34d |  | start no earlier than 2026-09-01 09:00 | Домоводов К | 2h |  |
| 1419 | 2.308.2 | установить держатели труб | 1d? | 2026-10-05 09:00 | 2026-10-05 18:00 |  |  |  | 111.59d |  | start no earlier than 2026-10-05 09:00 | Тимофеев В | 8h |  |
| 1420 | 2.309 | **установить паровопровод для очистки сетки печи на мойке парогенератором** | 8.75d | 2026-03-02 09:00 A | 2026-03-12 16:00 A |  | 100% |  |  |  |  |  | 18.5h | 18.5h |
| 1421 | 2.309.1 | проверка фитингов | 30min | 2026-03-02 09:00 A | 2026-03-02 09:30 A |  | 100% |  |  |  | start no earlier than 2026-03-02 09:00 | Зорькин В | 0.5h | 0.5h |
| 1422 | 2.309.2 | монтаж | 2h | 2026-03-05 09:00 A | 2026-03-05 11:00 A | 1421 | 100% |  |  |  | start no earlier than 2026-03-05 09:00 | Тимофеев В | 2h | 2h |

| ID | WBS | Task | Type | Duration | Start | Finish | Predecessors | Complete | Total slack | Free slack | Constraint | Resources | Work | Actual work |
| --- | --- | --- | --- | --- | --- | --- | --- | --- | --- | --- | --- | --- | --- | --- |
| 1423 | 2.309.3 | **лоток с транспортера в барабан. Большой** |  | 2.75d | 2026-03-10 09:00 A | 2026-03-12 16:00 A |  | 100% |  |  |  |  | 16h | 16h |
| 1424 | 2.309.3.1 | изготовить из листа лоток. Заготовку 612*965 с пропилами для сгиба по чертежу |  | 4h | 2026-03-10 09:00 A | 2026-03-10 13:00 A |  | 100% |  |  | start no earlier than 2026-03-10 09:00 | Макаревич А | 4h | 4h |
| 1425 | 2.309.3.2 | подготовить раму крепежа |  | 4h | 2026-03-12 09:00 A | 2026-03-12 13:00 A | 1424 | 100% |  |  | start no earlier than 2026-03-12 09:00 | Некрасов А; Труфанов А | 8h | 8h |
| 1426 | 2.309.3.3 | монтаж |  | 2h | 2026-03-12 14:00 A | 2026-03-12 16:00 A | 1425 | 100% |  |  | start no earlier than 2026-02-27 08:00 | Некрасов А; Труфанов А | 4h | 4h |
| 1427 | 2.310 | **установка ворот шлюз в проходе вент камеры** |  | 119d? | 2026-02-24 09:00 A | 2026-08-09 13:00 A |  | 100% |  |  |  |  | 163.5h | 163.5h |
| 1428 | 2.310.1 | изготовить и установить шпингалеты |  | 4h | 2026-02-27 09:00 A | 2026-02-27 13:00 A |  | 100% |  |  | start no earlier than 2026-02-27 09:00 | Некрасов А; Бобренок В | 8h | 8h |
| 1429 | 2.310.2 | установка петель, транспортировка, монтаж |  | 1d? | 2026-02-24 09:00 A | 2026-02-24 18:00 A |  | 100% |  |  | start no earlier than 2026-02-24 09:00 | Труфанов А; Некрасов А | 16h | 16h |
| 1430 | 2.310.3 | установить полосу притвора |  | 3h | 2026-02-27 09:00 A | 2026-02-27 12:00 A |  | 100% |  |  | start no earlier than 2026-02-28 09:00 | Бобренок В | 3h | 3h |
| 1431 | 2.310.4 | установить силиконовые уплотнители на пол |  | 2h | 2026-02-26 09:00 A | 2026-02-26 11:00 A |  | 100% |  |  | start no earlier than 2026-02-26 08:00 | Некрасов А | 2h | 2h |
| 1432 | 2.310.5 | заявка доводчики, шпингалеты |  | 30min | 2026-03-02 09:00 A | 2026-03-02 09:30 A |  | 100% |  |  | start no earlier than 2026-03-02 09:00 | Зорькин В | 0.5h | 0.5h |
| 1433 | 2.310.6 | доставка |  | 10d | 2026-03-02 09:30 A | 2026-03-16 09:30 A | 1432 | 100% |  |  | start no earlier than 2026-02-27 08:00 | Карабанов | 80h | 80h |
| 1434 | 2.310.7 | монтаж шпингалетов |  | 2h | 2026-03-25 09:00 A | 2026-03-25 11:00 A | 1433 | 100% |  |  | start no earlier than 2026-03-25 09:00 | Бобренок В | 2h | 2h |
| 1435 | 2.310.8 | **установить концевики блокировки открывания роль ворот, если не закрыты шлюз** |  | 109d | 2026-03-10 09:00 A | 2026-08-09 13:00 A |  | 100% |  |  |  |  | 52h | 52h |
| 1436 | 2.310.8.1 | **установить доводчики на ворота в зоне навесок** |  | 0.25d | 2026-06-14 09:00 A | 2026-06-15 11:00 A |  | 100% |  |  |  |  | 2h | 2h |
| 1437 | 2.310.8.1.1 | пробурить для задвижек ворот в полу отверстия -фиксация для проезда штабелера |  | 2h | 2026-06-14 09:00 A | 2026-06-15 11:00 A |  | 100% |  |  | start no earlier than 2026-06-14 09:00 | Бобренок В | 2h | 2h |
| 1438 | 2.310.8.2 | составить список материалов |  | 30min | 2026-03-10 09:00 A | 2026-03-10 09:30 A |  | 100% |  |  | start no earlier than 2026-03-10 09:00 | Дедов В | 0.5h | 0.5h |
| 1439 | 2.310.8.3 | заявка |  | 30min | 2026-03-10 09:30 A | 2026-03-10 10:00 A | 1438 | 100% |  |  | start no earlier than 2026-03-03 09:00 | Зорькин В | 0.5h | 0.5h |
| 1440 | 2.310.8.4 | доставка |  | 5d | 2026-03-10 10:00 A | 2026-03-17 10:00 A | 1439 | 100% |  |  | start no earlier than 2026-02-27 08:00 | Карабанов | 40h | 40h |
| 1441 | 2.310.8.5 | монтаж датчиков на двери / доводчиков. | manual | 4h | 2026-08-09 09:00 A | 2026-08-09 13:00 A | 1440 | 100% |  |  | start no earlier than 2026-08-09 09:00 | Бундин В | 4h | 4h |
| 1442 | 2.310.8.6 | монтаж кабеля от датчиков до блока рольворот, не подключать | manual | 4h | 2026-08-09 09:00 A | 2026-08-09 13:00 A | 1441 | 100% |  |  | start no earlier than 2026-08-09 09:00 | Бундин В | 4h | 4h |
| 1443 | 2.310.8.7 | установить концевики на ворота - установить закладные под них | manual | 1h | 2026-08-08 09:00 A | 2026-08-08 10:00 A |  | 100% |  |  | start no earlier than 2026-08-08 09:00 | Бундин В | 1h | 1h |
| 1444 | 2.311 | **схема блокировки роль ворот при открытым шлюзе + авт закрытие + датчик препятствия** |  | 25.5d | 2026-09-09 09:00 | 2026-10-05 13:00 |  |  | 112.09d |  |  |  | 8h |  |
| 1445 | 2.311.1 | разработка схемы |  | 4h | 2026-09-09 09:00 | 2026-09-09 13:00 |  |  | 135.59d | 23.5d | start no earlier than 2026-09-09 09:00 | Домоводов К | 4h |  |
| 1446 | 2.311.2 | монтаж |  | 4h | 2026-10-05 09:00 | 2026-10-05 13:00 | 1445FS+1d |  | 112.09d |  | start no earlier than 2026-10-05 09:00 | Труфанов А | 4h |  |
| 1447 | 2.312 | ремонт нижних сеток печи просева гранулы |  | 4h | 2025-01-23 09:00 A | 2025-01-23 13:00 A |  | 100% |  |  | start no earlier than 2025-01-23 09:00 | Черепанов И | 4h | 4h |

| ID | WBS | Task | Type | Duration | Start | Finish | Predecessors | Complete | Remaining | Total slack | Free slack | Constraint | Resources | Work | Actual work |
| --- | --- | --- | --- | --- | --- | --- | --- | --- | --- | --- | --- | --- | --- | --- | --- |
| 1448 | 2.313 | **замена реле безопасности бойлер ж** |  | 91.12d | 2024-10-16 09:00 A | 2025-02-20 10:00 A |  | 100% |  |  |  |  |  | 82h | 82h |
| 1449 | 2.313.1 | заЯВка |  | 1h | 2024-10-16 09:00 A | 2024-10-16 10:00 A |  | 100% |  |  |  | start no earlier than 2024-10-16 09:00 | Зорькин В | 1h | 1h |
| 1450 | 2.313.2 | доставка |  | 10d | 2024-10-16 10:00 A | 2024-10-30 10:00 A | 1449 | 100% |  |  |  | start no earlier than 2024-10-16 09:00 | Мультан | 80h | 80h |
| 1451 | 2.313.3 | замена |  | 1h | 2025-02-20 09:00 A | 2025-02-20 10:00 A | 1450 | 100% |  |  |  | start no earlier than 2025-02-20 09:00 | Некрасов А | 1h | 1h |
| 1452 | 2.314 | **установить пульты на регулировку шибиров вентиляции** |  | 48d? | 2026-08-31 09:00 | 2026-10-23 18:00 |  |  |  | 97.59d |  |  |  | 90h |  |
| 1453 | 2.314.1 | заявка на блок питания, шкаф управления, кабель |  | 2h | 2026-08-31 09:00 | 2026-08-31 11:00 |  |  |  | 134.34d | 0d | start no earlier than 2026-08-31 09:00 | Домоводов К | 2h |  |
| 1454 | 2.314.2 | доставка |  | 10d | 2026-08-31 11:00 | 2026-09-11 11:00 | 1453 |  |  | 134.34d | 36.75d | start no earlier than 2024-05-08 08:00 | Мультан | 80h |  |
| 1455 | 2.314.3 | монтаж |  | 1d? | 2026-10-23 09:00 | 2026-10-23 18:00 | 1454 |  |  | 97.59d |  | start no earlier than 2026-10-23 09:00 | Некрасов А | 8h |  |
| 1456 | 2.315 | заменить местами 2 зеркала маленький и большой бункер |  | 4h | 2024-10-03 09:00 | 2024-10-03 13:00 |  |  |  | 642.09d |  | start no earlier than 2024-10-03 09:00 | Черепанов И | 4h |  |
| 1457 | 2.316 | установить провод заземления на дверь шкафа упр сушки |  | 1h | 2024-01-08 09:00 | 2024-01-08 10:00 |  |  |  | 835.47d |  | start no earlier than 2024-01-06 09:00 | Тимофеев В | 1h |  |
| 1458 | 2.317 | **Палетообмотчик** |  | 50.06d | 2026-05-19 09:00 A | 2026-07-28 09:30 A |  | 100% |  |  |  |  |  | 80.67h | 80.67h |
| 1459 | 2.317.1 | заказать цепь |  | 10min | 2026-05-19 09:00 A | 2026-05-19 09:10 A |  | 100% |  |  |  | start no earlier than 2026-05-19 08:00 | Зорькин В | 0.17h | 0.17h |
| 1460 | 2.317.2 | доставка |  | 10d | 2026-05-29 09:00 A | 2026-06-11 18:00 A |  | 100% |  |  |  | start no earlier than 2026-05-29 09:00 | Карабанов | 80h | 80h |
| 1461 | 2.317.3 | замена цепи на вход в зону палетирования на складе взять 10М оцинкованная 3мм | manual | 30min | 2026-07-28 09:00 A | 2026-07-28 09:30 A |  | 100% |  |  |  | start no earlier than 2026-07-28 09:00 | Макаревич А | 0.5h | 0.5h |
| 1462 | 2.318 | Изготовить полочки из нержавейки по образцу на 18 баночек еще 2 шт |  | 3h | 2026-07-24 09:00 A | 2026-07-24 12:00 A |  | 100% |  |  |  | start no earlier than 2026-07-24 09:00 | Бундин В | 3h | 3h |
| 1463 | 2.319 | **разделить воду на ПГ и экструдер** |  | 0.25d | 2026-10-05 09:00 | 2026-10-05 11:00 |  |  |  | 0d |  |  |  | 2h |  |
| 1464 | 2.319.1 | изготовить промежуточную емкость для прекондера, подача воды, сделать по аналогу 3 цеха | manual | 2h | 2026-10-05 09:00 | 2026-10-05 11:00 |  |  |  |  |  | start no earlier than 2026-10-05 09:00 | Тимофеев В | 2h |  |
| 1465 | 2.320 | **отмена** |  | 85.31d? | 2026-08-11 09:00 A | 2026-11-26 11:30 |  | 2% | 83.37d? | 74.28d |  |  |  | 11h | 0.25h |
| 1466 | 2.320.1 | **найти места утечки тепла под потолком- перемерзает труба подачи воды в 3 цех** |  | 85.31d? | 2026-08-11 09:00 A | 2026-11-26 11:30 |  | 2% | 83.37d? | 74.28d |  |  |  | 11h | 0.25h |
| 1467 | 2.320.1.1 | вспомнить из-за чего холод под потолком? Какие нужны мероприятия?- никто не помнит |  | 15min | 2026-08-11 09:00 A | 2026-08-11 09:15 A |  | 100% |  |  |  | start no earlier than 2026-08-11 09:00 | Некрасов А | 0.25h | 0.25h |
| 1468 | 2.320.1.2 | подать олегу заявку |  | 15min | 2026-08-31 09:00 | 2026-08-31 09:15 |  |  |  | 145.56d |  | start no earlier than 2026-08-31 09:00 | Зорькин В | 0.25h |  |
| 1469 | 2.320.1.3 | проверка пирометром / тепловизором |  | 2h | 2026-11-11 09:00 | 2026-11-11 11:00 |  |  |  | 74.28d | 0d | start no earlier than 2026-11-11 09:00 | Некрасов А | 2h |  |
| 1470 | 2.320.1.4 | заявка (подумать материал) |  | 15min | 2026-11-11 11:00 | 2026-11-11 11:15 | 1469 |  |  | 74.28d | 0d | start no earlier than 2026-08-13 09:00 | Зорькин В | 0.25h |  |
| 1471 | 2.320.1.5 | доставка- контроль |  | 15min | 2026-11-25 11:15 | 2026-11-25 11:30 | 1470FS+10d |  |  | 74.28d | 0d | start no earlier than 2026-08-12 09:00 | Зорькин В | 0.25h |  |
| 1472 | 2.320.1.6 | монтаж |  | 1d? | 2026-11-25 11:30 | 2026-11-26 11:30 | 1471 |  |  | 74.28d |  | start no earlier than 2026-08-11 09:00 | Тимофеев В | 8h |  |

| ID | WBS | Task | Type | Duration | Start | Finish | Predecessors | Complete | Remaining | Total slack | Constraint | Resources | Work | Actual work |
| --- | --- | --- | --- | --- | --- | --- | --- | --- | --- | --- | --- | --- | --- | --- |
| 1473 | 2.321 | **вентиляция** |  | 11.25d | 2026-08-13 09:00 A | 2026-08-28 11:00 A |  | 100% |  |  |  |  | 4h | 4h |
| 1474 | 2.321.1 | Монтаж частотников на ШУ | manual | 2h | 2026-08-13 09:00 A | 2026-08-13 11:00 A |  | 100% |  |  | start no earlier than 2026-08-13 09:00 | Труфанов А | 2h | 2h |
| 1475 | 2.321.2 | В ШУ вырезать окна для частотников в двери, закрыть оргстеклом. Желательно на шарниры. |  | 2h | 2026-08-28 09:00 A | 2026-08-28 11:00 A |  | 100% |  |  | start no earlier than 2026-08-31 09:00 | Бундин В | 2h | 2h |
| 1476 | 2.322 | **Синий бункер** |  | 0.25d | 2026-07-30 09:00 A | 2026-07-30 11:00 A |  | 100% |  |  |  |  | 4h | 4h |
| 1477 | 2.322.1 | Ремонт синего бункера в зоне вибратора |  | 2h | 2026-07-30 09:00 A | 2026-07-30 11:00 A |  | 100% |  |  | start no earlier than 2026-07-30 09:00 | Труфанов А; Бундин В | 4h | 4h |
| 1478 | 2.323 | **Охладитель** |  | 0.38d | 2026-07-30 09:00 A | 2026-07-30 12:00 A |  | 100% |  |  |  |  | 3h | 3h |
| 1479 | 2.323.1 | Установка защиты сетки на полозья/направляющие, спросить Зорькина |  | 3h | 2026-07-30 09:00 A | 2026-07-30 12:00 A |  | 100% |  |  | start no earlier than 2026-07-30 09:00 | Тимофеев В | 3h | 3h |
| 1480 | 2.324 | Осмотреть/устранить течь раковины возле туалета |  | 1h | 2026-07-29 08:00 A | 2026-07-29 10:00 A |  | 100% |  |  | start no earlier than 2026-07-29 08:00 | Дедов В | 1h | 1h |
| 1481 | 3 | **3 цех** |  | 309.5d? | 2025-09-01 09:00 A | 2026-10-27 13:00 |  | 79% | 66.31d? | 96.09d |  |  | 1189.58h | 945.08h |
| 1482 | 3.1 | Закрыть все входа в производственную зону. Со стороны склада, гидролизата, со стороны фасовки, со стороны пандуса. Ключи взять у нас в кабинете в ящике. Ключи подписать | manual | 2h | 2026-10-03 09:00 | 2026-10-03 11:00 |  |  |  |  | start no earlier than 2026-10-03 09:00 | Бобренок В | 2h |  |
| 1483 | 3.2 | Сделать перила на лестницу между фасовкой и жирами, высота по образцу лестницы, которая на загрузке смесителей в 3 цеху. Делать минимальный габарит, чтоб рука пролазила между стеной и при этом сильно не сужало пространство. Делаем из 40 уголка | manual | 3h | 2026-10-04 09:00 | 2026-10-04 12:00 |  |  |  |  | start no earlier than 2026-10-04 09:00 | Бундин В | 3h |  |
| 1484 | 3.3 | Сделать окно из орг стекла монолитного, на жирах сверху, чтоб было видно печку. Размер примерно 300х200 | manual | 2h | 2026-10-03 09:00 | 2026-10-03 11:00 |  |  |  |  | start no earlier than 2026-10-03 09:00 | Бундин В | 2h |  |
| 1485 | 3.4 | Установить насос с ножами в 3 цех под раковину мойки на жирах | manual | 4h | 2026-10-03 09:00 | 2026-10-03 13:00 |  |  |  |  | start no earlier than 2026-10-03 09:00 | Бобренок В | 4h |  |
| 1486 | 3.5 | сопряжение круглой входной воронки в экструдер с квадратом выхода прекондиционера как в 2ц |  | 5h | 2026-09-29 09:00 A | 2026-09-29 15:00 A |  | 100% |  |  | start no earlier than 2026-09-29 09:00 | Бундин В | 5h | 5h |
| 1487 | 3.6 | **обеспечить быстрое переключение продукта из барабана годен/брак - охладитель/тазик** |  | 3.06d | 2026-09-19 09:00 A | 2026-09-22 09:30 A |  | 100% |  |  |  |  | 21h | 21h |
| 1488 | 3.6.1 | Модернизация лотка для удаления брака из барабанов, а именно: | milestone | 0h | 2026-09-19 09:00 A | 2026-09-19 09:00 A |  | 100% |  |  | start no earlier than 2026-09-19 09:00 | Макаревич А |  |  |
| 1489 | 3.6.2 | демонтировать отбойник, направляющий продукт в центр |  | 2h | 2026-09-19 09:00 A | 2026-09-19 11:00 A |  | 100% |  |  | start no earlier than 2026-09-19 09:00 | Макаревич А | 2h | 2h |
| 1490 | 3.6.3 | сделать торцевую стенку на шарнире с наклоном под барабан. Шарнир на высоте кронштейнов сетки. Шарнир дверной / как от печей |  | 4h | 2026-09-19 11:00 A | 2026-09-19 16:00 A | 1489 | 100% |  |  | start no earlier than 2026-09-18 08:00 | Макаревич А | 4h | 4h |
| 1491 | 3.6.4 | сделать фиксатор стенки в положении закрыто в виде щеколды. Безопасный быстрый |  | 2h | 2026-09-20 09:00 A | 2026-09-20 11:00 A | 1490 | 100% |  |  | start no earlier than 2026-09-20 09:00 | Макаревич А | 2h | 2h |
| 1492 | 3.6.5 | сделать "притвор", закрывающий щель после разрезания стенки. Все края защита от пореза либо зачистить либо лента |  | 4h | 2026-09-20 11:00 A | 2026-09-20 16:00 A | 1491 | 100% |  |  | start no earlier than 2026-09-18 08:00 | Макаревич А | 4h | 4h |
| 1493 | 3.6.6 | изготовить новый отбойник, направляющий продукт в центр, ниже опущенной стенки на сброс, не широкий, что бы удобно былоо менять сетку |  | 2h | 2026-09-20 16:00 A | 2026-09-20 18:00 A | 1492 | 100% |  |  | start no earlier than 2026-09-18 08:00 | Макаревич А | 2h | 2h |
| 1494 | 3.6.7 | Доработка короба после барабанов для ссыпки в емкость, установка ограничителей, язычка. Подробности у Труфанова |  | 6h | 2026-09-21 09:00 A | 2026-09-21 16:00 A |  | 100% |  |  | start no earlier than 2026-09-21 08:00 | Макаревич А | 6h | 6h |
| 1495 | 3.6.8 | установить на место, испытание |  | 30min | 2026-09-22 09:00 A | 2026-09-22 09:30 A |  | 100% |  |  | start no earlier than 2026-09-22 09:00 | Некрасов А; Труфанов А | 1h | 1h |
| 1496 | 3.7 | **Дражжировка** |  | 13.25d | 2026-09-17 09:00 A | 2026-09-30 11:00 A |  | 100% |  |  |  |  | 14h | 14h |
| 1497 | 3.7.1 | Повесить мощную цепь, за которую можно опускать и поднимать защиту |  | 1h | 2026-09-18 09:00 A | 2026-09-18 10:00 A |  | 100% |  |  | start no earlier than 2026-09-18 09:00 | Бундин В | 1h | 1h |
| 1498 | 3.7.2 | Сделать ограничитель, когда опускаешь защиту на себя, на уровне перил |  | 1h | 2026-09-17 09:00 A | 2026-09-17 10:00 A |  | 100% |  |  | start no earlier than 2026-09-17 08:00 | Бундин В | 1h | 1h |
| 1499 | 3.7.3 | Сделать из отбойников рессор уаз отбойники на защите паллет, чтоб не било когда падает (позвони, обьясню) |  | 2h | 2026-09-17 09:00 A | 2026-09-17 11:00 A |  | 100% |  |  | start no earlier than 2026-09-17 08:00 | Бундин В | 2h | 2h |
| 1500 | 3.7.4 | Перенести частотник со стены ближе к барабанам, смонтировать на раму барабанов |  | 2h | 2026-09-30 09:00 A | 2026-09-30 11:00 A |  | 100% |  |  | start no earlier than 2026-09-30 09:00 | Дедов В | 2h | 2h |
| 1501 | 3.7.5 | на коневейер циклон-барабан установить полосу сбоку ленты не дающую грануле скатываться обратно, примеры посмотреть в 1 цеху |  | 1h | 2026-09-22 09:00 A | 2026-09-22 10:00 A |  | 100% |  |  | start no earlier than 2026-09-22 09:00 | Тимофеев В | 1h | 1h |
| 1502 | 3.7.6 | Изготовить и установить уши на конце конвейера в барабан (чтоб гранула не попадала внутрь ленты) |  | 2h | 2026-09-21 09:00 A | 2026-09-21 11:00 A |  | 100% |  |  | start no earlier than 2026-09-21 09:00 | Тимофеев В | 2h | 2h |
| 1503 | 3.7.7 | Доделать и установить язык между барабанами |  | 1h | 2026-09-21 09:00 A | 2026-09-21 10:00 A |  | 100% |  |  | start no earlier than 2026-09-21 09:00 | Тимофеев В | 1h | 1h |
| 1504 | 3.7.8 | Увеличить «язычек» между барабанами на жирах (просыпается много гранулы |  | 4h | 2026-09-17 09:00 A | 2026-09-17 13:00 A |  | 100% |  |  | start no earlier than 2026-09-17 09:00 | Тимофеев В | 4h | 4h |

| ID | WBS | Task | Duration | Start | Finish | Predecessors | Complete | Remaining | Total slack | Free slack | Constraint | Resources | Work | Actual work |
| --- | --- | --- | --- | --- | --- | --- | --- | --- | --- | --- | --- | --- | --- | --- |
| 1505 | 3.8 | **Разобрать регулировку ножевого узла, достать вал на котором установлен штурвал** | 13.12d | 2026-09-21 09:00 A | 2026-10-05 10:00 |  | 40% | 7.88d | 112.47d |  |  |  | 2.5h | 1h |
| 1506 | 3.8.1 | Снять вал, передать Зорькину | 1h | 2026-09-22 09:00 A | 2026-09-22 10:00 A |  | 100% |  |  |  | start no earlier than 2026-09-22 09:00 | Тимофеев В | 1h | 1h |
| 1507 | 3.8.2 | Заявка по образцу | 20min | 2026-09-21 09:00 | 2026-09-21 09:20 |  |  |  | 117.47d | 0.02d | start no earlier than 2026-09-21 09:00 | Зорькин В | 0.33h |  |
| 1508 | 3.8.3 | контроль | 10min | 2026-09-28 09:00 | 2026-09-28 09:10 | 1507SF+7d |  |  | 117.45d | 4.98d | start no earlier than 2026-09-28 09:00 | Зорькин В | 0.17h |  |
| 1509 | 3.8.4 | установка | 1h | 2026-10-05 09:00 | 2026-10-05 10:00 | 1508FS+1d |  |  | 112.47d |  | start no earlier than 2026-10-05 09:00 | Тимофеев В | 1h |  |
| 1510 | 3.9 | Между шлюзовым питателем и конвейером на жирах сделать ограничение, чтоб не разлеталась гранула и не мешало двигать конвейер | 3h | 2026-09-15 09:00 A | 2026-09-15 12:00 A |  | 100% |  |  |  | start no earlier than 2026-09-15 09:00 | Тимофеев В | 3h | 3h |
| 1511 | 3.10 | **Найти и установить жироуловитель с синего склада на жирах мойка** | 15.12d | 2026-09-16 09:00 A | 2026-10-01 10:00 |  | 54% | 7.02d | 115.47d |  |  |  | 3.33h | 2.25h |
| 1512 | 3.10.1 | Составить список необходимых материлов для подключения (передать зорькину) | 1h | 2026-09-16 09:00 A | 2026-09-16 10:00 A |  | 100% |  |  |  | start no earlier than 2026-09-16 08:00 | Тимофеев В; Зорькин В | 2h | 2h |
| 1513 | 3.10.2 | Заявка | 15min | 2026-09-16 10:00 A | 2026-09-16 10:15 A | 1512 | 100% |  |  |  | start no earlier than 2026-09-16 08:00 | Зорькин В | 0.25h | 0.25h |
| 1514 | 3.10.3 | Контроль | 5min | 2026-09-24 09:00 | 2026-09-24 09:05 | 1513FS+7d |  |  | 122.46d | 6.99d | start no earlier than 2026-09-24 09:00 | Зорькин В | 0.08h |  |
| 1515 | 3.10.4 | Монтаж | 1h | 2026-10-01 09:00 | 2026-10-01 10:00 | 1514 |  |  | 115.47d |  | start no earlier than 2026-10-01 09:00 | Тимофеев В | 1h |  |
| 1516 | 3.11 | монтаж оконечные кожухи на конвейер после охладителя, что бы гранула не разлеталась при перевороте ленты | 4h | 2026-09-21 09:00 A | 2026-09-21 13:00 A |  | 100% |  |  |  | start no earlier than 2026-09-22 09:00 | Тимофеев В | 4h | 4h |
| 1517 | 3.12 | Перенести регулировку подачи жира, ближе к барабанам. Перенос частотник на раму барабанов | 4h | 2026-10-06 09:00 | 2026-10-06 13:00 |  |  |  | 111.09d |  | start no earlier than 2026-10-06 09:00 | Тимофеев В | 4h |  |
| 1518 | 3.13 | Проблема с закрыванием дверцы привода ножей (шарнир с мотором ножей при закрывании теряет соосность, сделать упор) | 1h | 2026-09-15 09:00 A | 2026-09-15 10:00 A |  | 100% |  |  |  | start no earlier than 2026-09-15 09:00 | Тимофеев В | 1h | 1h |
| 1519 | 3.14 | Разобраться почему закусывает резьбу прижима ножей к фильере (испытывать после установки штурвала) | 1h | 2026-09-15 09:00 A | 2026-09-15 10:00 A |  | 100% |  |  |  | start no earlier than 2026-09-15 09:00 | Тимофеев В | 1h | 1h |
| 1520 | 3.15 | Регулировка ножей на экструдере — сделать «штурвал»; | 2h | 2026-09-15 09:00 A | 2026-09-15 11:00 A |  | 100% |  |  |  | start no earlier than 2026-09-15 09:00 | Тимофеев В | 2h | 2h |
| 1521 | 3.16 | **Гранулы выходили из печи со следами смазки** | 0.5d | 2026-10-01 09:00 A | 2026-10-01 13:00 A |  | 100% |  |  |  |  |  | 4h | 4h |
| 1522 | 3.16.1 | (сделать направляющие в печи); | 4h | 2026-10-01 09:00 A | 2026-10-01 13:00 A |  | 100% |  |  |  | start no earlier than 2026-10-02 09:00 | Тимофеев В | 4h | 4h |
| 1523 | 3.17 | **С двигателя экструдера выдавило много масла;** | 32.5d | 2026-09-18 09:00 A | 2026-10-27 13:00 |  | 36% | 20.94d |  |  |  |  | 11.25h | 4h |
| 1524 | 3.17.1 | установить поплавок на верхний уровень для блокировки насоса- осмотр | 4h | 2026-09-18 09:00 A | 2026-09-18 13:00 A |  | 100% |  |  |  | start no earlier than 2026-09-18 09:00 | Бобренок В | 4h | 4h |
| 1525 | 3.17.2 | заявка на датчики | 1h | 2026-09-18 14:00 | 2026-09-18 15:00 | 1524 |  |  | 118.19d | 0d | start no earlier than 2026-09-18 08:00 | Зорькин В | 1h |  |
| 1526 | 3.17.3 | контроль достачки | 15min | 2026-09-25 15:00 | 2026-09-25 15:15 | 1525FS+7d |  |  | 118.19d | 4.34d | start no earlier than 2026-09-18 08:00 | Зорькин В | 0.25h |  |
| 1527 | 3.17.4 | монтаж датчик в редуктор | 2h | 2026-10-01 09:00 | 2026-10-01 11:00 | 1526FS+1d |  |  | 113.84d | 17.75d | start no earlier than 2026-10-01 09:00 | Бобренок В | 2h |  |
| 1528 | 3.17.5 | подключение датчика в схему - блокировка по уровню | 4h | 2026-10-27 09:00 | 2026-10-27 13:00 | 1527FS+1d |  |  | 96.09d |  | start no earlier than 2026-10-27 09:00 | Дедов В | 4h |  |
| 1529 | 3.18 | Заменить кран подачи воды (второй слева) на втором предкондиционере — | 1h | 2026-09-14 09:00 A | 2026-09-14 10:00 A |  | 100% |  |  |  | start no earlier than 2026-09-14 09:00 | Тимофеев В | 1h | 1h |

| ID | WBS | Task | Type | Duration | Start | Finish | Predecessors | Complete | Total slack | Free slack | Constraint | Resources | Work | Actual work |
| --- | --- | --- | --- | --- | --- | --- | --- | --- | --- | --- | --- | --- | --- | --- |
| 1530 | 3.19 | **По схемам Труфанова разобраться с автоматикой шкафа и подключить 3 датчика уровня и подписать, где и что находится +кнопки и переключатели на шкафу тоже подписать** |  | 1.06d | 2026-09-07 09:00 A | 2026-09-08 09:30 A |  | 100% |  |  |  |  | 8.5h | 8.5h |
| 1531 | 3.19.1 | изучение схему |  | 8h | 2026-09-07 09:00 A | 2026-09-07 18:00 A |  | 100% |  |  | start no earlier than 2026-09-07 09:00 | Дедов В | 8h | 8h |
| 1532 | 3.19.2 | подкл 2я нория по датчику уровня |  | 30min | 2026-09-08 09:00 A | 2026-09-08 09:30 A |  | 100% |  |  | start no earlier than 2026-09-08 08:00 | Дедов В | 0.5h | 0.5h |
| 1533 | 3.20 | **установить ограничитель на дверь что бы попадала под движение рольворот** |  | 15.12d | 2026-09-22 09:00 | 2026-10-08 10:00 |  |  | 109.47d |  |  |  | 1.5h |  |
| 1534 | 3.20.1 | заявка |  | 15min | 2026-09-22 09:00 | 2026-09-22 09:15 |  |  | 118.41d | 0.97d | start no earlier than 2026-09-22 09:00 | Зорькин В | 0.25h |  |
| 1535 | 3.20.2 | контроль доставки |  | 15min | 2026-09-28 09:00 | 2026-09-28 09:15 | 1534FS+5d |  | 117.44d | 7.97d | start no earlier than 2026-09-28 09:00 | Зорькин В | 0.25h |  |
| 1536 | 3.20.3 | монтаж |  | 1h | 2026-10-08 09:00 | 2026-10-08 10:00 | 1535FS+1d |  | 109.47d |  | start no earlier than 2026-10-08 09:00 | Бундин В | 1h |  |
| 1537 | 3.21 | приварить к люку сливной ямы вспомогательную ручку (ручка весит на стеллаже в слесарке) | manual | 2h | 2026-08-30 09:00 | 2026-08-30 11:00 |  |  |  |  | start no earlier than 2026-08-30 09:00 | Бундин В | 2h |  |
| 1538 | 3.22 | **монтаж унитаз, получить на складе** |  | 0d | 2026-08-17 09:00 A | 2026-08-17 09:00 A |  | 100% |  |  |  |  |  |  |
| 1539 | 3.22.1 | крышка бачка лопнувшая- поменять по гарантии | milestone | 0d | 2026-08-17 09:00 A | 2026-08-17 09:00 A |  | 100% |  |  | start no earlier than 2026-08-17 09:00 | Зорькин В |  |  |
| 1540 | 3.23 | закрыить металлом 1.5мм щель стена / площадка загрузки муки. Между рольворотой и стеной с окнами |  | 2h | 2026-08-15 09:00 A | 2026-08-17 11:00 A |  | 100% |  |  | start no earlier than 2026-08-15 09:00 | Бундин В | 2h | 2h |
| 1541 | 3.24 | закрыть щель битумной лентой стык площадка-профлист стенка. Полоску клеить из нутри, обезжирить. |  | 2h | 2026-08-16 09:00 A | 2026-08-17 11:00 A |  | 100% |  |  | start no earlier than 2026-08-16 09:00 | Бундин В | 2h | 2h |
| 1542 | 3.25 | монтаж светильник в корридор / лестница на площадку жиров |  | 3h | 2026-08-16 09:00 A | 2026-08-17 12:00 A |  | 100% |  |  | start no earlier than 2026-08-16 09:00 | Бундин В | 3h | 3h |
| 1543 | 3.26 | **ломает гранулу после печи** |  | 17.12d? | 2026-08-18 09:00 A | 2026-09-09 10:00 A |  | 100% |  |  |  |  | 18.5h | 18.5h |
| 1544 | 3.26.1 | тест на ручной загрузке |  | 2h | 2026-08-18 09:00 A | 2026-08-18 11:00 A |  | 100% |  |  | start no earlier than 2026-08-18 09:00 | Шуранов Ю | 2h | 2h |
| 1545 | 3.26.2 | полная раборка трассы на ревизию острых граней? |  | 2h | 2026-08-19 09:00 A | 2026-08-19 11:00 A |  | 100% |  |  | start no earlier than 2026-08-19 09:00 | Тимофеев В | 2h | 2h |
| 1546 | 3.26.3 | определить параметры нории для запроса цены |  | 2h | 2026-08-18 09:00 A | 2026-08-18 11:00 A |  | 100% |  |  | start no earlier than 2026-08-18 09:00 | Шуранов Ю | 2h | 2h |
| 1547 | 3.26.4 | контроль отвта |  | 15min | 2026-09-03 09:00 A | 2026-09-03 09:15 A | 1546FS+5d | 100% |  |  | start no earlier than 2026-09-03 09:00 | Зорькин В | 0.25h | 0.25h |
| 1548 | 3.26.5 | изготовить новый отвод 90 с фланцем, учесть степеньку |  | 1h | 2026-09-02 09:00 A | 2026-09-02 10:00 A |  | 100% |  |  | start no earlier than 2026-09-09 09:00 | Макаревич А | 1h | 1h |
| 1549 | 3.26.6 | тест |  | 1h | 2026-08-19 09:00 A | 2026-08-19 10:00 A |  | 100% |  |  | start no earlier than 2026-08-19 09:00 | Тимофеев В; Шуранов Ю | 2h | 2h |
| 1550 | 3.26.7 | переварить фланец на угловом соединении (объясню по телефону). То же самое | milestone | 0h | 2026-09-04 09:00 A | 2026-09-04 09:00 A |  | 100% |  |  | start no earlier than 2026-09-04 09:00 | Макаревич А |  |  |
| 1551 | 3.26.8 | печать переходника на 3д принтере |  | 1d? | 2026-08-31 09:00 A | 2026-08-31 18:00 A |  | 100% |  |  | start no earlier than 2026-08-31 09:00 | Домоводов К | 8h | 8h |
| 1552 | 3.26.9 | проверка размещения нории от квадропака |  | 15min | 2026-08-18 09:00 A | 2026-08-18 09:15 A |  | 100% |  |  | start no earlier than 2026-08-18 09:00 | Шуранов Ю | 0.25h | 0.25h |
| 1553 | 3.26.10 | установить угловой фланец на пневмотрассу |  | 1h | 2026-09-09 09:00 A | 2026-09-09 10:00 A |  | 100% |  |  | start no earlier than 2026-09-09 09:00 | Тимофеев В | 1h | 1h |

| ID | WBS | Task | Type | Duration | Start | Finish | Predecessors | Complete | Remaining | Total slack | Free slack | Constraint | Resources | Work | Actual work |
| --- | --- | --- | --- | --- | --- | --- | --- | --- | --- | --- | --- | --- | --- | --- | --- |
| 1554 | 3.27 | **доп мощности для приточной вентиляции** |  | 34d? | 2026-08-21 09:00 A | 2026-09-28 18:00 |  | 16% | 28.63d? | 117.59d |  |  |  | 152h | 24h |
| 1555 | 3.27.1 | проект автоматика ограничения мощности в автомате |  | 1d? | 2026-08-31 09:00 | 2026-08-31 18:00 |  |  |  | 117.59d | 0d | start no earlier than 2026-08-31 09:00 | Домоводов К | 8h |  |
| 1556 | 3.27.2 | составить ТЗ на монтаж кабеля |  | 3d | 2026-08-21 09:00 A | 2026-08-25 18:00 A |  | 100% |  |  |  | start no earlier than 2026-08-21 09:00 | Домоводов К | 24h | 24h |
| 1557 | 3.27.3 | получить КП / счет договор | milestone | 0d | 2026-09-01 18:00 | 2026-09-01 18:00 | 1555FS+1d, 1556FS+2d |  |  | 117.59d | 0d | start no earlier than 2026-08-27 09:00 | Домоводов К |  |  |
| 1558 | 3.27.4 | предоплата | milestone | 0d | 2026-09-02 18:00 | 2026-09-02 18:00 | 1557FS+1d |  |  | 117.59d | 0d | start no earlier than 2026-08-10 08:00 | Домоводов К |  |  |
| 1559 | 3.27.5 | монтаж |  | 15d | 2026-09-14 09:00 | 2026-09-28 18:00 | 1558FS+10d |  |  | 117.59d |  | start no earlier than 2026-08-10 08:00 | Подрядчик | 120h |  |
| 1560 | 3.28 | сделать перемычку на нижней части системы загрузки палет подачи жиров и гидрализата | manual | 3h | 2026-08-15 09:00 | 2026-08-15 12:00 |  |  |  |  |  | start no earlier than 2026-08-15 09:00 | Бундин В | 3h |  |
| 1561 | 3.29 | **сборка квадропака 3 цех** |  | 44.5d | 2026-08-14 09:00 A | 2026-10-05 13:00 |  | 70% | 13.19d | 112.09d |  |  |  | 37h | 25h |
| 1562 | 3.29.1 | Монтаж/позиционирование квадропака |  | 5h | 2026-09-02 09:00 A | 2026-09-02 15:00 A |  | 100% |  |  |  | start no earlier than 2026-09-02 09:00 | Труфанов А | 5h | 5h |
| 1563 | 3.29.2 | перестановка норий, задействовать бункер |  | 2h | 2026-08-17 09:00 A | 2026-08-17 11:00 A |  | 100% |  |  |  | start no earlier than 2026-08-17 09:00 | Тимофеев В; Некрасов А | 4h | 4h |
| 1564 | 3.29.3 | сборка накопительный стол |  | 2h | 2026-08-19 09:00 A | 2026-08-19 11:00 A | 1563 | 100% |  |  |  | start no earlier than 2026-08-19 09:00 | Тимофеев В | 2h | 2h |
| 1565 | 3.29.4 | подключение дозатор |  | 1h | 2026-08-14 09:00 A | 2026-08-14 10:00 A |  | 100% |  |  |  | start no earlier than 2026-08-14 09:00 | Труфанов А | 1h | 1h |
| 1566 | 3.29.5 | зарисовка схема ШУ нория - понять управление бункером |  | 4h | 2026-08-14 09:00 | 2026-08-14 13:00 |  |  |  | 156.09d |  | start no earlier than 2026-08-14 09:00 | Труфанов А | 4h |  |
| 1567 | 3.29.6 | подключение нория к упаковке |  | 2h | 2026-08-14 14:00 A | 2026-08-14 16:00 A | 1566 | 100% |  |  |  | start no earlier than 2026-08-14 09:00 | Труфанов А | 2h | 2h |
| 1568 | 3.29.7 | подключение вводный кабель (питание) информация у Труфанова |  | 2h | 2026-09-04 09:00 A | 2026-09-04 11:00 A | 1567 | 100% |  |  |  | start no earlier than 2026-09-04 09:00 | Бундин В; Труфанов А | 4h | 4h |
| 1569 | 3.29.8 | тест на пакетах |  | 4h | 2026-10-05 09:00 | 2026-10-05 13:00 |  |  |  | 112.09d |  | start no earlier than 2026-10-05 09:00 | Труфанов А; Зорькин В | 8h |  |
| 1570 | 3.29.9 | подключениекомпрессор |  | 1h | 2026-09-03 09:00 A | 2026-09-03 10:00 A | 1568 | 100% |  |  |  | start no earlier than 2026-09-03 09:00 | Бобренок В | 1h | 1h |
| 1571 | 3.29.10 | Установка квадропака (позиционирование нижней машины) информация у Труфанова |  | 2h | 2026-09-02 09:00 A | 2026-09-02 11:00 A |  | 100% |  |  |  | start no earlier than 2026-09-02 09:00 | Труфанов А; Бундин В | 4h | 4h |
| 1572 | 3.29.11 | Выставить опоры верхней рамы и лестницы по уровню |  | 1h | 2026-09-02 09:00 A | 2026-09-02 10:00 A |  | 100% |  |  |  | start no earlier than 2026-09-02 08:00 | Бундин В | 1h | 1h |
| 1573 | 3.29.12 | Редуктор стола повернуть кабелем к электрощиту (на столе) |  | 30min | 2026-09-02 09:00 A | 2026-09-02 09:30 A |  | 100% |  |  |  | start no earlier than 2026-09-02 08:00 | Бундин В | 0.5h | 0.5h |
| 1574 | 3.29.13 | Провод от редуктора и кнопки в гофре закрепить по раме стола завести в шкаф |  | 30min | 2026-09-02 09:00 A | 2026-09-02 09:30 A |  | 100% |  |  |  | start no earlier than 2026-09-02 08:00 | Бундин В | 0.5h | 0.5h |
| 1575 | 3.30 | сделать ручку и зацепной крюк для открытия люка сливной ямы | manual | 2h | 2026-08-08 09:00 A | 2026-08-08 11:00 A |  | 100% |  |  |  | start no earlier than 2026-08-08 09:00 | Бобренок В | 2h | 2h |
| 1576 | 3.31 | **карусель добавить перемычку снизу, чтобы не выпал мешок** |  | 30.25d | 2026-08-18 09:00 A | 2026-09-22 11:00 |  | 93% | 2.16d | 124.34d |  |  |  | 2.33h | 2.17h |
| 1577 | 3.31.1 | заказать краску |  | 10min | 2026-08-18 09:00 A | 2026-08-18 09:10 A |  | 100% |  |  |  | start no earlier than 2026-08-18 09:00 | Шуранов Ю | 0.17h | 0.17h |
| 1578 | 3.31.2 | контроль доставки |  | 10min | 2026-08-31 09:00 | 2026-08-31 09:10 | 1577FS+5d |  |  | 145.57d |  | start no earlier than 2026-08-31 09:00 | Зорькин В | 0.17h |  |
| 1579 | 3.31.3 | покрасить перемычки система безопасности) |  | 2h | 2026-09-22 09:00 A | 2026-09-22 11:00 A | 1578FS+1d | 100% |  |  |  | start no earlier than 2026-09-22 09:00 | Тимофеев В | 2h | 2h |
| 1580 | 3.32 | убрать битумную ленту снаружи мезонина |  | 1h | 2026-08-04 08:00 A | 2026-08-04 10:00 A |  | 100% |  |  |  | start no earlier than 2026-08-04 08:00 | Макаревич А | 1h | 1h |
| 1581 | 3.33 | хорошо закрепить шланг подачи воды в прекондеционер |  | 2h | 2026-08-04 08:00 A | 2026-08-04 11:00 A |  | 100% |  |  |  | start no earlier than 2026-08-04 08:00 | Макаревич А | 2h | 2h |
| 1582 | 3.34 | на выходе ротаметра поменять шланг большего диаметра |  | 1h | 2026-07-31 08:00 A | 2026-07-31 10:00 A |  | 100% |  |  |  | start no earlier than 2026-07-31 08:00 | Тимофеев В | 1h | 1h |
| 1583 | 3.35 | покрасить кронштейн крепления ротаметра |  | 1h | 2026-07-31 09:00 A | 2026-07-31 10:00 A |  | 100% |  |  |  | start no earlier than 2026-07-31 09:00 | Бундин В | 1h | 1h |
| 1584 | 3.36 | не набирает заданную температуру 4 зона экструдера- разобраться |  | 2h | 2026-07-30 08:00 A | 2026-07-30 11:00 A |  | 100% |  |  |  | start no earlier than 2026-07-30 08:00 | Дедов В | 2h | 2h |
| 1585 | 3.37 | сборка кожухи на печи |  | 2h | 2026-07-15 09:00 A | 2026-07-15 11:00 A |  | 100% |  |  |  | start no earlier than 2026-07-15 09:00 | Бундин В | 2h | 2h |

| ID | WBS | Task | Type | Duration | Start | Finish | Predecessors | Complete | Actual start | Actual finish | Constraint | Resources | Work | Actual work |
| --- | --- | --- | --- | --- | --- | --- | --- | --- | --- | --- | --- | --- | --- | --- |
| 1586 | 3.38 | **установить зеркало сферическое на бункер** |  | 15.5d | 2026-07-07 09:00 A | 2026-07-28 13:00 A |  | 100% |  |  |  |  | 5h | 5h |
| 1587 | 3.38.1 | заявка |  | 1h | 2026-07-07 09:00 A | 2026-07-07 10:00 A |  | 100% |  |  | start no earlier than 2026-07-07 09:00 | Зорькин В | 1h | 1h |
| 1588 | 3.38.2 | контроль доставки | milestone | 0d | 2026-07-17 10:00 A | 2026-07-17 10:00 A | 1587FS+10d | 100% |  |  | start no earlier than 2026-07-14 08:00 | Зорькин В |  |  |
| 1589 | 3.38.3 | монтаж |  | 4h | 2026-07-28 09:00 A | 2026-07-28 13:00 A | 1588FS+1d | 100% |  |  | start no earlier than 2026-07-28 09:00 | Макаревич А | 4h | 4h |
| 1590 | 3.39 | поиск след от смазки на охладителе |  | 1h | 2026-07-10 09:00 A | 2026-07-10 10:00 A |  | 100% |  |  | start no earlier than 2026-07-10 09:00 | Тимофеев В; Зорькин В | 2h | 2h |
| 1591 | 3.40 | **установить наосос центробежный на бочку слив с парогенератора, врезать штуцер в бочку** |  | 0.25d | 2026-07-15 09:00 A | 2026-07-15 11:00 A |  | 100% |  |  |  |  | 4h | 4h |
| 1592 | 3.40.1 | орг закуп с курьером |  | 2h | 2026-07-15 09:00 A | 2026-07-15 11:00 A |  | 100% |  |  | start no earlier than 2026-07-15 09:00 | Зорькин В | 2h | 2h |
| 1593 | 3.40.2 | монтаж штуцер |  | 2h | 2026-07-15 09:00 A | 2026-07-15 11:00 A |  | 100% |  |  | start no earlier than 2026-07-15 09:00 | Бобренок В | 2h | 2h |
| 1594 | 3.41 | **вода идет не стабильно** |  | 4.38d | 2026-07-09 09:00 A | 2026-07-15 12:00 A |  | 100% |  |  |  |  | 8h | 8h |
| 1595 | 3.41.1 | Поставить гидроаккумулятор на насос между выходом насосной станции и 3-х ходомым краном подачи воды в экструдер и заменить трубки на шланги |  | 3h | 2026-07-09 09:00 A | 2026-07-09 12:00 A |  | 100% |  |  | start no earlier than 2026-07-09 09:00 | Тимофеев В | 3h | 3h |
| 1596 | 3.41.2 | тест работы воды с ПГ на давлении питательного насоса 3+ |  | 1h | 2026-07-10 09:00 A | 2026-07-10 10:00 A |  | 100% |  |  | start no earlier than 2026-07-10 09:00 | Зорькин В; Тимофеев В | 2h | 2h |
| 1597 | 3.41.3 | орг закуп с курьером |  | 2h | 2026-07-15 09:00 A | 2026-07-15 11:00 A | 1592SS | 100% |  |  | start no earlier than 2026-07-13 09:00 | Зорькин В | 2h | 2h |
| 1598 | 3.41.4 | замена шланг напорный с насоса до ротаметра |  | 1h | 2026-07-15 11:00 A | 2026-07-15 12:00 A | 1597 | 100% |  |  | start no earlier than 2026-07-13 09:00 | Бобренок В | 1h | 1h |
| 1599 | 3.42 | Доработать крутилку ссыпа гранулы, прихватить на сварку |  | 1h | 2026-07-09 09:00 A | 2026-07-09 10:00 A |  | 100% |  |  | start no earlier than 2026-07-09 09:00 | Макаревич А | 1h | 1h |
| 1600 | 3.43 | удлинить лоток ножевого узла, до кромки загрузки применик пневмотранспорта |  | 3h | 2026-07-09 09:00 A | 2026-07-09 12:00 A |  | 100% |  |  | start no earlier than 2026-07-09 09:00 | Макаревич А | 3h | 3h |
| 1601 | 3.44 | Снять торцевые дверцы на печи для доступа к сетке |  | 1h | 2026-07-08 09:00 A | 2026-07-08 10:00 A |  | 100% |  |  | start no earlier than 2026-07-08 08:00 | Бундин В | 1h | 1h |
| 1602 | 3.45 | Снять кожухи на редукторах на цепях |  | 1h | 2026-07-08 09:00 A | 2026-07-08 10:00 A |  | 100% |  |  | start no earlier than 2026-07-08 08:00 | Бундин В | 1h | 1h |
| 1603 | 3.46 | Установка раковины,унитаза в 3 цеху 2 этаж |  | 4h | 2026-07-07 09:00 A | 2026-07-07 13:00 A |  | 100% |  |  | start no earlier than 2026-07-07 09:00 | Бундин В | 4h | 4h |
| 1604 | 3.47 | Установить тройник на компрессор маленький, на входе. (тройни пришел сегодня на склад) |  | 1h | 2026-07-08 09:00 A | 2026-07-08 10:00 A |  | 100% |  |  | start no earlier than 2026-07-08 08:00 | Бундин В | 1h | 1h |
| 1605 | 3.48 | Вернуть упакованный унитаз на склад |  | 30min | 2026-07-08 09:00 A | 2026-07-08 09:30 A |  | 100% |  |  | start no earlier than 2026-07-08 08:00 | Бундин В | 0.5h | 0.5h |
| 1606 | 3.49 | **на тепловых реле 1 и 2 смесителя добавить порог выключения** |  | 1h? | 2026-07-11 09:00 | 2026-07-11 10:00 |  | 100% | 2026-07-14 09:00 | 2026-09-03 10:00 |  |  | 1.5h | 1.5h |
| 1607 | 3.49.1 | заявка на тепловые реле с большим номинолом |  | 15min | 2026-07-14 09:00 A | 2026-07-14 09:15 A |  | 100% |  |  | start no earlier than 2026-07-14 08:00 | Зорькин В | 0.25h | 0.25h |
| 1608 | 3.49.2 | доставка контроль |  | 15min | 2026-08-28 09:00 A | 2026-08-28 09:15 A | 1607FS+5d | 100% |  |  | start no earlier than 2026-08-28 09:00 | Зорькин В | 0.25h | 0.25h |
| 1609 | 3.49.3 | замена тепловых реле, получить на складе |  | 1h | 2026-09-03 09:00 A | 2026-09-03 10:00 A | 1608FS+1d | 100% |  |  | start no earlier than 2026-09-03 09:00 | Бобренок В | 1h | 1h |
| 1610 | 3.50 | сделать ручки с резьбой для снятия матрицы экструдера |  | 2h | 2026-07-04 09:00 A | 2026-07-06 11:00 A |  | 100% |  |  | start no earlier than 2026-07-04 09:00 | Макаревич А | 2h | 2h |
| 1611 | 3.51 | сделать противоудары головы на циклоне в зоне жиров | manual | 1h | 2026-07-26 09:00 A | 2026-07-26 10:00 A |  | 100% |  |  | start no earlier than 2026-07-26 09:00 | Макаревич А | 1h | 1h |
| 1612 | 3.52 | сделать откидную крышку на ножевом узле (расскажу как) |  | 8h | 2026-07-04 09:00 A | 2026-07-06 18:00 A |  | 100% |  |  | start no earlier than 2026-07-04 09:00 | Макаревич А | 8h | 8h |
| 1613 | 3.53 | подклинивает охладитель (все ярусы)- разобраться почему |  | 2h | 2026-07-11 09:00 A | 2026-07-13 11:00 A |  | 100% |  |  | start no earlier than 2026-07-11 09:00 | Макаревич А | 2h | 2h |

| ID | WBS | Task | Type | Duration | Start | Finish | Complete | Actual finish | Total slack | Constraint | Resources | Work | Actual work |
| --- | --- | --- | --- | --- | --- | --- | --- | --- | --- | --- | --- | --- | --- |
| 1614 | 3.54 | **откалибровать весы красных смесителей, муку с контрольным весом обеспечит 5ц** |  | 2h? | 2026-07-29 09:00 A | 2026-07-29 11:00 | 100% | 2026-08-03 18:00 |  |  | Дедов В | 10h | 10h |
| 1615 | 3.54.1 | вызвать специалистов |  | 1d? | 2026-08-03 09:00 A | 2026-08-03 18:00 A | 100% |  |  | start no earlier than 2026-08-03 09:00 | Шуранов Ю | 8h | 8h |
| 1616 | 3.55 | **установка частотника на шнек подачи со смесителей на ногу опоры шнека в разрыв питания шнека** |  | 0.12d | 2026-07-04 09:00 A | 2026-07-06 10:00 A | 100% |  |  |  |  | 1h | 1h |
| 1617 | 3.55.1 | демонтировать частотник шнека (в слесарку) |  | 1h | 2026-07-04 09:00 A | 2026-07-06 10:00 A | 100% |  |  | start no earlier than 2026-07-04 09:00 | Дедов В | 1h | 1h |
| 1618 | 3.56 | щель запенить выход из цеха |  | 1d? | 2026-07-02 09:00 A | 2026-07-02 18:00 A | 100% |  |  | start no earlier than 2026-07-02 09:00 | Олег | 8h | 8h |
| 1619 | 3.57 | силиконим двери прекондиционера (одну эксперимент) |  | 2h | 2026-07-02 09:00 A | 2026-07-02 11:00 A | 100% |  |  | start no earlier than 2026-07-03 09:00 | Дедов В | 2h | 2h |
| 1620 | 3.58 | наростить лопатку датчика переполнения на приемном лотке прекондиционера |  | 1h | 2026-06-30 09:00 A | 2026-06-30 10:00 A | 100% |  |  | start no earlier than 2026-06-30 09:00 | Бундин В | 1h | 1h |
| 1621 | 3.59 | установка бака стабилизации на подачу воды в прекондеционер (подключение) |  | 2h | 2026-07-02 09:00 A | 2026-07-02 11:00 A | 100% |  |  | start no earlier than 2026-07-02 09:00 | Тимофеев В | 2h | 2h |
| 1622 | 3.60 | изготовить фильтры на установки охлаждения |  | 1d? | 2026-07-06 09:00 | 2026-07-06 18:00 |  |  | 184.59d | start no earlier than 2026-07-06 09:00 | Тимофеев В | 8h |  |
| 1623 | 3.61 | удлинить горловину для второго красного смесителя |  | 2h | 2026-06-29 09:00 A | 2026-06-29 11:00 A | 100% |  |  | start no earlier than 2026-06-29 09:00 | Бундин В | 2h | 2h |
| 1624 | 3.62 | закрепить датчик сырья лопаткой в горке, под магнитом. Бункер экструдера |  | 4h | 2026-06-27 09:00 A | 2026-06-29 13:00 A | 100% |  |  | start no earlier than 2026-06-27 09:00 | Бундин В | 4h | 4h |
| 1625 | 3.63 | над магнитом сделать приемную воронку, борта, чтобы не пересыпалось сырье |  | 4h | 2026-06-27 09:00 A | 2026-06-29 13:00 A | 100% |  |  | start no earlier than 2026-06-27 09:00 | Бундин В | 4h | 4h |
| 1626 | 3.64 | удлинить воронку смесителя до горловины шнека. Приготовить сварщику, обяснить что нужно сделать. Вместо вибратора |  | 4h | 2026-06-27 09:00 A | 2026-06-29 13:00 A | 100% |  |  | start no earlier than 2026-06-27 09:00 | Дедов В; Бундин В | 8h | 8h |
| 1627 | 3.65 | байпас для масленной станции |  | 2h | 2026-07-01 09:00 A | 2026-07-01 11:00 A | 100% |  |  | start no earlier than 2026-07-01 09:00 | Тимофеев В | 2h | 2h |
| 1628 | 3.66 | **площадка для операторов для доступа к бункеру, что бы не наступали на краны** |  | 0.12d | 2026-07-02 09:00 A | 2026-07-02 10:00 A | 100% |  |  |  | Макаревич А; Некрасов А | 4h | 4h |
| 1629 | 3.66.1 | убрать заусенцы болгаркой |  | 1h | 2026-07-02 09:00 A | 2026-07-02 10:00 A | 100% |  |  | start no earlier than 2026-07-02 09:00 | Макаревич А; Тимофеев В | 2h | 2h |
| 1630 | 3.67 | **монтаж второй площадки с другой стороны (лестницу берем у 5 цеха -белую)** |  | 0.12d | 2026-07-03 09:00 A | 2026-07-03 10:00 A | 100% |  |  |  | Макаревич А; Некрасов А | 3h | 3h |
| 1631 | 3.67.1 | покрасить лестницу (мастер ц.1 даст людей- контроль) |  | 1h | 2026-07-03 09:00 A | 2026-07-03 10:00 A | 100% |  |  | start no earlier than 2026-07-03 09:00 | Макаревич А | 1h | 1h |
| 1632 | 3.68 | закрутить крышку двигателя улитки на циклоне жиров |  | 1h | 2026-06-25 09:00 A | 2026-06-25 10:00 A | 100% |  |  | start no earlier than 2026-06-25 09:00 | Дедов В | 1h | 1h |
| 1633 | 3.69 | укоротить шланг подачи масла | manual | 1h | 2026-06-25 08:00 A | 2026-06-25 09:00 A | 100% |  |  | start no earlier than 2026-06-25 08:00 | Макаревич А | 1h | 1h |
| 1634 | 3.70 | проверка подачи воды на парогенератор и прекондиционер, почему клапан подачи в бак заблокирован. |  | 2h | 2026-06-25 09:00 A | 2026-06-25 11:00 A | 100% |  |  | start no earlier than 2026-06-25 09:00 | Дедов В | 2h | 2h |
| 1635 | 3.71 | проверить парогенератор |  | 0.5h | 2026-06-25 09:00 A | 2026-06-25 09:30 A | 100% |  |  | start no earlier than 2026-06-25 09:00 | Дедов В | 0.5h | 0.5h |
| 1636 | 3.72 | вскрыть парогенератор, чистка электродов- фото |  | 3h | 2026-06-25 08:00 A | 2026-06-25 12:00 A | 100% |  |  | start no earlier than 2026-06-25 08:00 | Макаревич А | 3h | 3h |
| 1637 | 3.73 | подключить ролеты на охладителе |  | 1h | 2026-06-25 09:00 A | 2026-06-25 10:00 A | 100% |  |  | start no earlier than 2026-06-25 09:00 | Дедов В | 1h | 1h |
| 1638 | 3.74 | изготовление и установка шибера в лоток |  | 2h | 2026-06-25 09:00 A | 2026-06-25 11:00 A | 100% |  |  | start no earlier than 2026-06-25 09:00 | Дедов В | 2h | 2h |
| 1639 | 3.75 | контроль печи, будет включена пока не перестанет дымить |  | 1h | 2026-06-24 09:00 A | 2026-06-24 10:00 A | 100% |  |  | start no earlier than 2026-06-24 09:00 | Труфанов А; Макаревич А | 2h | 2h |

| ID | WBS | Task | Type | Duration | Start | Finish | Predecessors | Complete | Constraint | Resources | Work | Actual work |
| --- | --- | --- | --- | --- | --- | --- | --- | --- | --- | --- | --- | --- |
| 1640 | 3.76 | **взять на складе у Веры кронштейн под щетку, закрепить на него саму щетку и прикрутить на мезонине навесок в сторону ворот** |  | 28.38d | 2026-07-07 09:00 A | 2026-08-14 12:00 A |  | 100% |  |  | 3.5h | 3.5h |
| 1641 | 3.76.1 | заказать профиль 5мм |  | 15min | 2026-07-07 09:00 A | 2026-07-07 09:15 A |  | 100% | start no earlier than 2026-07-07 09:00 | Зорькин В | 0.25h | 0.25h |
| 1642 | 3.76.2 | контроль досставки |  | 15min | 2026-07-17 09:15 A | 2026-07-17 09:30 A | 1641FS+10d | 100% | start no earlier than 2026-07-07 09:00 | Зорькин В | 0.25h | 0.25h |
| 1643 | 3.76.3 | прикрепить на клепки/ саморезу щетку и установить на мезонине где ворота (все это находиться в 3 ц. справа на входе) Еще одна щетка есть у веры на складе, висела на кабинке | manual | 3h | 2026-08-14 09:00 A | 2026-08-14 12:00 A | 1642 | 100% |  | Макаревич А | 3h | 3h |
| 1644 | 3.77 | кабель трется о дверь, уложить в лоток, приподнять -закрепить к воздуховоду |  | 3h | 2026-06-24 09:00 A | 2026-06-24 12:00 A |  | 100% | start no earlier than 2026-06-24 09:00 | Труфанов А | 3h | 3h |
| 1645 | 3.78 | на частотнике пневмоулитки на жирах- увеличить время разгона и торможения |  | 1h | 2026-06-23 09:00 A | 2026-06-23 10:00 A |  | 100% | start no earlier than 2026-06-23 09:00 | Труфанов А | 1h | 1h |
| 1646 | 3.79 | проверить редукторы на печи (утечка есть или нет) |  | 1h | 2026-06-23 09:00 A | 2026-06-23 10:00 A |  | 100% | start no earlier than 2026-06-23 09:00 | Труфанов А | 1h | 1h |
| 1647 | 3.80 | убрать трубу нерж в коридоре возле охладителя в комнату на выходе из цеха | manual | 1h | 2026-06-20 09:00 A | 2026-06-20 10:00 A |  | 100% | start no earlier than 2026-06-20 09:00 | Бундин В | 1h | 1h |
| 1648 | 3.81 | капает с улитки вытяжки печи- просверлить сверло 6мм |  | 1h | 2026-06-20 09:00 A | 2026-06-22 10:00 A |  | 100% | start no earlier than 2026-06-20 09:00 | Дедов В | 1h | 1h |
| 1649 | 3.82 | герметизация всех стыков вневмотрубы аллюминевым скотчем (улитка с печи на жиры) | manual | 1h | 2026-06-21 09:00 A | 2026-06-21 10:00 A |  | 100% | start no earlier than 2026-06-21 09:00 | Труфанов А | 1h | 1h |
| 1650 | 3.83 | отпилить одну перекладину опоры вентиляции, чтобы открывалась дверь печи | manual | 3h | 2026-06-21 09:00 A | 2026-06-21 12:00 A |  | 100% | start no earlier than 2026-06-21 09:00 | Бундин В | 3h | 3h |
| 1651 | 3.84 | проверка подачи воды в прекондиционер | manual | 1h | 2026-06-21 09:00 A | 2026-06-21 10:00 A |  | 100% | start no earlier than 2026-06-21 09:00 | Труфанов А | 1h | 1h |
| 1652 | 3.85 | включаем печь, прожигаем масло- чтобы вагорело и не дымило… контроль |  | 1h | 2026-06-23 09:00 A | 2026-06-23 10:00 A |  | 100% | start no earlier than 2026-06-23 09:00 | Шуранов Ю | 1h | 1h |
| 1653 | 3.86 | прикрутить горловину прекондиционера (находиться в комнате на выходе из цеха) | manual | 1h | 2026-06-20 09:00 A | 2026-06-20 10:00 A |  | 100% | start no earlier than 2026-06-20 09:00 | Бундин В | 1h | 1h |
| 1654 | 3.87 | на 1 и 2 зоне температура растет больше факта- проверить |  | 1h | 2026-06-23 09:00 A | 2026-06-23 10:00 A |  | 100% | start no earlier than 2026-06-23 09:00 | Труфанов А | 1h | 1h |
| 1655 | 3.88 | собрать парогенератор (насос+ вход вода в парик) |  | 1h | 2026-06-19 09:00 A | 2026-06-19 10:00 A |  | 100% | start no earlier than 2026-06-19 09:00 | Дедов В | 1h | 1h |
| 1656 | 3.89 | увеличить частоту на пневмоулитку с печи в жиры |  | 1h | 2026-06-19 09:00 A | 2026-06-19 10:00 A |  | 100% | start no earlier than 2026-06-19 09:00 | Дедов В | 1h | 1h |
| 1657 | 3.90 | трубу жиротопки утеплить |  | 2h | 2026-06-18 09:00 A | 2026-06-18 11:00 A |  | 100% | start no earlier than 2026-06-18 08:00 | Труфанов А | 2h | 2h |
| 1658 | 3.91 | установка смесителя душа 2 этаж продолжить |  | 4h | 2026-07-07 09:00 A | 2026-07-07 13:00 A |  | 100% | start no earlier than 2026-07-07 09:00 | Бундин В | 4h | 4h |
| 1659 | 3.92 | на прекондеционере настроить премыкание на всех дверцах | manual | 3h | 2026-06-21 09:00 A | 2026-06-21 12:00 A |  | 100% | start no earlier than 2026-06-21 09:00 | Труфанов А | 3h | 3h |
| 1660 | 3.93 | обрезить шпильки, которые торчат, на воздуховодах вентиляции (зона навесок и жиров) |  | 2h | 2026-06-18 09:00 A | 2026-06-18 11:00 A |  | 100% | start no earlier than 2026-06-18 08:00 | Труфанов А | 2h | 2h |
| 1661 | 3.94 | **модернизация схема ШУ жиротопки - отключается циркуляц насос при достжении температуры** |  | 5.5d | 2026-06-07 09:00 A | 2026-06-15 13:00 A |  | 100% |  |  | 5h | 5h |
| 1662 | 3.94.1 | изучить схему, согласовать предложения модернизации |  | 1h | 2026-06-07 09:00 A | 2026-06-08 10:00 A |  | 100% | start no earlier than 2026-06-07 09:00 | Дедов В | 1h | 1h |
| 1663 | 3.94.2 | реализации модернизации |  | 4h | 2026-06-15 09:00 A | 2026-06-15 13:00 A | 1662 | 100% | start no earlier than 2026-06-15 09:00 | Дедов В | 4h | 4h |

| ID | WBS | Task | Type | Duration | Start | Finish | Predecessors | Complete | Remaining | Actual start | Actual finish | Total slack | Constraint | Resources | Work | Actual work |
| --- | --- | --- | --- | --- | --- | --- | --- | --- | --- | --- | --- | --- | --- | --- | --- | --- |
| 1664 | 3.95 | **сборка квадропак с системой дозации** |  | 56.5d | 2026-06-18 09:00 A | 2026-09-04 13:00 |  | 86% | 7.79d |  |  | 141.09d |  |  | 67h | 59h |
| 1665 | 3.95.1 | сборка нория |  | 8h | 2026-07-17 09:00 A | 2026-07-17 18:00 A |  | 100% |  |  |  |  | start no earlier than 2026-07-17 09:00 | Некрасов А; Тимофеев В | 15h | 15h |
| 1666 | 3.95.2 | сборка площадка |  | 4h | 2026-07-20 09:00 A | 2026-07-20 13:00 A | 1665 | 100% |  |  |  |  | start no earlier than 2026-07-09 08:00 | Некрасов А; Тимофеев В | 8h | 8h |
| 1667 | 3.95.3 | монтаж весы |  | 4h | 2026-07-20 14:00 | 2026-07-20 18:00 | 1666 |  |  |  |  | 174.59d | start no earlier than 2026-07-09 08:00 | Некрасов А; Тимофеев В | 8h |  |
| 1668 | 3.95.4 | подключить квадропак / пусконаладка |  | 4h | 2026-09-04 09:00 A | 2026-09-04 13:00 A |  | 100% |  |  |  |  | start no earlier than 2026-09-04 09:00 | Зорькин В; Труфанов А | 8h | 8h |
| 1669 | 3.95.5 | разгрузка / распаковка |  | 1h | 2026-06-18 09:00 A | 2026-06-18 10:00 A |  | 100% |  |  |  |  | start no earlier than 2026-06-18 09:00 | Некрасов А; Тимофеев В | 1h | 1h |
| 1670 | 3.95.6 | сборка рама в 1ц над столом выгрузки пакетов. Примерка/доработка рамы по месту |  | 4h | 2026-07-09 09:00 A | 2026-07-09 13:00 A |  | 100% |  |  |  |  | start no earlier than 2026-07-09 09:00 | Некрасов А; Макаревич А; Тимофеев В | 11h | 11h |
| 1671 | 3.95.7 | сборка дозатор |  | 4h | 2026-07-09 09:00 A | 2026-07-09 13:00 A |  | 100% |  |  |  |  | start no earlier than 2026-07-09 09:00 | Зорькин В; Макаревич А; Некрасов А; Тимофеев В | 16h | 16h |
| 1672 | 3.96 | устранить заусенцы пол площадки жиротопки. Рвет тряпку уборщица. |  | 4h | 2026-05-31 09:00 A | 2026-06-01 13:00 A |  | 100% |  |  |  |  | start no earlier than 2026-05-31 09:00 | Макаревич А | 4h | 4h |
| 1673 | 3.97 | **востановить насос циркуляция воды на жиротопке** |  | 8.32d | 2026-06-06 09:00 A | 2026-06-18 11:35 A |  | 100% |  |  |  |  |  |  | 3.58h | 3.58h |
| 1674 | 3.97.1 | разборка насос / выяснить причину заклинивания |  | 1h | 2026-06-06 09:00 A | 2026-06-08 10:00 A |  | 100% |  |  |  |  | start no earlier than 2026-06-06 09:00 | Бундин В | 1h | 1h |
| 1675 | 3.97.2 | заявка аналог |  | 20min | 2026-06-08 09:00 A | 2026-06-08 09:20 A | 1674 | 100% |  |  |  |  | start no earlier than 2026-06-08 09:00 | Шуранов Ю | 0.33h | 0.33h |
| 1676 | 3.97.3 | контроль доставка |  | 15min | 2026-06-17 09:20 A | 2026-06-17 09:35 A | 1675FS+7d | 100% |  |  |  |  | start no earlier than 2026-06-05 08:00 | Шуранов Ю | 0.25h | 0.25h |
| 1677 | 3.97.4 | замена |  | 2h | 2026-06-18 09:35 A | 2026-06-18 11:35 A | 1676FS+1d | 100% |  |  |  |  | start no earlier than 2026-06-05 08:00 | Тимофеев В | 2h | 2h |
| 1678 | 3.98 | **жиротопка** |  | 9.5d | 2026-06-09 09:00 A | 2026-06-22 13:00 A |  | 100% |  |  |  |  |  |  | 9h | 9h |
| 1679 | 3.98.1 | (проверить двигатель и сам насос) |  | 1h | 2026-06-09 09:00 A | 2026-06-09 10:00 A |  | 100% |  |  |  |  | start no earlier than 2026-06-09 09:00 | Тимофеев В | 1h | 1h |
| 1680 | 3.98.2 | ремонт заклинившего насоса жиров (сняли сегодя голову ) |  | 1h | 2026-06-18 09:00 A | 2026-06-18 10:00 A | 1679 | 100% |  |  |  |  | start no earlier than 2026-06-18 09:00 | Труфанов А | 1h | 1h |
| 1681 | 3.98.3 | установить насос, который перебрал Труфанов поставить на штатное место / если не заработает ставим новый | manual | 1h | 2026-06-21 09:00 A | 2026-06-21 10:00 A | 1680 | 100% |  |  |  |  | start no earlier than 2026-06-21 09:00 | Бундин В | 1h | 1h |
| 1682 | 3.98.4 | восстановить работу пускателя на насос перекачки с бака в бак |  | 4h | 2026-06-20 09:00 A | 2026-06-22 13:00 A |  | 100% |  |  |  |  | start no earlier than 2026-06-20 09:00 | Дедов В | 4h | 4h |
| 1683 | 3.98.5 | подключить все шланги подачи жира в баки | manual | 2h | 2026-06-22 09:00 A | 2026-06-22 11:00 A |  | 100% |  |  |  |  | start no earlier than 2026-06-22 09:00 | Труфанов А | 2h | 2h |
| 1684 | 3.99 | **трасса нерж жиротопка- баки, найти утечки устранить** |  | 0.75d | 2026-05-23 09:00 A | 2026-05-25 16:00 A |  | 100% |  |  |  |  |  |  | 6h | 6h |
| 1685 | 3.99.1 | заварить места утечки и восстановить утеплитель + греющий кабель |  | 6h | 2026-05-23 09:00 A | 2026-05-25 16:00 A |  | 100% |  |  |  |  | start no earlier than 2026-05-23 09:00 | Макаревич А | 6h | 6h |
| 1686 | 3.100 | **защита ворот на мезонине загрузки** |  | 8h? | 2026-05-22 09:00 | 2026-05-22 18:00 |  | 100% |  | 2026-05-29 09:00 | 2026-08-13 13:00 |  |  |  | 27h | 27h |
| 1687 | 3.100.1 | покрасить конструкцию |  | 2h | 2026-05-31 09:00 A | 2026-06-01 11:00 A |  | 100% |  |  |  |  | start no earlier than 2026-05-31 09:00 | Макаревич А | 2h | 2h |
| 1688 | 3.100.2 | приварить дополнительную перекладину на защиту воротины |  | 2h | 2026-07-07 09:00 A | 2026-07-07 11:00 A |  | 100% |  |  |  |  | start no earlier than 2026-07-07 09:00 | Труфанов А; Тимофеев В | 4h | 4h |
| 1689 | 3.100.3 | заказать щетку и битумную ленту |  | 1h | 2026-05-31 11:00 A | 2026-06-01 10:00 A | 1687 | 100% |  |  |  |  | start no earlier than 2026-05-22 09:00 | Шуранов Ю | 1h | 1h |
| 1690 | 3.100.4 | контроль доставки |  | 1d? | 2026-05-31 12:00 A | 2026-06-01 18:00 A | 1689 | 100% |  |  |  |  | start no earlier than 2026-05-29 09:00 | Шуранов Ю | 8h | 8h |
| 1691 | 3.100.5 | установка щетки |  | 4h | 2026-08-13 09:00 A | 2026-08-13 13:00 A |  | 100% |  |  |  |  | start no earlier than 2026-08-13 09:00 | Макаревич А | 4h | 4h |
| 1692 | 3.100.6 | монтаж |  | 1d? | 2026-05-29 09:00 A | 2026-05-29 18:00 A |  | 100% |  |  |  |  | start no earlier than 2026-05-29 09:00 | Некрасов А | 8h | 8h |
| 1693 | 3.101 | установить щетку на поломоечную машину (щетка на складе) |  | 2h | 2026-05-21 09:00 A | 2026-05-21 11:00 A |  | 100% |  |  |  |  | start no earlier than 2026-05-21 08:00 | Бундин В | 2h | 2h |
| 1694 | 3.102 | площадка мезонина зона фасовки- убрать щели профиля битумной лентой |  | 2h | 2026-05-21 09:00 A | 2026-05-21 11:00 A |  | 100% |  |  |  |  | start no earlier than 2026-05-21 09:00 | Бундин В | 2h | 2h |
| 1695 | 3.103 | прикрутить дюзы форсунок подачи воды в прекондиционер, взять у меня на столе. |  | 1h | 2026-05-22 09:00 A | 2026-05-22 10:00 A |  | 100% |  |  |  |  | start no earlier than 2026-05-22 09:00 | Тимофеев В | 1h | 1h |
| 1696 | 3.104 | проверить насос подачи жира со 2 бака на барабаны, Викторович его разобрал |  | 2h | 2026-05-19 08:00 A | 2026-05-19 11:00 A |  | 100% |  |  |  |  | start no earlier than 2026-05-19 08:00 | Дедов В | 2h | 2h |
| 1697 | 3.105 | проверить рабочий или нет циркуляционный насос для змеевика на жиротопке |  | 1h | 2026-05-19 08:00 A | 2026-05-19 10:00 A |  | 100% |  |  |  |  | start no earlier than 2026-05-19 08:00 | Дедов В | 1h | 1h |
| 1698 | 3.106 | проверка оборудования на жирах водой |  | 3h | 2026-05-19 09:00 A | 2026-05-19 12:00 A |  | 100% |  |  |  |  | start no earlier than 2026-05-20 09:00 | Тимофеев В | 3h | 3h |
| 1699 | 3.107 | покраска пол под лотком барабан-охладитель |  | 1h | 2026-05-15 09:00 A | 2026-05-15 10:00 A |  | 100% |  |  |  |  | start no earlier than 2026-05-15 09:00 | Бобренок В | 1h | 1h |

| ID | WBS | Task | Type | Duration | Start | Finish | Complete | Remaining | Total slack | Constraint | Resources | Work | Actual work |
| --- | --- | --- | --- | --- | --- | --- | --- | --- | --- | --- | --- | --- | --- |
| 1700 | 3.108 | **ремонт ворот рольставня** |  | 4.12d | 2026-05-14 09:00 A | 2026-05-20 10:00 A | 100% |  |  |  |  | 2h | 2h |
| 1701 | 3.108.1 | вызывать сервис |  | 1h | 2026-05-14 09:00 A | 2026-05-14 10:00 A | 100% |  |  | start no earlier than 2026-05-14 09:00 | Зорькин В | 1h | 1h |
| 1702 | 3.108.2 | контроль работ |  | 1h | 2026-05-20 09:00 A | 2026-05-20 10:00 A | 100% |  |  | start no earlier than 2026-05-20 09:00 | Зорькин В | 1h | 1h |
| 1703 | 3.109 | вырезать косая пластина в воронку пневмотранспорта на подачу жиров |  | 2h | 2026-05-14 09:00 A | 2026-05-14 11:00 A | 100% |  |  | start no earlier than 2026-05-14 09:00 | Макаревич А | 2h | 2h |
| 1704 | 3.110 | убрать бороду от вентиляторов |  | 4h | 2026-05-12 09:00 A | 2026-05-12 13:00 A | 100% |  |  | start no earlier than 2026-05-12 09:00 | Некрасов А; Труфанов А | 8h | 8h |
| 1705 | 3.111 | монтаж кабель управления заслонками вентиляторы окно |  | 4h | 2026-05-20 09:00 A | 2026-05-20 13:00 A | 100% |  |  | start no earlier than 2026-05-22 09:00 | Некрасов А; Бундин В | 8h | 8h |
| 1706 | 3.112 | **автоматика управления смесителями** |  | 80.38d | 2026-05-04 09:00 A | 2026-08-24 12:00 | 91% | 6.89d | 150.22d |  |  | 35h | 32h |
| 1707 | 3.112.1 | поменять местами переключатели управления смесителями левый что бы включал поперечный смеситель |  | 2h | 2026-07-12 09:00 A | 2026-07-13 11:00 A | 100% |  |  | start no earlier than 2026-07-12 09:00 | Дедов В | 2h | 2h |
| 1708 | 3.112.2 | сделать подключение красных смесителей по схеме Домоводова |  | 22h | 2026-05-18 09:00 A | 2026-05-20 16:00 A | 100% |  |  | start no earlier than 2026-05-19 09:00 | Дедов В | 22h | 22h |
| 1709 | 3.112.3 | доработка схемы управления смесителями по логике ТЗ, упорядочить монтаж, промаркировать соденения |  | 8h | 2026-05-04 09:00 A | 2026-05-04 18:00 A | 100% |  |  | start no earlier than 2026-05-04 09:00 | Дедов В | 8h | 8h |
| 1710 | 3.112.4 | уложить красиво все провода в шкафу управления смесителями |  | 3h | 2026-08-24 09:00 | 2026-08-24 12:00 |  |  | 150.22d | start no earlier than 2026-08-24 09:00 | Дедов В | 3h |  |
| 1711 | 3.113 | **установить воздуховод на 300мм на красные смесители** |  | 6.25d | 2026-05-08 08:00 A | 2026-05-18 11:00 A | 100% |  |  |  |  | 4h | 4h |
| 1712 | 3.113.1 | заказать другой диаметр | milestone | 0d | 2026-05-08 08:00 A | 2026-05-08 08:00 A | 100% |  |  | start no earlier than 2026-05-08 08:00 | Зорькин В |  |  |
| 1713 | 3.113.2 | установить ф300 | milestone | 0h | 2026-05-13 09:00 A | 2026-05-13 09:00 A | 100% |  |  | start no earlier than 2026-05-13 09:00 | Тимофеев В; Зорькин В |  |  |
| 1714 | 3.113.3 | красные смесители вернуть воздуховоды (доработать рукав пересыпки воронка-смеситель) |  | 2h | 2026-05-13 09:00 A | 2026-05-13 11:00 A | 100% |  |  | start no earlier than 2026-05-13 09:00 | Тимофеев В | 2h | 2h |
| 1715 | 3.113.4 | сборка рукав на второй смеситель. Сшить по образцу |  | 2h | 2026-05-18 09:00 A | 2026-05-18 11:00 A | 100% |  |  | start no earlier than 2026-05-18 09:00 | Тимофеев В | 2h | 2h |
| 1716 | 3.114 | проверить почему не запускается приточная вентиляция в вент. Камере 7,5кВт |  | 1h | 2026-04-29 08:00 A | 2026-04-29 10:00 A | 100% |  |  | start no earlier than 2026-04-29 08:00 | Дедов В | 1h | 1h |
| 1717 | 3.115 | прозвонить кнопку индикации водителя под сиденьем (позвони объясню) |  | 2h | 2026-04-15 09:00 A | 2026-04-15 11:00 A | 100% |  |  | start no earlier than 2026-04-15 08:00 | Бундин В | 2h | 2h |
| 1718 | 3.116 | проверить приход с Китая по шнекам и гильзам |  | 1h | 2026-04-09 09:00 A | 2026-04-09 10:00 A | 100% |  |  | start no earlier than 2026-04-09 08:00 | Шуранов Ю | 1h | 1h |
| 1719 | 3.117 | собрать и установить мойку (со старой прикрутить смеситель) мойка у Веры на складе на 2 верхнем ярусе стеллажей | manual | 2h | 2026-04-05 09:00 A | 2026-04-05 11:00 A | 100% |  |  | start no earlier than 2026-04-05 09:00 | Труфанов А | 2h | 2h |
| 1720 | 3.118 | вывоз 3 поддона с мусором |  | 30min | 2026-03-24 09:00 A | 2026-03-24 09:30 A | 100% |  |  | start no earlier than 2026-03-24 09:00 | Некрасов А; Труфанов А | 1h | 1h |
| 1721 | 3.119 | установить отбойники на стеллажи | manual | 8h | 2026-03-29 09:00 A | 2026-03-29 18:00 A | 100% |  |  | start no earlier than 2026-03-29 09:00 | Бундин В | 8h | 8h |
| 1722 | 3.120 | установить отбойники на стеллажи | manual | 6h | 2026-04-18 09:00 A | 2026-04-18 16:00 A | 100% |  |  | start no earlier than 2026-04-18 09:00 | Бобренок В | 6h | 6h |
| 1723 | 3.121 | уборка зона курилка / венткамера |  | 4h | 2026-03-17 09:00 A | 2026-03-17 13:00 A | 100% |  |  | start no earlier than 2026-03-17 09:00 | Тимофеев В; Некрасов А; Макаревич А; Труфанов А | 16h | 16h |

| ID | WBS | Task | Duration | Start | Finish | Predecessors | Complete | Actual start | Actual finish | Total slack | Constraint | Resources | Work | Actual work |
| --- | --- | --- | --- | --- | --- | --- | --- | --- | --- | --- | --- | --- | --- | --- |
| 1724 | 3.122 | **сборка квадропак** | 13.25d | 2026-05-06 09:00 A | 2026-05-25 11:00 A |  | 100% |  |  |  |  |  | 14h | 14h |
| 1725 | 3.122.1 | подвести воздух к квадропаку | 4h | 2026-05-22 09:00 A | 2026-05-22 13:00 A |  | 100% |  |  |  | start no earlier than 2026-05-22 09:00 | Тимофеев В | 4h | 4h |
| 1726 | 3.122.2 | установить перед пневмораспределителями влагоотделитель | 2h | 2026-05-24 09:00 A | 2026-05-25 11:00 A |  | 100% |  |  |  | start no earlier than 2026-05-24 09:00 | Дедов В | 2h | 2h |
| 1727 | 3.122.3 | подключить квадропак к щитку кабель 5х2,5 | 4h | 2026-05-06 09:00 A | 2026-05-06 13:00 A |  | 100% |  |  |  | start no earlier than 2026-05-06 09:00 | Труфанов А; Тимофеев В | 8h | 8h |
| 1728 | 3.123 | крепление магистрали компрессора. Зона дрожировки | 1h | 2026-03-08 09:00 A | 2026-03-09 10:00 A |  | 100% |  |  |  | start no earlier than 2026-03-08 09:00 | Бундин В | 1h | 1h |
| 1729 | 3.124 | Собрать транспортер тип2 (уточнить у Шуранова)/ доделать | 3h | 2026-03-08 09:00 A | 2026-03-09 12:00 A |  | 100% |  |  |  | start no earlier than 2026-03-08 09:00 | Бобренок В | 3h | 3h |
| 1730 | 3.125 | **Покраска лестницы** | 43d | 2026-03-04 09:00 A | 2026-05-01 18:00 A |  | 100% |  |  |  |  |  | 116.33h | 116.33h |
| 1731 | 3.125.1 | Заявка на краску | 20min | 2026-03-04 09:00 A | 2026-03-04 09:20 A |  | 100% |  |  |  | start no earlier than 2026-03-04 09:00 | Зорькин В | 0.33h | 0.33h |
| 1732 | 3.125.2 | Доставка | 10d | 2026-03-04 09:20 A | 2026-03-18 09:20 A | 1731 | 100% |  |  |  | start no earlier than 2026-03-03 08:00 | Карабанов | 80h | 80h |
| 1733 | 3.125.3 | Работа по покраске | 6h | 2026-04-28 09:00 A | 2026-04-28 16:00 A | 1732 | 100% |  |  |  | start no earlier than 2026-04-28 09:00 | оперторы2; Олег | 12h | 12h |
| 1734 | 3.125.4 | покраска колонны в коридоре | 4h | 2026-04-28 09:00 A | 2026-04-28 13:00 A |  | 100% |  |  |  | start no earlier than 2026-04-28 08:00 | оперторы2; Олег | 8h | 8h |
| 1735 | 3.125.5 | покарска потолок в корридоре | 2d | 2026-04-30 09:00 A | 2026-05-01 18:00 A |  | 100% |  |  |  | start no earlier than 2026-04-30 09:00 | оператор2 | 16h | 16h |
| 1736 | 3.126 | **доработка лотка барабан-охладитель - снизить скорость падения, установить сетку** | 1.5d? | 2026-04-14 09:00 | 2026-04-15 13:00 |  | 100% | 2026-05-13 09:00 | 2026-06-17 18:00 |  |  |  | 46.75h | 46.75h |
| 1737 | 3.126.1 | сборка кронштейны + стека | 5h | 2026-05-13 09:00 A | 2026-05-13 15:00 A |  | 100% |  |  |  | start no earlier than 2026-05-13 09:00 | Труфанов А; Некрасов А | 10h | 10h |
| 1738 | 3.126.2 | сборка ручки, установка. Фотоотчет | 2h | 2026-05-15 09:00 A | 2026-05-15 11:00 A |  | 100% |  |  |  | start no earlier than 2026-05-15 09:00 | Некрасов А; Труфанов А | 4h | 4h |
| 1739 | 3.126.3 | сборка вращающаяся заслонка | 4h | 2026-05-15 11:00 A | 2026-05-15 16:00 A | 1738 | 100% |  |  |  | start no earlier than 2026-05-15 09:00 | Некрасов А; Труфанов А | 8h | 8h |
| 1740 | 3.126.4 | доработка пластины, что бы не клинила | 1h | 2026-05-21 09:00 A | 2026-05-21 10:00 A |  | 100% |  |  |  | start no earlier than 2026-05-22 09:00 | Некрасов А; Бундин В | 2h | 2h |
| 1741 | 3.126.5 | заказ на лазере пластину для регулировки шибера | 1d? | 2026-05-25 09:00 A | 2026-05-25 18:00 A |  | 100% |  |  |  | start no earlier than 2026-05-25 09:00 | Зорькин В | 8h | 8h |
| 1742 | 3.126.6 | чертеж пластина фиксации рычага | 2h | 2026-05-19 09:00 A | 2026-05-19 11:00 A | 1739 | 100% |  |  |  | start no earlier than 2026-05-19 09:00 | Зорькин В | 2h | 2h |
| 1743 | 3.126.7 | заявка на изготвление на лазер | 15min | 2026-05-20 11:00 A | 2026-05-20 11:15 A | 1742FS+1d | 100% |  |  |  | start no earlier than 2026-05-15 08:00 | Зорькин В | 0.25h | 0.25h |
| 1744 | 3.126.8 | контроль изг | 15min | 2026-06-01 09:00 A | 2026-06-01 09:15 A | 1743FS+5d | 100% |  |  |  | start no earlier than 2026-06-01 09:00 | Зорькин В | 0.25h | 0.25h |
| 1745 | 3.126.9 | доставка орг | 15min | 2026-06-05 09:00 A | 2026-06-05 09:15 A | 1744FS+1d | 100% |  |  |  | start no earlier than 2026-06-05 09:00 | Зорькин В | 0.25h | 0.25h |
| 1746 | 3.126.10 | сборка рычага | 4h | 2026-06-08 09:15 A | 2026-06-08 14:15 A | 1745FS+1d | 100% |  |  |  | start no earlier than 2026-06-06 09:00 | Бундин В | 4h | 4h |
| 1747 | 3.126.11 | сделать напраляшку на шибере регулируемую- сыпит в одну сторону | 1d? | 2026-06-17 09:00 A | 2026-06-17 18:00 A |  | 100% |  |  |  | start no earlier than 2026-06-23 09:00 | Тимофеев В | 8h | 8h |
| 1748 | 3.127 | сборка система отопления 2 этаж | 1d? | 2026-06-15 09:00 | 2026-06-15 18:00 |  |  |  |  | 199.59d | start no earlier than 2026-06-15 09:00 | Труфанов А; Некрасов А; Олег | 24h |  |

| ID | WBS | Task | Duration | Start | Finish | Predecessors | Complete | Remaining | Total slack | Constraint | Resources | Work | Actual work |
| --- | --- | --- | --- | --- | --- | --- | --- | --- | --- | --- | --- | --- | --- |
| 1749 | 3.128 | **заменить сопряжение смесителей на гибк вставку** | 29.25d | 2026-03-19 09:00 A | 2026-04-29 11:00 A |  | 100% |  |  |  |  | 122.5h | 122.5h |
| 1750 | 3.128.1 | заявка | 30min | 2026-03-19 09:00 A | 2026-03-19 09:30 A |  | 100% |  |  | start no earlier than 2026-03-19 09:00 | Зорькин В | 0.5h | 0.5h |
| 1751 | 3.128.2 | доставка | 15d | 2026-03-19 09:30 A | 2026-04-09 09:30 A | 1750 | 100% |  |  | start no earlier than 2026-02-27 08:00 | Карабанов | 120h | 120h |
| 1752 | 3.128.3 | замена | 2h | 2026-04-29 09:00 A | 2026-04-29 11:00 A | 1751 | 100% |  |  | start no earlier than 2026-04-29 09:00 | Тимофеев В | 2h | 2h |
| 1753 | 3.129 | **приточная вентиляция** | 154.25d | 2026-03-06 09:00 A | 2026-09-29 11:00 |  | 85% | 22.85d | 117.34d |  |  | 13.5h | 11.5h |
| 1754 | 3.129.1 | визит Евгения. Контроль монтажа | 30min | 2026-03-06 09:00 A | 2026-03-06 09:30 A |  | 100% |  |  | start no earlier than 2026-03-06 09:00 | Домоводов К | 0.5h | 0.5h |
| 1755 | 3.129.2 | подключить силовой кабель в ШУ (лежит в лотке) | 3h | 2026-03-13 09:00 A | 2026-03-13 12:00 A |  | 100% |  |  | start no earlier than 2026-03-13 09:00 | Подрядчик | 3h | 3h |
| 1756 | 3.129.3 | монтаж изоляционных прокладок вводный автомат между фазами | 2h | 2026-09-24 09:00 A | 2026-09-24 11:00 A |  | 100% |  |  | start no earlier than 2026-09-24 09:00 | Дедов В | 2h | 2h |
| 1757 | 3.129.4 | подключить нулевой провод шкаф управления | 2h | 2026-09-24 09:00 A | 2026-09-24 11:00 A |  | 100% |  |  | start no earlier than 2026-09-24 09:00 | Дедов В | 2h | 2h |
| 1758 | 3.129.5 | монтаж перемычек от автомата на ТВ реле . Звонить Дедову | 2h | 2026-09-24 09:00 A | 2026-09-24 11:00 A |  | 100% |  |  | start no earlier than 2026-09-24 09:00 | Дедов В | 2h | 2h |
| 1759 | 3.129.6 | замена схемы включения вентилятор вытяжка / приточка | 2h | 2026-05-04 09:00 A | 2026-05-04 11:00 A |  | 100% |  |  | start no earlier than 2026-05-04 09:00 | Дедов В | 2h | 2h |
| 1760 | 3.129.7 | проверить все подключения / тест | 2h | 2026-09-29 09:00 | 2026-09-29 11:00 |  |  |  | 117.34d | start no earlier than 2026-09-29 09:00 | Дедов В | 2h |  |
| 1761 | 3.130 | установить гидроаккумулятор | 2h | 2026-03-03 09:00 A | 2026-03-03 11:00 A |  | 100% |  |  | start no earlier than 2026-03-03 09:00 | Тимофеев В | 2h | 2h |
| 1762 | 3.131 | тест герметичности. жиропровод нерж оборудовать греющим кабелем + утеплитель. | 2h | 2026-06-01 09:00 | 2026-06-01 11:00 |  |  |  | 210.34d | start no earlier than 2026-05-31 09:00 | Макаревич А | 2h |  |
| 1763 | 3.132 | **установить перила площадка загрузки навески** | 0.25d | 2026-05-27 09:00 A | 2026-05-27 11:00 A |  | 100% |  |  |  |  | 2h | 2h |
| 1764 | 3.132.1 | покрасить перила | 2h | 2026-05-27 09:00 A | 2026-05-27 11:00 A |  | 100% |  |  | start no earlier than 2026-05-27 09:00 | оператор2 | 2h | 2h |
| 1765 | 3.133 | дорабать качелю безопасности на площадке загрузки навески что бы не задевала за вентиляцию | 2h | 2026-05-12 09:00 A | 2026-05-12 11:00 A |  | 100% |  |  | start no earlier than 2026-05-12 09:00 | Некрасов А | 2h | 2h |
| 1766 | 3.134 | подготовить отражатели тепла на подшипники печи линия 4 | 8h | 2025-09-01 09:00 | 2025-09-01 18:00 |  |  |  | 404.59d | start no earlier than 2025-08-30 09:00 | Тимофеев В | 8h |  |
| 1767 | 3.135 | усилить раму прекондиционера | 1d? | 2026-04-28 08:00 A | 2026-04-28 18:00 A |  | 100% |  |  | start no earlier than 2026-04-28 08:00 | Тимофеев В | 8h | 8h |
| 1768 | 3.136 | переместить магнит загрузки сырья | 2h | 2026-05-07 09:00 A | 2026-05-07 11:00 A |  | 100% |  |  | start no earlier than 2026-05-07 09:00 | Тимофеев В | 2h | 2h |
| 1769 | 3.137 | труба выход пара греет шнек - переместить | 1d? | 2026-06-19 09:00 | 2026-06-19 18:00 |  |  |  | 195.59d | start no earlier than 2026-06-19 09:00 | Тимофеев В | 8h |  |
| 1770 | 3.138 | герметизация примыкание на выходе из печи | 2d | 2026-05-18 09:00 A | 2026-05-19 18:00 A |  | 100% |  |  | start no earlier than 2026-05-18 09:00 | Олег | 16h | 16h |
| 1771 | 3.139 | обшить стены курилки | 2d | 2026-04-30 09:00 A | 2026-05-01 18:00 A |  | 100% |  |  | start no earlier than 2026-04-30 09:00 | Олег; Некрасов А | 32h | 32h |
| 1772 | 3.140 | покраска рамы воздуховодов уличные | 4h | 2026-05-27 09:00 | 2026-05-27 13:00 |  |  |  | 213.09d | start no earlier than 2026-05-27 09:00 | оператор2 | 4h |  |
| 1773 | 3.141 | Выяснить количество теплопотерь с печи на входе | 1h | 2026-08-28 09:00 | 2026-08-28 10:00 |  |  |  | 146.47d | start no earlier than 2026-08-28 09:00 | Зорькин В; Бобренок В | 2h |  |
| 1774 | 3.142 | Переделка входа пневмотрассы с печи на жиры, сделать плавный переход из двух углов по 45 | 4h | 2026-07-24 09:00 | 2026-07-24 13:00 |  |  |  | 171.09d | start no earlier than 2026-07-24 09:00 | Бундин В | 4h |  |

| ID | WBS | Task | Type | Duration | Start | Finish | Predecessors | Complete | Remaining | Actual finish | Total slack | Constraint | Resources | Work | Actual work |
| --- | --- | --- | --- | --- | --- | --- | --- | --- | --- | --- | --- | --- | --- | --- | --- |
| 1775 | 3.143 | **Печь** |  | 0d | 2026-07-25 09:00 A | 2026-07-26 11:00 A |  | 100% |  |  |  |  |  | 6h | 6h |
| 1776 | 3.143.1 | Переделка входа пневмотрассы с печи на жиры, сделать плавный переход из двух углов по 45, закончить если Валентин не доделал или взять в работу если Валентин не начал. Уточнить у него как он хотел сделать. | manual | 4h | 2026-07-25 09:00 A | 2026-07-25 13:00 A |  | 100% |  |  |  | start no earlier than 2026-07-25 09:00 | Макаревич А | 4h | 4h |
| 1777 | 3.143.2 | 4 зона шкаф управления не набирает заданную температуру, выяснить причину/устранить | manual | 2h | 2026-07-26 09:00 A | 2026-07-26 11:00 A |  | 100% |  |  |  | start no earlier than 2026-07-26 09:00 | Бобренок В | 2h | 2h |
| 1778 | 3.144 | **розетки** |  | 0.25d | 2026-07-25 09:00 A | 2026-07-27 11:00 A |  | 100% |  |  |  |  |  | 6h | 6h |
| 1779 | 3.144.1 | Монтаж розетки для болера, где мойка экструдера, подключиться к резерву ШУ на экструдере | manual | 2h | 2026-07-25 09:00 A | 2026-07-25 11:00 A |  | 100% |  |  |  | start no earlier than 2026-07-25 09:00 | Бобренок В | 2h | 2h |
| 1780 | 3.144.2 | Монтаж розетки, где ворота выхода готовой продукции | manual | 2h | 2026-07-27 09:00 A | 2026-07-27 11:00 A |  | 100% |  |  |  |  | Некрасов А; Труфанов А | 4h | 4h |
| 1781 | 3.145 | **Дражжировка** |  | 0d | 2026-07-26 09:00 A | 2026-07-26 11:00 A |  | 100% |  |  |  |  |  | 2h | 2h |
| 1782 | 3.145.1 | Устранить течь за раковиной. Вода перекрывается на потолке возле главной вентилляции | manual | 2h | 2026-07-26 09:00 A | 2026-07-26 11:00 A |  | 100% |  |  |  | start no earlier than 2026-07-26 09:00 | Бобренок В | 2h | 2h |
| 1783 | 3.146 | обшить стены вент камеры |  | 2d | 2026-05-06 09:00 A | 2026-05-07 18:00 A |  | 100% |  |  |  | start no earlier than 2026-05-06 09:00 | Олег; Некрасов А | 32h | 32h |
| 1784 | 3.147 | убрать металл 100*100 в зону охладителя или корридор |  | 1h | 2026-03-02 09:00 A | 2026-03-02 10:00 A |  | 100% |  |  |  | start no earlier than 2026-03-02 09:00 | Некрасов А; Труфанов А | 2h | 2h |
| 1785 | 4 | **4 склад** |  | 109.75d | 2026-03-13 09:00 A | 2026-07-15 16:00 |  | 100% |  | 2026-07-29 11:00 |  |  |  | 93.25h | 93.25h |
| 1786 | 4.1 | реверс направления кнопок движения вперед-назад ричтрака |  | 2h | 2026-07-14 08:00 A | 2026-07-14 11:00 A |  | 100% |  |  |  | start no earlier than 2026-07-14 08:00 | Дедов В | 2h | 2h |
| 1787 | 4.2 | 2 ветки не работают светильники -разобраться |  | 1h | 2026-07-02 09:00 A | 2026-07-02 10:00 A |  | 100% |  |  |  | start no earlier than 2026-07-02 09:00 | Тимофеев В | 1h | 1h |
| 1788 | 4.3 | Выяснить почему перегорают светильники |  | 2h | 2026-07-29 08:00 A | 2026-07-29 11:00 A |  | 100% |  |  |  | start no earlier than 2026-07-29 08:00 | Дедов В | 2h | 2h |
| 1789 | 4.4 | замена светильников |  | 8h | 2026-04-17 09:00 A | 2026-04-17 18:00 A |  | 100% |  |  |  | start no earlier than 2026-04-17 08:00 | Некрасов А; Труфанов А | 16h | 16h |
| 1790 | 4.5 | сборка рохли 1шт |  | 1h | 2026-03-13 09:00 A | 2026-03-13 10:00 A |  | 100% |  |  |  | start no earlier than 2026-03-13 09:00 | Тимофеев В | 1h | 1h |
| 1791 | 4.6 | ремонт обрамление погрузочной рампы |  | 4h | 2026-05-28 09:00 A | 2026-05-28 13:00 A |  | 100% |  |  |  | start no earlier than 2026-05-28 09:00 | Олег | 4h | 4h |
| 1792 | 4.7 | замена неисправных светильников |  | 1d | 2026-03-14 09:00 A | 2026-03-16 18:00 A |  | 100% |  |  |  | start no earlier than 2026-03-14 09:00 | Некрасов А; Бобренок В | 15h | 15h |
| 1793 | 4.8 | **замена неисправных светильников** |  | 87.75d | 2026-03-16 09:00 A | 2026-07-15 16:00 A |  | 100% |  |  |  |  |  | 52.25h | 52.25h |
| 1794 | 4.8.1 | заявка светильники |  | 15min | 2026-03-16 09:00 A | 2026-03-16 09:15 A |  | 100% |  |  |  | start no earlier than 2026-03-16 09:00 | Шуранов Ю | 0.25h | 0.25h |
| 1795 | 4.8.2 | доставка |  | 5d | 2026-03-16 09:15 A | 2026-03-23 09:15 A | 1794 | 100% |  |  |  | start no earlier than 2026-03-12 08:00 | Карабанов | 40h | 40h |
| 1796 | 4.8.3 | замена |  | 6h | 2026-07-15 09:00 A | 2026-07-15 16:00 A | 1795 | 100% |  |  |  | start no earlier than 2026-07-15 09:00 | Некрасов А; Труфанов А | 12h | 12h |
| 1797 | 5 | **5 цех** |  | 969.25d? | 2023-05-29 09:00 A | 2027-02-02 11:00 |  | 62% | 369.12d? |  | 26.34d |  |  | 1868.75h | 1144.25h |
| 1798 | 5.1 | сборка полок для стеллажей архив бухгалтерии |  | 1d? | 2026-10-06 09:00 | 2026-10-06 18:00 |  |  |  |  | 110.59d | start no earlier than 2026-10-06 09:00 | Тимофеев В; Бундин В | 16h |  |
| 1799 | 5.2 | на 2 этаж раковина Установка смесителей (краны) с гибкой подводкой, получить на складе |  | 1h | 2026-09-21 09:00 A | 2026-09-21 10:00 A |  | 100% |  |  |  | start no earlier than 2026-09-21 09:00 | Некрасов А | 1h | 1h |
| 1800 | 5.3 | ремонт дека от вибросито |  | 3h | 2026-09-12 09:00 A | 2026-09-12 12:00 A |  | 100% |  |  |  | start no earlier than 2026-09-12 09:00 | Макаревич А | 3h | 3h |

| ID | WBS | Task | Type | Duration | Start | Finish | Predecessors | Complete | Remaining | Total slack | Free slack | Constraint | Resources | Work | Actual work |
| --- | --- | --- | --- | --- | --- | --- | --- | --- | --- | --- | --- | --- | --- | --- | --- |
| 1801 | 5.4 | **установить зажим троса на тельфер** |  | 28d? | 2026-09-03 09:00 A | 2026-10-01 18:00 |  | 3% | 27.18d? | 114.59d |  |  |  | 8.5h | 0.25h |
| 1802 | 5.4.1 | заявка |  | 15min | 2026-09-03 09:00 A | 2026-09-03 09:15 A |  | 100% |  |  |  | start no earlier than 2026-09-03 09:00 | Зорькин В | 0.25h | 0.25h |
| 1803 | 5.4.2 | контроль доставки |  | 15min | 2026-09-24 11:00 | 2026-09-24 11:15 | 1085FS+5d |  |  | 121.31d | 6.72d | start no earlier than 2026-09-11 09:00 | Зорькин В | 0.25h |  |
| 1804 | 5.4.3 | монтаж |  | 1d? | 2026-10-01 09:00 | 2026-10-01 18:00 | 1086FS+1d, 1803 |  |  | 114.59d |  | start no earlier than 2026-10-01 09:00 | Тимофеев В | 8h |  |
| 1805 | 5.5 | **ремонт насос водоснабжения** |  | 68.25d | 2026-09-03 09:00 A | 2026-11-26 11:00 A |  | 100% |  |  |  |  |  | 4.5h | 4.5h |
| 1806 | 5.5.1 | перекрутить американку для удобного обслуживания |  | 2h | 2026-11-26 09:00 A | 2026-11-26 11:00 A |  | 100% |  |  |  | start no earlier than 2026-11-26 09:00 | Макаревич А | 2h | 2h |
| 1807 | 5.5.2 | Сказать параметры, шильдик насосной станции передать зорькину |  | 15min | 2026-09-03 09:00 A | 2026-09-03 09:15 A |  | 100% |  |  |  | start no earlier than 2026-09-03 09:00 | Тимофеев В | 0.25h | 0.25h |
| 1808 | 5.5.3 | конртроль поставки |  | 15min | 2026-09-10 09:00 A | 2026-09-10 09:15 A | 1807 | 100% |  |  |  | start no earlier than 2026-09-10 09:00 | Зорькин В | 0.25h | 0.25h |
| 1809 | 5.5.4 | замена |  | 1h | 2026-09-11 09:15 A | 2026-09-11 10:15 A | 1808FS+1d | 100% |  |  |  | start no earlier than 2026-09-11 09:00 | Некрасов А; Макаревич А | 2h | 2h |
| 1810 | 5.6 | воставноить заземление на обоих ситах |  | 2h | 2026-09-04 09:00 A | 2026-09-04 11:00 A |  | 100% |  |  |  | start no earlier than 2026-09-04 09:00 | Бобренок В | 2h | 2h |
| 1811 | 5.7 | востановить контакт пульт тельфера у стены (переменный контакт при движении кабеля у пульта) |  | 1h | 2026-09-03 09:00 A | 2026-09-03 10:00 A |  | 100% |  |  |  | start no earlier than 2026-09-03 08:00 | Бобренок В | 1h | 1h |
| 1812 | 5.8 | подключить Олегу сварочный автомат |  | 1h | 2026-08-31 09:00 A | 2026-08-31 10:00 A |  | 100% |  |  |  | start no earlier than 2026-08-31 09:00 | Тимофеев В | 1h | 1h |
| 1813 | 5.9 | **подготовить сетку на мал дробилку 3 и 4мм** |  | 11.12d | 2026-09-12 09:00 A | 2026-09-23 10:00 A |  | 100% |  |  |  |  |  | 1.5h | 1.5h |
| 1814 | 5.9.1 | проверка отстатков сетки на складах |  | 30min | 2026-09-12 09:00 A | 2026-09-12 09:30 A |  | 100% |  |  |  | start no earlier than 2026-09-12 09:00 | Макаревич А | 0.5h | 0.5h |
| 1815 | 5.9.2 | вырезатиь сетку в размер |  | 1h | 2026-09-23 09:00 A | 2026-09-23 10:00 A | 1814FS+1d | 100% |  |  |  | start no earlier than 2026-09-29 09:00 | Тимофеев В | 1h | 1h |
| 1816 | 5.10 | ревизия шнека |  | 3h | 2026-08-17 09:00 A | 2026-08-17 12:00 A |  | 100% |  |  |  | start no earlier than 2026-08-17 09:00 | Бобренок В; Некрасов А | 6h | 6h |
| 1817 | 5.11 | **свет в туалет передать крепление светильника** |  | 1.12d | 2026-08-14 09:00 A | 2026-08-17 10:00 A |  | 100% |  |  |  |  |  | 2.25h | 2.25h |
| 1818 | 5.11.1 | проверить наличие светильника с боковым монтажем |  | 15min | 2026-08-14 09:00 A | 2026-08-14 09:15 A |  | 100% |  |  |  | start no earlier than 2026-08-14 09:00 | Домоводов К | 0.25h | 0.25h |
| 1819 | 5.11.2 | замена светильника / или закрепить |  | 1h | 2026-08-17 09:00 A | 2026-08-17 10:00 A | 1818 | 100% |  |  |  | start no earlier than 2026-08-15 09:00 | Бундин В | 1h | 1h |
| 1820 | 5.11.3 | закрепить светильник в коридоре -вход в туалет |  | 1h | 2026-08-17 09:00 A | 2026-08-17 10:00 A |  | 100% |  |  |  | start no earlier than 2026-08-17 09:00 | Бундин В | 1h | 1h |
| 1821 | 5.12 | трещина вибросито №2 1см ремонт |  | 6h | 2026-08-27 09:00 A | 2026-08-27 16:00 A |  | 100% |  |  |  | start no earlier than 2026-08-27 09:00 | Макаревич А | 6h | 6h |
| 1822 | 5.13 | трещина вибросито №1 кольцо. ремонт |  | 4h | 2026-08-28 09:00 A | 2026-08-28 13:00 A |  | 100% |  |  |  | start no earlier than 2026-08-28 09:00 | Макаревич А | 4h | 4h |
| 1823 | 5.14 | **проект новая дробилка** |  | 40.03d | 2026-08-21 09:00 A | 2026-10-06 09:15 |  | 17% | 33.37d | 111.56d |  |  |  | 144.25h | 24h |
| 1824 | 5.14.1 | **кабель для доп мощности** |  | 40.03d | 2026-08-21 09:00 A | 2026-10-06 09:15 |  | 17% | 33.37d | 111.56d |  |  |  | 144.25h | 24h |
| 1825 | 5.14.1.1 | составить ТЗ на монтаж кабеля |  | 3d | 2026-08-21 09:00 A | 2026-08-25 18:00 A |  | 100% |  |  |  | start no earlier than 2026-08-21 09:00 | Домоводов К | 24h | 24h |
| 1826 | 5.14.1.2 | получить КП / счет договор | milestone | 0d | 2026-09-09 09:00 | 2026-09-09 09:00 | 1825FS+2d |  |  | 111.56d | 0d | start no earlier than 2026-09-09 09:00 | Домоводов К |  |  |
| 1827 | 5.14.1.3 | предоплата |  | 15min | 2026-09-10 09:00 | 2026-09-10 09:15 | 1826FS+1d |  |  | 111.56d | 0d | start no earlier than 2026-08-10 08:00 | Домоводов К | 0.25h |  |
| 1828 | 5.14.1.4 | монтаж |  | 15d | 2026-09-20 09:15 | 2026-10-06 09:15 | 1827FS+10d |  |  | 111.56d |  | start no earlier than 2026-08-10 08:00 | Подрядчик | 120h |  |

| ID | WBS | Task | Type | Duration | Start | Finish | Predecessors | Complete | Remaining | Total slack | Free slack | Constraint | Resources | Work | Actual work |
| --- | --- | --- | --- | --- | --- | --- | --- | --- | --- | --- | --- | --- | --- | --- | --- |
| 1829 | 5.15 | **монтаж вода в 5ц** |  | 36.75d | 2026-08-10 08:00 A | 2026-09-22 16:00 |  | 80% | 7.18d | 123.84d |  |  |  | 128.08h | 106h |
| 1830 | 5.15.1 | Подключение греющего кабеля |  | 3h | 2026-09-16 09:00 A | 2026-09-16 12:00 A |  | 100% |  |  |  | start no earlier than 2026-09-16 09:00 | Некрасов А; Труфанов А | 6h | 6h |
| 1831 | 5.15.2 | подклюючить воду на прямую |  | 2h | 2026-09-14 09:00 A | 2026-09-14 11:00 A |  | 100% |  |  |  | start no earlier than 2026-09-15 09:00 | Тимофеев В | 2h | 2h |
| 1832 | 5.15.3 | Все доделать/подключить |  | 6h | 2026-09-18 09:00 A | 2026-09-18 16:00 A |  | 100% |  |  |  | start no earlier than 2026-09-18 09:00 | Труфанов А; Некрасов А | 12h | 12h |
| 1833 | 5.15.4 | установить в конце линии расширительный бак / защита от гидроудара |  | 2h | 2026-09-21 09:00 A | 2026-09-21 11:00 A |  | 100% |  |  |  | start no earlier than 2026-09-21 09:00 | Труфанов А; Некрасов А | 4h | 4h |
| 1834 | 5.15.5 | Установка точек воды для пожврного гидранта и набора воды для поломоечной машинки цех 3,4,5а и 5 |  | 6h | 2026-09-22 09:00 A | 2026-09-22 16:00 A |  | 100% |  |  |  | start no earlier than 2026-09-22 09:00 | Труфанов А; Некрасов А | 12h | 12h |
| 1835 | 5.15.6 | переключение линии "без бачка" |  | 2h | 2026-09-22 09:00 A | 2026-09-22 11:00 A | 1833 | 100% |  |  |  | start no earlier than 2026-09-22 09:00 | Труфанов А; Некрасов А | 4h | 4h |
| 1836 | 5.15.7 | тестирование системы |  | 2h | 2026-09-21 09:00 A | 2026-09-21 11:00 A | 1835 | 100% |  |  |  | start no earlier than 2026-09-18 08:00 | Труфанов А; Некрасов А | 4h | 4h |
| 1837 | 5.15.8 | выяснить возможность обмена тройников 1+1/4-1/2 на 3/4-1/2 |  | 15min | 2026-09-21 09:00 A | 2026-09-21 09:15 A |  | 100% |  |  |  | start no earlier than 2026-09-21 09:00 | Зорькин В | 0.25h | 0.25h |
| 1838 | 5.15.9 | Прокнуть греющий кабель | manual | 3h | 2026-09-16 09:00 A | 2026-09-16 12:00 A |  | 100% |  |  |  |  | Некрасов А; Труфанов А | 6h | 6h |
| 1839 | 5.15.10 | **монтаж трассы по 3ц** |  | 4.5d | 2026-08-11 09:00 A | 2026-08-17 13:00 A |  | 100% |  |  |  |  |  | 16.5h | 16.5h |
| 1840 | 5.15.10.1 | заявка хомуты сантех - получить дату поставки |  | 15min | 2026-08-11 09:00 A | 2026-08-11 09:15 A |  | 100% |  |  |  | start no earlier than 2026-08-11 09:00 | Домоводов К | 0.25h | 0.25h |
| 1841 | 5.15.10.2 | контроль доставки |  | 15min | 2026-08-14 09:15 A | 2026-08-14 09:30 A | 1840FS+3d | 100% |  |  |  | start no earlier than 2026-08-10 08:00 | Зорькин В | 0.25h | 0.25h |
| 1842 | 5.15.10.3 | монтаж продложть |  | 4h | 2026-08-14 09:30 A | 2026-08-14 14:30 A | 1841 | 100% |  |  |  | start no earlier than 2026-08-10 08:00 | Некрасов А; Бундин В | 8h | 8h |
| 1843 | 5.15.10.4 | монтаж продложть |  | 4h | 2026-08-17 09:00 A | 2026-08-17 13:00 A | 1841 | 100% |  |  |  | start no earlier than 2026-08-17 09:00 | Некрасов А; Бобренок В | 8h | 8h |
| 1844 | 5.15.11 | **монтаж труба в земле между 3 и 4ц** |  | 30.75d | 2026-08-10 08:00 A | 2026-09-16 16:00 |  | 66% | 10.39d | 129.84d |  |  |  | 19.08h | 15h |
| 1845 | 5.15.11.1 | монтаж ф32 в ф40 |  | 4h | 2026-08-10 08:00 A | 2026-08-10 13:00 A |  | 100% |  |  |  | start no earlier than 2026-08-10 08:00 | Некрасов А; Макаревич А | 8h | 8h |
| 1846 | 5.15.11.2 | заявка греющий кабель внтуреннего монтажа + |  | 1h | 2026-08-11 09:00 A | 2026-08-11 10:00 A | 1845 | 100% |  |  |  | start no earlier than 2026-08-11 09:00 | Домоводов К | 1h | 1h |
| 1847 | 5.15.11.3 | заявка защита УЗО |  | 1h | 2026-08-24 09:00 | 2026-08-24 10:00 |  |  |  | 150.46d | 4.88d | start no earlier than 2026-08-24 09:00 | Зорькин В | 1h |  |
| 1848 | 5.15.11.4 | контоль доставка |  | 5min | 2026-08-31 09:00 | 2026-08-31 09:05 | 1846FS+5d, 1847 |  |  | 145.58d |  | start no earlier than 2026-08-31 09:00 | Зорькин В | 0.08h |  |
| 1849 | 5.15.11.5 | монтаж кабеля |  | 3h | 2026-09-16 12:00 A | 2026-09-16 16:00 A | 1848FS+1d, 1830 | 100% |  |  |  | start no earlier than 2026-09-16 09:00 | Некрасов А; Макаревич А | 6h | 6h |
| 1850 | 5.15.11.6 | монтаж щиток кабеля с УЗО |  | 3h | 2026-09-14 09:00 | 2026-09-14 12:00 |  |  |  | 132.22d |  | start no earlier than 2026-09-14 09:00 | Дедов В | 3h |  |
| 1851 | 5.15.12 | **монтаж трассы по воздуху м/д 4 и 5А** |  | 9.5d | 2026-08-11 09:00 A | 2026-08-24 13:00 |  | 24% | 7.24d | 150.09d |  |  |  | 9.25h | 1.25h |
| 1852 | 5.15.12.1 | подготовка материал |  | 1h | 2026-08-11 09:00 A | 2026-08-11 10:00 A |  | 100% |  |  |  | start no earlier than 2026-08-11 09:00 | Некрасов А; Макаревич А | 1h | 1h |
| 1853 | 5.15.12.2 | контроль поставки рым 10 |  | 15min | 2026-08-21 09:00 A | 2026-08-21 09:15 A |  | 100% |  |  |  | start no earlier than 2026-08-21 09:00 | Зорькин В | 0.25h | 0.25h |
| 1854 | 5.15.12.3 | монтаж |  | 4h | 2026-08-24 09:00 | 2026-08-24 13:00 | 1853 |  |  | 150.09d |  | start no earlier than 2026-08-24 09:00 | Некрасов А; Тимофеев В | 8h |  |
| 1855 | 5.15.13 | монтаж щиток греющего кабеля по воздуху |  | 4h | 2026-09-16 09:00 A | 2026-09-16 13:00 A |  | 100% |  |  |  | start no earlier than 2026-09-16 09:00 | Труфанов А | 4h | 4h |
| 1856 | 5.15.14 | монтаж трассы по 4ц |  | 6h | 2026-08-18 09:00 A | 2026-08-18 16:00 A | 1841 | 100% |  |  |  | start no earlier than 2026-08-18 09:00 | Некрасов А; Макаревич А | 11h | 11h |
| 1857 | 5.15.15 | монтаж трассы по 5ц |  | 4h | 2026-08-19 09:00 A | 2026-08-19 13:00 A | 1856 | 100% |  |  |  | start no earlier than 2026-08-19 09:00 | Некрасов А; Макаревич А | 8h | 8h |
| 1858 | 5.15.16 | монтаж трассы по 5ц |  | 6h | 2026-08-24 09:00 | 2026-08-24 16:00 | 1856 |  |  | 149.84d |  | start no earlier than 2026-08-24 09:00 | Некрасов А; Макаревич А | 10h |  |

| ID | WBS | Task | Type | Duration | Start | Finish | Predecessors | Complete | Remaining | Actual finish | Total slack | Constraint | Resources | Work | Actual work |
| --- | --- | --- | --- | --- | --- | --- | --- | --- | --- | --- | --- | --- | --- | --- | --- |
| 1859 | 5.16 | **монтаж тепловые пушки подвесные 5 цех** |  | 41d | 2026-08-21 09:00 A | 2026-10-06 18:00 |  | 36% | 26.24d |  | 110.59d |  |  | 41h | 9h |
| 1860 | 5.16.1 | составить схему монтажа |  | 4h | 2026-08-26 09:00 A | 2026-08-26 13:00 A |  | 100% |  |  |  | start no earlier than 2026-08-26 09:00 | Зорькин В | 4h | 4h |
| 1861 | 5.16.2 | заявка на тепловые пушки вулкан |  | 2h | 2026-08-21 09:00 A | 2026-08-21 11:00 A |  | 100% |  |  |  | start no earlier than 2026-08-21 09:00 | Зорькин В | 2h | 2h |
| 1862 | 5.16.3 | контроль остатки нерж труба, фтинги |  | 2h | 2026-09-07 09:00 A | 2026-09-07 11:00 A | 1861 | 100% |  |  |  | start no earlier than 2026-09-07 09:00 | Зорькин В | 2h | 2h |
| 1863 | 5.16.4 | контроль доставки |  | 1h | 2026-09-21 09:00 A | 2026-09-21 10:00 A | 1862FS+7d | 100% |  |  |  | start no earlier than 2026-09-21 09:00 | Зорькин В | 1h | 1h |
| 1864 | 5.16.5 | монтаж |  | 2d | 2026-10-05 09:00 | 2026-10-06 18:00 | 1863FS+1d |  |  |  | 110.59d | start no earlier than 2026-10-05 09:00 | Некрасов А; Труфанов А | 32h |  |
| 1865 | 5.17 | замена светильника перегоревшего у Большакова в кабинете |  | 2h | 2026-08-06 09:00 A | 2026-08-06 11:00 A |  | 100% |  |  |  | start no earlier than 2026-08-07 09:00 | Труфанов А | 2h | 2h |
| 1866 | 5.18 | устранить утечку воды в душе |  | 1h | 2026-08-06 09:00 A | 2026-08-06 10:00 A |  | 100% |  |  |  | start no earlier than 2026-08-06 08:00 | Бундин В | 1h | 1h |
| 1867 | 5.19 | **установить унитаз на 3 этаже** |  | 3.38d? | 2026-08-04 09:00 A | 2026-08-07 12:00 A |  | 100% |  |  |  |  | Бобренок В | 38h | 38h |
| 1868 | 5.19.1 | заказать гофру и гибкую вставку |  | 1d? | 2026-08-04 09:00 A | 2026-08-04 18:00 A |  | 100% |  |  |  | start no earlier than 2026-08-04 08:00 | Шуранов Ю | 8h | 8h |
| 1869 | 5.19.2 | установка унитаза (гофротруба и гибкая подводка и коронка у Большакова) коронку вернуть Большакову |  | 3h | 2026-08-07 09:00 A | 2026-08-07 12:00 A |  | 100% |  |  |  | start no earlier than 2026-08-07 09:00 | Труфанов А | 3h | 3h |
| 1870 | 5.20 | монтаж свет в туалете 3 этаж (оператора дадут в помощь) | manual | 6h | 2026-08-09 09:00 A | 2026-08-09 16:00 A |  | 100% |  |  |  | start no earlier than 2026-08-09 09:00 | Бобренок В | 6h | 6h |
| 1871 | 5.21 | прикрутить смотровые окна на дробилке, не хватает саморезов- просыпается сырье |  | 1h | 2026-08-02 09:00 A | 2026-08-03 10:00 A |  | 100% |  |  |  | start no earlier than 2026-08-02 09:00 | Макаревич А | 1h | 1h |
| 1872 | 5.22 | сборка ограничиетелей на сетку №2 для сито из лазера |  | 4h | 2026-07-17 09:00 A | 2026-07-17 13:00 A |  | 100% |  |  |  | start no earlier than 2026-07-17 09:00 | Макаревич А | 4h | 4h |
| 1873 | 5.23 | ремонт сетки, хомуты с 5ц |  | 2h | 2026-07-15 09:00 A | 2026-07-15 11:00 A |  | 100% |  |  |  | start no earlier than 2026-07-15 09:00 | Бундин В | 2h | 2h |
| 1874 | 5.24 | вырезать сетку 2мм на большую дробилку |  | 2h | 2026-07-15 09:00 A | 2026-07-15 11:00 A |  | 100% |  |  |  | start no earlier than 2026-07-15 09:00 | Бобренок В | 2h | 2h |
| 1875 | 5.25 | заменаить ножи на мал дробилке |  | 6h | 2026-07-06 08:00 A | 2026-07-06 16:00 A |  | 100% |  |  |  | start no earlier than 2026-07-06 08:00 | Дедов В | 6h | 6h |
| 1876 | 5.26 | заварить хомут от деко 5 ц. в слесарке |  | 2h | 2026-07-11 09:00 A | 2026-07-13 11:00 A |  | 100% |  |  |  | start no earlier than 2026-07-11 09:00 | Макаревич А | 2h | 2h |
| 1877 | 5.27 | Дефектовка кнопок растаривателя, ремонт, клинит кнопку |  | 30min | 2026-07-06 08:00 A | 2026-07-06 09:30 A |  | 100% |  |  |  | start no earlier than 2026-07-06 08:00 | Дедов В | 0.5h | 0.5h |
| 1878 | 5.28 | сито просечка с лазера - доплнить 4шт до 6-8 уголоков ограничителей. |  | 2h | 2026-06-26 08:00 A | 2026-06-26 11:00 A |  | 100% |  |  |  | start no earlier than 2026-06-26 08:00 | Макаревич А | 2h | 2h |
| 1879 | 5.29 | просечки нерж. наварить уголки, чтобы не падало внутрь |  | 2h | 2026-06-25 08:00 A | 2026-06-25 11:00 A |  | 100% |  |  |  | start no earlier than 2026-06-25 08:00 | Макаревич А | 2h | 2h |
| 1880 | 5.30 | на поворотную кнопку реверса шнека №1 установить бокс (взять на складе) |  | 1h | 2026-06-24 09:00 A | 2026-06-24 10:00 A |  | 100% |  |  |  | start no earlier than 2026-06-24 09:00 | Труфанов А | 1h | 1h |
| 1881 | 5.31 | развернуть ножи на большой дробилке, если не успеваем передаем по смене |  | 3h | 2026-06-23 08:00 A | 2026-06-23 12:00 A |  | 100% |  |  |  | start no earlier than 2026-06-23 08:00 | Труфанов А; Макаревич А | 6h | 6h |
| 1882 | 5.32 | **протянуть все болтовые соединения: шиберы растаривателей, металлоконструкции под бункера и т.д. если нет болта - прикручиваем** |  | 3h? | 2026-06-23 09:00 A | 2026-06-23 12:00 |  | 100% |  | 2026-06-23 18:00 |  |  | Труфанов А | 11h | 11h |
| 1883 | 5.32.1 | заказать краску |  | 1d? | 2026-06-23 09:00 A | 2026-06-23 18:00 A |  | 100% |  |  |  | start no earlier than 2026-06-23 08:00 | Шуранов Ю | 8h | 8h |
| 1884 | 5.33 | проверить откуда гайку нашли на магните, растариватель-дробилка -шнеки -крепление магнитов |  | 1h | 2026-06-22 09:00 A | 2026-06-22 10:00 A |  | 100% |  |  |  | start no earlier than 2026-06-22 08:00 | Бундин В | 1h | 1h |

| ID | WBS | Task | Duration | Start | Finish | Predecessors | Complete | Remaining | Total slack | Free slack | Constraint | Resources | Work | Actual work |
| --- | --- | --- | --- | --- | --- | --- | --- | --- | --- | --- | --- | --- | --- | --- |
| 1885 | 5.34 | **закрепить штурвал на растаривателе 1** | 1d? | 2026-06-23 09:00 A | 2026-06-23 18:00 A |  | 100% |  |  |  |  | Бундин В | 16h | 16h |
| 1886 | 5.34.1 | заказываем растариватель | 1d? | 2026-06-23 09:00 A | 2026-06-23 18:00 A |  | 100% |  |  |  | start no earlier than 2026-06-23 09:00 | Шуранов Ю | 8h | 8h |
| 1887 | 5.35 | заварить просеиватель ближе к стеллажам и на правом (расскажу как) | 3h | 2026-06-11 09:00 A | 2026-06-11 12:00 A |  | 100% |  |  |  | start no earlier than 2026-06-11 09:00 | Бундин В | 3h | 3h |
| 1888 | 5.36 | ремонт просечку с вибросито, передать в 5ц | 2h | 2026-06-12 09:00 A | 2026-06-12 11:00 A |  | 100% |  |  |  | start no earlier than 2026-06-12 09:00 | Бундин В | 2h | 2h |
| 1889 | 5.37 | ремонт хомут с вибросито | 2h | 2026-06-05 09:00 A | 2026-06-05 11:00 A |  | 100% |  |  |  | start no earlier than 2026-06-05 08:00 | Бундин В | 2h | 2h |
| 1890 | 5.38 | заварить хомут от деко 5 ц. в слесарке | 2h | 2026-07-14 09:00 A | 2026-07-14 11:00 A |  | 100% |  |  |  | start no earlier than 2026-07-14 09:00 | Бундин В | 2h | 2h |
| 1891 | 5.39 | **востановить коробку тельфера** | 181.25d | 2026-06-04 09:00 A | 2027-02-02 11:00 |  | 59% | 74.28d | 26.34d |  |  |  | 5.08h | 3h |
| 1892 | 5.39.1 | найти производителя тельфера и выяснить марку коробку / найти в продаже подходящий артикул | 2h | 2026-06-04 09:00 A | 2026-06-04 11:00 A |  | 100% |  |  |  | start no earlier than 2026-06-04 09:00 | Шуранов Ю | 2h | 2h |
| 1893 | 5.39.2 | заявка | 1h | 2026-06-05 09:00 A | 2026-06-05 10:00 A |  | 100% |  |  |  | start no earlier than 2026-06-05 09:00 | Шуранов Ю | 1h | 1h |
| 1894 | 5.39.3 | доставка контроль | 5min | 2026-09-18 09:00 | 2026-09-18 09:05 |  |  |  | 128.33d | 101.99d | start no earlier than 2026-09-18 09:00 | Домоводов К | 0.08h |  |
| 1895 | 5.39.4 | замена | 2h | 2027-02-02 09:00 | 2027-02-02 11:00 | 1894 |  |  | 26.34d |  | start no earlier than 2027-02-02 09:00 | Некрасов А | 2h |  |
| 1896 | 5.40 | замена пускатель тельфер 24дц / найти/изготовить + установить крышку контакторов / доработать крепеж кабеля к тросу | 1h | 2026-05-27 09:00 A | 2026-05-27 10:00 A |  | 100% |  |  |  | start no earlier than 2026-05-27 09:00 | Некрасов А; Бундин В | 2h | 2h |
| 1897 | 5.41 | проверка всех банок АКБ штабелера / замена неисправных | 2h | 2026-05-30 09:00 A | 2026-06-01 11:00 A |  | 100% |  |  |  | start no earlier than 2026-05-30 09:00 | Бобренок В | 2h | 2h |
| 1898 | 5.42 | посмотреть что с тельфером на дробилке | 1h | 2026-05-26 09:00 A | 2026-05-26 10:00 A |  | 100% |  |  |  | start no earlier than 2026-05-26 09:00 | Некрасов А | 1h | 1h |
| 1899 | 5.43 | приварить магниты на сито | 0.5h | 2026-05-26 09:00 A | 2026-05-26 09:30 A |  | 100% |  |  |  | start no earlier than 2026-05-26 09:00 | Некрасов А | 0.5h | 0.5h |
| 1900 | 5.44 | заварить растариватель №2 | 4h | 2026-05-25 08:00 A | 2026-05-25 13:00 A |  | 100% |  |  |  | start no earlier than 2026-05-25 08:00 | Тимофеев В; Некрасов А | 7h | 7h |
| 1901 | 5.45 | уложить красиво кабель в гофре зона дробилки | 1h | 2026-05-19 09:00 A | 2026-05-19 10:00 A |  | 100% |  |  |  | start no earlier than 2026-05-19 09:00 | Бундин В; Некрасов А | 2h | 2h |
| 1902 | 5.46 | заварить 2 просечки от сито и отправить все на 5 цех | 1h | 2026-05-19 09:00 A | 2026-05-19 10:00 A |  | 100% |  |  |  | start no earlier than 2026-05-19 09:00 | Бундин В | 1h | 1h |
| 1903 | 5.47 | сделать дублирующий пост (вкл. И выкл. Смесителя) на мезонине дробилки | 4h | 2026-05-18 08:00 A | 2026-05-18 13:00 A |  | 100% |  |  |  | start no earlier than 2026-05-18 08:00 | Дедов В | 4h | 4h |
| 1904 | 5.48 | прошприцевать сам двигатель дробилки | 1h | 2026-05-19 09:00 A | 2026-05-19 10:00 A |  | 100% |  |  |  | start no earlier than 2026-05-19 09:00 | Некрасов А; Бундин В | 2h | 2h |
| 1905 | 5.49 | **сборка схемы блокировки дробилки при открытом люке** | 7.25d? | 2026-05-17 09:00 A | 2026-05-27 11:00 A |  | 100% |  |  |  |  |  | 17h | 17h |
| 1906 | 5.49.1 | монтаж кабель | 4h | 2026-05-17 09:00 A | 2026-05-18 13:00 A |  | 100% |  |  |  | start no earlier than 2026-05-17 09:00 | Макаревич А | 4h | 4h |
| 1907 | 5.49.2 | сборка схема | 2h | 2026-05-27 09:00 A | 2026-05-27 11:00 A | 1906 | 100% |  |  |  | start no earlier than 2026-05-27 09:00 | Дедов В | 2h | 2h |
| 1908 | 5.49.3 | заказать концевики | 1d? | 2026-05-25 09:00 A | 2026-05-25 18:00 A |  | 100% |  |  |  | start no earlier than 2026-05-25 08:00 | Шуранов Ю | 8h | 8h |
| 1909 | 5.49.4 | доделать схему блокировки- концевики LA167-Z8/122 на складе | 3h | 2026-05-26 09:00 A | 2026-05-26 12:00 A |  | 100% |  |  |  | start no earlier than 2026-05-26 09:00 | Дедов В | 3h | 3h |
| 1910 | 5.50 | проверка центровки мотора после замены подшипнка + замена подшипник задний | 4h | 2026-05-12 08:00 A | 2026-05-12 13:00 A |  | 100% |  |  |  | start no earlier than 2026-05-12 08:00 | Тимофеев В; Бобренок В | 8h | 8h |
| 1911 | 5.51 | заварить сито | 2h | 2026-05-08 08:00 A | 2026-05-08 11:00 A |  | 100% |  |  |  | start no earlier than 2026-05-08 08:00 | Макаревич А | 2h | 2h |
| 1912 | 5.52 | закрепить штурвал, чтобы не болтался на растаривателе 1 | 1h | 2026-05-08 08:00 A | 2026-05-08 10:00 A |  | 100% |  |  |  | start no earlier than 2026-05-08 08:00 | Макаревич А | 1h | 1h |
| 1913 | 5.53 | посмотреть компрессор (если проблема в предохранителе- то взять у меня на столе)пароль8989 | 1h | 2026-05-08 08:00 A | 2026-05-08 10:00 A |  | 100% |  |  |  | start no earlier than 2026-05-08 08:00 | Дедов В | 1h | 1h |
| 1914 | 5.54 | проверить на 2х котлах давление в системе отопления- где нужно долить воды. И слить воду система отопления 5а цех | 2h | 2026-05-06 08:00 A | 2026-05-06 11:00 A |  | 100% |  |  |  | start no earlier than 2026-05-06 08:00 | Бобренок В | 2h | 2h |

| ID | WBS | Task | Type | Duration | Start | Finish | Predecessors | Complete | Actual start | Actual finish | Total slack | Constraint | Resources | Work | Actual work |
| --- | --- | --- | --- | --- | --- | --- | --- | --- | --- | --- | --- | --- | --- | --- | --- |
| 1915 | 5.55 | **ремонт сито (попробовать заклеить эпоксидкой) / ремонт у производсителя** |  | 13d | 2026-05-13 09:00 A | 2026-05-29 18:00 A |  | 100% |  |  |  |  |  | 0.75h | 0.75h |
| 1916 | 5.55.1 | отправить сито на ремонт производителю |  | 30min | 2026-05-13 09:00 A | 2026-05-13 09:30 A |  | 100% |  |  |  | start no earlier than 2026-05-13 09:00 | Шуранов Ю | 0.5h | 0.5h |
| 1917 | 5.55.2 | контроль доставки |  | 15min | 2026-05-29 17:45 A | 2026-05-29 18:00 A | 1916SF+15d | 100% |  |  |  | start no earlier than 2026-05-12 08:00 | Шуранов Ю | 0.25h | 0.25h |
| 1918 | 5.56 | зачистить приемный бункер после дробилке болгаркой |  | 1h | 2026-04-30 08:00 A | 2026-04-30 10:00 A |  | 100% |  |  |  | start no earlier than 2026-04-30 08:00 | Дедов В | 1h | 1h |
| 1919 | 5.57 | **ремонт стиральной машинки / шум подшипника** |  | 1d? | 2026-04-27 09:00 | 2026-04-27 18:00 |  |  |  |  | 234.59d |  |  | 8h |  |
| 1920 | 5.57.1 | договор |  | 1d? | 2026-04-27 09:00 | 2026-04-27 18:00 |  |  |  |  | 234.59d | start no earlier than 2026-04-27 08:00 | Шуранов Ю | 8h |  |
| 1921 | 5.58 | **ремонт утечки с системы отопления** |  | 1.12d | 2026-05-04 09:00 | 2026-05-05 10:00 |  | 100% | 2026-05-07 09:00 | 2026-05-08 10:00 |  |  |  | 10h | 10h |
| 1922 | 5.58.1 | слив воды |  | 4h | 2026-05-07 09:00 A | 2026-05-07 13:00 A |  | 100% |  |  |  | start no earlier than 2026-05-07 09:00 | Макаревич А | 4h | 4h |
| 1923 | 5.58.2 | ремонт утечки |  | 2h | 2026-05-07 13:00 A | 2026-05-07 16:00 A | 1922 | 100% |  |  |  | start no earlier than 2026-04-27 08:00 | Макаревич А | 2h | 2h |
| 1924 | 5.58.3 | заправить воду / опресовать |  | 4h | 2026-05-07 15:00 A | 2026-05-08 10:00 A | 1923 | 100% |  |  |  | start no earlier than 2026-04-27 08:00 | Макаревич А | 4h | 4h |
| 1925 | 5.59 | долить в систему отопления воды цех 5а, электрокотел не включаем. Работаем на газ котле |  | 1h | 2026-04-24 09:00 A | 2026-04-24 10:00 A |  | 100% |  |  |  | start no earlier than 2026-04-24 08:00 | Бундин В | 1h | 1h |
| 1926 | 5.60 | вывезти шнек на синий склад |  | 1h | 2026-04-23 09:00 A | 2026-04-23 10:00 A |  | 100% |  |  |  | start no earlier than 2026-04-24 09:00 | Бобренок В; Тимофеев В | 2h | 2h |
| 1927 | 5.61 | взять на зажима для троса на складе и натянуть трос на воротах 5а |  | 2h | 2026-04-25 09:00 A | 2026-04-27 11:00 A |  | 100% |  |  |  | start no earlier than 2026-04-25 09:00 | Макаревич А | 2h | 2h |
| 1928 | 5.62 | убавить температуры на газ котлах |  | 1h | 2026-04-24 09:00 A | 2026-04-24 10:00 A |  | 100% |  |  |  | start no earlier than 2026-04-24 09:00 | Шуранов Ю | 1h | 1h |
| 1929 | 5.63 | заварить сито и хомуты |  | 1h | 2026-04-24 09:00 A | 2026-04-24 10:00 A |  | 100% |  |  |  | start no earlier than 2026-04-24 09:00 | Тимофеев В | 1h | 1h |
| 1930 | 5.64 | проверка вибросит детальный осмотр с полной разборкой / ремонт трещин |  | 4h | 2026-04-21 09:00 A | 2026-04-21 13:00 A |  | 100% |  |  |  | start no earlier than 2026-04-21 09:00 | Бундин В | 4h | 4h |
| 1931 | 5.65 | протяжка анкеров стеллажей, болтается |  | 2h | 2026-04-20 09:00 A | 2026-04-20 11:00 A |  | 100% |  |  |  | start no earlier than 2026-04-20 09:00 | Макаревич А | 2h | 2h |
| 1932 | 5.66 | замена потускневших ламп в инсекютере. Мастеру сообщить кол-во. б/у складывать в коробку |  | 2h | 2026-05-06 09:00 A | 2026-05-06 11:00 A |  | 100% |  |  |  | start no earlier than 2026-05-06 09:00 | Бобренок В | 2h | 2h |
| 1933 | 5.67 | переворачиваем молотки дробилка |  | 4h | 2026-04-15 09:00 A | 2026-04-15 13:00 A |  | 100% |  |  |  | start no earlier than 2026-04-17 08:00 | Макаревич А; Тимофеев В | 8h | 8h |
| 1934 | 5.68 | завершить работы по примыканию к кровли 5А (излишки изоспан) |  | 1d? | 2026-06-19 09:00 | 2026-06-19 18:00 |  |  |  |  | 195.59d | start no earlier than 2026-06-19 09:00 | Олег | 8h |  |
| 1935 | 5.69 | монтаж тамбур для завоза навесок |  | 10d | 2026-04-16 09:00 | 2026-04-29 18:00 |  |  |  |  | 232.59d | start no earlier than 2026-04-16 08:00 | Некрасов А; Олег | 160h |  |
| 1936 | 5.70 | вырезать верхушку еврокуба возле мусорки, будет туда засыпать отсев для дворника | manual | 1h | 2026-04-18 09:00 A | 2026-04-18 10:00 A |  | 100% |  |  |  | start no earlier than 2026-04-18 09:00 | Макаревич А | 1h | 1h |
| 1937 | 5.71 | заварить хомуты и сетки от сито |  | 1h | 2026-04-14 09:00 A | 2026-04-14 10:00 A |  | 100% |  |  |  | start no earlier than 2026-04-14 08:00 | Труфанов А | 1h | 1h |
| 1938 | 5.72 | проверить дист. Воду на штабелере, если нужно долить (фото модели акб) |  | 1h | 2026-04-13 09:00 A | 2026-04-13 10:00 A |  | 100% |  |  |  | start no earlier than 2026-04-13 08:00 | Бундин В | 1h | 1h |
| 1939 | 5.73 | установка шнека отремонтированного обратно на дробилку |  | 6h | 2026-04-21 09:00 A | 2026-04-21 16:00 A |  | 100% |  |  |  | start no earlier than 2026-04-21 09:00 | Некрасов А; Труфанов А | 12h | 12h |
| 1940 | 5.74 | установка бойлера отремонтированного в туалет, а с туалета на 2 этаж, мастер выделит человека в помощь |  | 4h | 2026-04-13 09:00 A | 2026-04-13 13:00 A |  | 100% |  |  |  | start no earlier than 2026-04-13 09:00 | Труфанов А | 4h | 4h |
| 1941 | 5.75 | замена паука на расстаривателе- высокие бэги не могут поднять до конца |  | 1h | 2026-04-10 08:00 A | 2026-04-10 10:00 A |  | 100% |  |  |  | start no earlier than 2026-04-10 08:00 | Тимофеев В | 1h | 1h |

| ID | WBS | Task | Type | Duration | Start | Finish | Predecessors | Complete | Actual start | Actual finish | Constraint | Resources | Work | Actual work |
| --- | --- | --- | --- | --- | --- | --- | --- | --- | --- | --- | --- | --- | --- | --- |
| 1942 | 5.76 | **получить насос Wilo, установить на 1 газовый котел** |  | 0.12d | 2026-04-10 09:00 A | 2026-04-10 10:00 A |  | 100% |  |  |  | Бундин В | 2h | 2h |
| 1943 | 5.76.1 | проверить направление подачи воды, посмотреть по аналогии 2 котла |  | 1h | 2026-04-10 09:00 A | 2026-04-10 10:00 A |  | 100% |  |  | start no earlier than 2026-04-10 09:00 | Тимофеев В | 1h | 1h |
| 1944 | 5.77 | ремот сеток с сито |  | 2h | 2026-04-06 09:00 A | 2026-04-06 11:00 A |  | 100% |  |  | start no earlier than 2026-04-06 08:00 | Труфанов А | 2h | 2h |
| 1945 | 5.78 | на выходах из сито №1 и №2 установить сетки с бортиками |  | 2h | 2026-04-06 09:00 A | 2026-04-06 11:00 A |  | 100% |  |  | start no earlier than 2026-04-06 08:00 | Труфанов А | 2h | 2h |
| 1946 | 5.79 | сыпит сырье с дробилки (вход) |  | 2h | 2026-06-15 09:00 A | 2026-06-15 11:00 A |  | 100% |  |  | start no earlier than 2026-06-13 09:00 | Некрасов А; Труфанов А | 4h | 4h |
| 1947 | 5.80 | востановить ручной штурвал заслонки на растаривателе дробилки |  | 1h | 2026-04-02 08:00 A | 2026-04-02 10:00 A |  | 100% |  |  | start no earlier than 2026-04-02 08:00 | Бобренок В | 1h | 1h |
| 1948 | 5.81 | изготовить штурвал заслонки на растариватель вибросита у стены |  | 2h | 2026-04-13 09:00 A | 2026-04-13 11:00 A |  | 100% |  |  | start no earlier than 2026-04-13 09:00 | Труфанов А | 2h | 2h |
| 1949 | 5.82 | монтаж отбойников | manual | 6h | 2026-04-18 09:00 A | 2026-04-18 16:00 A |  | 100% |  |  | start no earlier than 2026-04-18 09:00 | Бобренок В | 6h | 6h |
| 1950 | 5.83 | **ремонт шкаф управления шнеком 1 растариватель (замена щитка взять на складе)** |  | 13.5d? | 2026-04-21 09:00 | 2026-05-07 13:00 |  | 100% | 2026-04-17 09:00 | 2026-04-29 09:30 |  |  | 91.75h | 91.75h |
| 1951 | 5.83.1 | вывод кнопки управления частотником на ШУ (если нужно замена частотника) с мастером согласовать остановку |  | 5h | 2026-04-20 09:00 A | 2026-04-20 15:00 A |  | 100% |  |  | start no earlier than 2026-04-20 09:00 | Дедов В | 5h | 5h |
| 1952 | 5.83.2 | установить кнопочный пост |  | 2h | 2026-04-21 09:00 A | 2026-04-21 11:00 A |  | 100% |  |  | start no earlier than 2026-04-21 09:00 | Дедов В | 2h | 2h |
| 1953 | 5.83.3 | заявка кнопка SB7 |  | 15min | 2026-04-21 09:00 A | 2026-04-21 09:15 A |  | 100% |  |  | start no earlier than 2026-04-21 09:00 | Зорькин В | 0.25h | 0.25h |
| 1954 | 5.83.4 | доставка |  | 5d | 2026-04-21 09:15 A | 2026-04-28 09:15 A | 1953 | 100% |  |  | start no earlier than 2026-04-20 08:00 | Карабанов | 40h | 40h |
| 1955 | 5.83.5 | замена |  | 1h | 2026-04-27 09:15 A | 2026-04-27 10:15 A | 1954 | 100% |  |  | start no earlier than 2026-04-20 08:00 | Дедов В | 1h | 1h |
| 1956 | 5.83.6 | ремонт корпус |  | 1h | 2026-04-17 09:00 A | 2026-04-17 10:00 A | 1951 | 100% |  |  | start no earlier than 2026-04-09 09:00 | Труфанов А | 1h | 1h |
| 1957 | 5.83.7 | **замена корпус** |  | 6.06d | 2026-04-21 09:00 A | 2026-04-29 09:30 A |  | 100% |  |  |  |  | 42.5h | 42.5h |
| 1958 | 5.83.7.1 | заявка |  | 30min | 2026-04-21 09:00 A | 2026-04-21 09:30 A |  | 100% |  |  | start no earlier than 2026-03-31 08:00 | Зорькин В | 0.5h | 0.5h |
| 1959 | 5.83.7.2 | доставка |  | 5d | 2026-04-21 09:30 A | 2026-04-29 09:30 A | 1958 | 100% |  |  | start no earlier than 2026-03-31 08:00 | Карабанов | 40h | 40h |
| 1960 | 5.83.7.3 | замена |  | 2h | 2026-04-28 09:30 A | 2026-04-28 11:30 A | 1959 | 100% |  |  | start no earlier than 2026-04-14 09:00 | Тимофеев В | 2h | 2h |
| 1961 | 5.84 | получить фланец на складе NMRV040 и установить мотор-редуктор на расстаривателе №1 |  | 2h | 2026-04-28 09:00 A | 2026-04-28 11:00 A |  | 100% |  |  | start no earlier than 2026-04-28 09:00 | Бундин В | 2h | 2h |
| 1962 | 5.85 | убрать красный скотч везде в дробилке, сделать крепление фильтра с малой дробилки на ленточный хомут |  | 3h | 2026-03-27 09:00 A | 2026-03-27 12:00 A |  | 100% |  |  | start no earlier than 2026-03-27 08:00 | Труфанов А | 3h | 3h |
| 1963 | 5.86 | ремонт вибросито |  | 4h | 2026-03-27 08:00 A | 2026-03-27 13:00 A |  | 100% |  |  | start no earlier than 2026-03-27 08:00 | Тимофеев В; Некрасов А | 7h | 7h |
| 1964 | 5.87 | заварить сито возле слесарки (2 шт) и деки 2 шт |  | 3h | 2026-03-26 09:00 A | 2026-03-26 12:00 A |  | 100% |  |  | start no earlier than 2026-03-26 08:00 | Труфанов А | 3h | 3h |
| 1965 | 5.88 | сделать отбойник на входную дверь |  | 1h | 2026-03-28 09:00 A | 2026-03-30 10:00 A |  | 100% |  |  | start no earlier than 2026-03-28 09:00 | Бундин В | 1h | 1h |
| 1966 | 5.89 | сделать трап в курилку |  | 3h | 2026-04-01 09:00 A | 2026-04-01 12:00 A |  | 100% |  |  | start no earlier than 2026-04-01 09:00 | Бундин В | 3h | 3h |
| 1967 | 5.90 | заварить бункер дробилки |  | 2h | 2026-03-24 09:00 A | 2026-03-24 11:00 A |  | 100% |  |  | start no earlier than 2026-03-24 09:00 | Некрасов А; Труфанов А | 4h | 4h |
| 1968 | 5.91 | перенос металл с торца стеллажа напротив ВРУ / на син склад |  | 1h | 2026-03-25 09:00 A | 2026-03-25 10:00 A |  | 100% |  |  | start no earlier than 2026-03-25 09:00 | Бобренок В | 1h | 1h |
| 1969 | 5.92 | пульт управления шибером растариватель правый демонтаж красный скотч / закрепить |  | 1h | 2026-03-22 09:00 A | 2026-03-23 10:00 A |  | 100% |  |  | start no earlier than 2026-03-22 09:00 | Бобренок В | 1h | 1h |
| 1970 | 5.93 | установить корпус на переключатель реверса шнек растаривателя правый / продуть от пыли контакты |  | 30min | 2026-03-22 09:00 A | 2026-03-23 09:30 A |  | 100% |  |  | start no earlier than 2026-03-22 09:00 | Бобренок В | 0.5h | 0.5h |
| 1971 | 5.94 | демонтаж розетки без крышки 2 этаж щиток в фае |  | 30min | 2026-03-25 09:00 A | 2026-03-25 09:30 A |  | 100% |  |  | start no earlier than 2026-03-25 09:00 | Бобренок В | 0.5h | 0.5h |
| 1972 | 5.95 | подлючить розетку для зарядки нового АКБ для штабелера Ц.5А |  | 2h | 2026-03-21 09:00 A | 2026-03-23 11:00 A |  | 100% |  |  | start no earlier than 2026-03-21 09:00 | Дедов В | 2h | 2h |

| ID | WBS | Task | Type | Duration | Start | Finish | Predecessors | Complete | Total slack | Free slack | Constraint | Resources | Work | Actual work |
| --- | --- | --- | --- | --- | --- | --- | --- | --- | --- | --- | --- | --- | --- | --- |
| 1973 | 5.96 | **ремонт шнек с дробилки** |  | 11.75d | 2026-03-17 09:00 A | 2026-04-01 16:00 A |  | 100% |  |  |  |  | 7h | 7h |
| 1974 | 5.96.1 | орг пескоструйка корпус шнека - отправить |  | 1h | 2026-03-17 09:00 A | 2026-03-17 10:00 A |  | 100% |  |  | start no earlier than 2026-03-17 08:00 | Шуранов Ю | 1h | 1h |
| 1975 | 5.96.2 | сборка шнека с ремонта |  | 6h | 2026-04-01 09:00 A | 2026-04-01 16:00 A | 1974 | 100% |  |  | start no earlier than 2026-04-01 09:00 | Некрасов А | 6h | 6h |
| 1976 | 5.97 | установить уплотнения на гофра без красн скотча |  | 4h | 2026-03-20 09:00 A | 2026-03-20 13:00 A |  | 100% |  |  | start no earlier than 2026-03-20 09:00 | Некрасов А; Труфанов А | 8h | 8h |
| 1977 | 5.98 | добавить воду в 4 газ. Котел проверить реальное давление в системе |  | 2h | 2026-03-19 08:00 A | 2026-03-19 11:00 A |  | 100% |  |  | start no earlier than 2026-03-19 08:00 | Бундин В | 2h | 2h |
| 1978 | 5.99 | сменить палярность вращения дробилки / сточило ножи |  | 1h | 2026-03-16 09:00 A | 2026-03-16 10:00 A |  | 100% |  |  | start no earlier than 2026-03-16 09:00 | Труфанов А; Некрасов А | 2h | 2h |
| 1979 | 5.100 | **устанвить ИБП на клапан газ** |  | 0.03d | 2026-03-16 09:00 A | 2026-03-16 09:15 A |  | 100% |  |  |  |  | 0.25h | 0.25h |
| 1980 | 5.100.1 | координация сроков выполнения с газовщиком |  | 15min | 2026-03-16 09:00 A | 2026-03-16 09:15 A |  | 100% |  |  | start no earlier than 2026-03-16 09:00 | Шуранов Ю | 0.25h | 0.25h |
| 1981 | 5.101 | **установить вентилятор с клапаном и фильтром** |  | 11.03d? | 2026-03-18 09:00 | 2026-04-02 09:15 |  |  | 252.56d |  |  |  | 88.25h |  |
| 1982 | 5.101.1 | получить сммету / счет |  | 15min | 2026-03-18 09:00 | 2026-03-18 09:15 |  |  | 252.56d | 0d | start no earlier than 2026-03-18 09:00 | Домоводов К | 0.25h |  |
| 1983 | 5.101.2 | изготовление поставка |  | 10d | 2026-03-18 09:15 | 2026-04-01 09:15 | 1982 |  | 252.56d | 0d | start no earlier than 2026-03-17 08:00 | оплот | 80h |  |
| 1984 | 5.101.3 | монтаж |  | 1d? | 2026-04-01 09:15 | 2026-04-02 09:15 | 1983 |  | 252.56d |  | start no earlier than 2026-03-17 08:00 | оплот | 8h |  |
| 1985 | 5.102 | закрыть отвертстие от демонтированной аспирации фильтротканью. Временно, до изг фильтра |  | 1h | 2026-03-13 08:00 A | 2026-03-13 10:00 A |  | 100% |  |  | start no earlier than 2026-03-13 08:00 | Дедов В | 1h | 1h |
| 1986 | 5.103 | **на отверстие от демонтированной оспирации установить фильтр** |  | 7.01d | 2026-03-20 09:00 A | 2026-03-31 09:05 A |  | 100% |  |  |  |  | 2.08h | 2.08h |
| 1987 | 5.103.1 | получить фильтры |  | 5min | 2026-03-31 09:00 A | 2026-03-31 09:05 A |  | 100% |  |  | start no earlier than 2026-03-31 09:00 | Шуранов Ю | 0.08h | 0.08h |
| 1988 | 5.103.2 | монтаж |  | 1h | 2026-03-20 09:00 A | 2026-03-20 10:00 A | 1987FS+1d | 100% |  |  | start no earlier than 2026-03-20 09:00 | Некрасов А; Труфанов А | 2h | 2h |
| 1989 | 5.104 | **устранить ржавчину шнека после дробилки** |  | 1d? | 2026-03-16 09:00 A | 2026-03-16 18:00 A |  | 100% |  |  |  |  | 16h | 16h |
| 1990 | 5.104.1 | полная разборка / зачистка / сборка |  | 1d? | 2026-03-16 09:00 A | 2026-03-16 18:00 A |  | 100% |  |  | start no earlier than 2026-03-16 09:00 | Труфанов А; Некрасов А | 16h | 16h |
| 1991 | 5.104.2 | согласовать чем можно покрыть шнек внутри | milestone | 0d | 2026-03-16 09:00 A | 2026-03-16 09:00 A |  | 100% |  |  | start no earlier than 2026-03-16 09:00 | Домоводов К |  |  |
| 1992 | 5.105 | заменаить гидро АКБ на насосной станции / замена мебраны и золотника |  | 2h | 2026-03-15 09:00 A | 2026-03-16 11:00 A |  | 100% |  |  | start no earlier than 2026-03-15 09:00 | Бундин В | 2h | 2h |
| 1993 | 5.106 | устарнить выдавливание материала с шнека №1 узел дробилки |  | 4h | 2026-03-13 09:00 A | 2026-03-13 13:00 A |  | 100% |  |  | start no earlier than 2026-03-13 09:00 | Тимофеев В; Бундин В | 8h | 8h |
| 1994 | 5.107 | проверить обр клапан бойлер в гардеробе. Стреляет |  | 30min | 2026-03-13 09:00 A | 2026-03-13 09:30 A |  | 100% |  |  | start no earlier than 2026-03-13 09:00 | Бундин В | 0.5h | 0.5h |
| 1995 | 5.108 | долить дистилят в АКБ штабелер свинцовый |  | 1h | 2026-03-11 09:00 A | 2026-03-11 10:00 A |  | 100% |  |  | start no earlier than 2026-03-11 09:00 | Макаревич А | 1h | 1h |
| 1996 | 5.109 | **замена бойлер туалет** |  | 16.25d | 2026-03-23 09:00 A | 2026-04-14 11:00 A |  | 100% |  |  |  |  | 82.25h | 82.25h |
| 1997 | 5.109.1 | заявка бойлер |  | 15min | 2026-03-23 09:00 A | 2026-03-23 09:15 A |  | 100% |  |  | start no earlier than 2026-03-23 09:00 | Шуранов Ю | 0.25h | 0.25h |
| 1998 | 5.109.2 | доставка |  | 10d | 2026-03-30 09:00 A | 2026-04-10 18:00 A | 1997 | 100% |  |  | start no earlier than 2026-03-29 09:00 | Карабанов | 80h | 80h |
| 1999 | 5.109.3 | монтаж |  | 2h | 2026-04-14 09:00 A | 2026-04-14 11:00 A | 1998 | 100% |  |  | start no earlier than 2026-03-12 08:00 | Тимофеев В | 2h | 2h |
| 2000 | 5.110 | ремонт хомут с вибросито |  | 1h | 2026-03-10 09:00 A | 2026-03-10 10:00 A |  | 100% |  |  | start no earlier than 2026-03-10 09:00 | Макаревич А | 1h | 1h |
| 2001 | 5.111 | Заварить деку на сито |  | 2h | 2026-03-06 09:00 A | 2026-03-06 11:00 A |  | 100% |  |  | start no earlier than 2026-03-06 09:00 | Тимофеев В | 2h | 2h |
| 2002 | 5.112 | Замена двойной розетки (созвон с Шурановым) или спросить у мастера |  | 1h | 2026-03-05 08:00 A | 2026-03-05 10:00 A |  | 100% |  |  | start no earlier than 2026-03-05 08:00 | Дедов В | 1h | 1h |
| 2003 | 5.113 | ошибка Е10 стиральная машинка |  | 1h | 2026-03-04 09:00 A | 2026-03-04 10:00 A |  | 100% |  |  | start no earlier than 2026-03-04 09:00 | Дедов В | 1h | 1h |
| 2004 | 5.114 | ремонт сито, сварка шов |  | 2h | 2026-03-03 09:00 A | 2026-03-03 11:00 A |  | 100% |  |  | start no earlier than 2026-03-03 09:00 | Макаревич А | 2h | 2h |
| 2005 | 5.115 | ремонт растариватель №1 + установить косынки |  | 2h | 2026-03-03 09:00 A | 2026-03-03 11:00 A |  | 100% |  |  | start no earlier than 2026-03-03 09:00 | Некрасов А; Труфанов А | 4h | 4h |

| ID | WBS | Task | Duration | Start | Finish | Predecessors | Complete | Remaining | Actual start | Total slack | Constraint | Resources | Work | Actual work |
| --- | --- | --- | --- | --- | --- | --- | --- | --- | --- | --- | --- | --- | --- | --- |
| 2006 | 5.116 | **ремонт растаривателя №3 - клинит заслонку** | 97.81d | 2026-04-20 09:00 A | 2026-09-02 16:30 |  | 87% | 13.01d |  | 142.78d |  |  | 16.92h | 14.67h |
| 2007 | 5.116.1 | установка ручной штурвал управления шибером | 2h | 2026-04-20 09:00 A | 2026-04-20 11:00 A |  | 100% |  |  |  | start no earlier than 2026-04-20 09:00 | Бундин В | 2h | 2h |
| 2008 | 5.116.2 | контроль поставка Зип - оплачивали или нет? | 10min | 2026-08-12 09:00 A | 2026-08-12 09:10 A |  | 100% |  |  |  | start no earlier than 2026-08-12 09:00 | Зорькин В | 0.17h | 0.17h |
| 2009 | 5.116.3 | получить счет | 15min | 2026-08-13 09:00 A | 2026-08-13 09:15 A |  | 100% |  |  |  | start no earlier than 2026-08-13 09:00 | Домоводов К | 0.25h | 0.25h |
| 2010 | 5.116.4 | контроль поставки | 15min | 2026-08-31 09:15 | 2026-08-31 09:30 | 2009FS+12d |  |  |  | 145.53d | start no earlier than 2026-08-31 09:00 | Зорькин В | 0.25h |  |
| 2011 | 5.116.5 | приемка | 15min | 2026-09-01 09:30 A | 2026-09-01 09:45 A | 2010FS+1d | 100% |  |  |  | start no earlier than 2026-08-31 09:00 | Зорькин В | 0.25h | 0.25h |
| 2012 | 5.116.6 | замена | 4h | 2026-09-02 09:30 A | 2026-09-02 14:30 A | 2011FS+1d | 100% |  |  |  | start no earlier than 2026-08-12 09:00 | Тимофеев В | 4h | 4h |
| 2013 | 5.116.7 | Ремонт паука с растаривателя, оценить состояние. | 2h | 2026-09-02 09:00 A | 2026-09-02 11:00 A |  | 100% |  |  |  | start no earlier than 2026-09-02 09:00 | Тимофеев В | 2h | 2h |
| 2014 | 5.116.8 | установить фланец на редуктор NMRV050 | 2h | 2026-05-18 09:00 A | 2026-05-18 11:00 A |  | 100% |  |  |  | start no earlier than 2026-05-20 09:00 | Бобренок В | 2h | 2h |
| 2015 | 5.116.9 | настройка тепловое реле, настройка концевиков | 2h | 2026-09-02 14:30 | 2026-09-02 16:30 | 2012, 2014 |  |  |  | 142.78d | start no earlier than 2026-05-08 09:00 | Дедов В | 2h |  |
| 2016 | 5.116.10 | доработка пластины, которая клинит | 4h | 2026-05-07 09:00 A | 2026-05-07 13:00 A |  | 100% |  |  |  | start no earlier than 2026-05-07 09:00 | Тимофеев В | 4h | 4h |
| 2017 | 5.117 | **установить курилку на раму. Изготовить лавочку** | 19.25d? | 2026-02-28 09:00 A | 2026-03-27 11:00 A |  | 100% |  |  |  |  |  | 27h | 27h |
| 2018 | 5.117.1 | сделать удлинители для синей платформы, на которые встанет курилка | 1d? | 2026-02-28 09:00 A | 2026-03-02 18:00 A |  | 100% |  |  |  | start no earlier than 2026-02-28 09:00 | Макаревич А | 8h | 8h |
| 2019 | 5.117.2 | закрыть отверстие в полу жзелезом | 1h | 2026-03-13 09:00 A | 2026-03-13 10:00 A |  | 100% |  |  |  | start no earlier than 2026-03-13 09:00 | Некрасов А; Труфанов А | 2h | 2h |
| 2020 | 5.117.3 | монтаж фанера на лавочку | 2h | 2026-03-27 09:00 A | 2026-03-27 11:00 A | 2019 | 100% |  |  |  | start no earlier than 2026-03-27 09:00 |  |  |  |
| 2021 | 5.117.4 | поворот курилки к стене, от ветра | 1h | 2026-03-20 09:00 A | 2026-03-20 10:00 A |  | 100% |  |  |  | start no earlier than 2026-03-20 09:00 | Некрасов А | 1h | 1h |
| 2022 | 5.117.5 | изготовить трап входной | 4h | 2026-03-20 10:00 A | 2026-03-20 15:00 A | 2021 | 100% |  |  |  | start no earlier than 2026-03-12 08:00 | Некрасов А | 4h | 4h |
| 2023 | 5.117.6 | изготовить лавку по периметру курилки. На железо будет потом доска или пенка. Металл с остатков 3ц или с синего склада | 1d? | 2026-03-01 09:00 A | 2026-03-02 18:00 A |  | 100% |  |  |  | start no earlier than 2026-03-01 09:00 | Макаревич А | 8h | 8h |
| 2024 | 5.117.7 | приготовить ручки за которые будет толпа поднимать руками курилку | 2h | 2026-03-09 09:00 A | 2026-03-09 11:00 A |  | 100% |  |  |  | start no earlier than 2026-03-09 09:00 | Некрасов А; Труфанов А | 4h | 4h |
| 2025 | 5.118 | ТО штабелеров - обрезать нитки. Дефектовка подшипников, указать в отчете состояние | 2h | 2026-03-01 09:00 A | 2026-03-02 11:00 A |  | 100% |  |  |  | start no earlier than 2026-03-01 09:00 | Макаревич А | 2h | 2h |
| 2026 | 5.119 | **штабелер - замена ролик мачты. Подшипник котка** | 0.01d | 2026-03-03 09:00 A | 2026-03-03 09:05 A |  | 100% |  |  |  |  |  | 0.17h | 0.17h |
| 2027 | 5.119.1 | контроль | 5min | 2026-03-03 09:00 A | 2026-03-03 09:05 A |  | 100% |  |  |  | start no earlier than 2026-03-03 09:00 | Зорькин В; Тракресурс | 0.17h | 0.17h |
| 2028 | 5.120 | **установить стеллажи для архив образцов** | 25.06d? | 2026-03-03 09:00 | 2026-04-07 09:30 A |  | 100% |  | 2026-03-05 09:00 |  |  |  | 227.25h | 227.25h |
| 2029 | 5.120.1 | монтаж освещение | 4h | 2026-03-06 09:00 A | 2026-03-06 13:00 A |  | 100% |  |  |  | start no earlier than 2026-03-06 09:00 | Некрасов А; Труфанов А | 8h | 8h |

| ID | WBS | Task | Duration | Start | Finish | Predecessors | Complete | Actual start | Actual finish | Constraint | Resources | Work | Actual work |
| --- | --- | --- | --- | --- | --- | --- | --- | --- | --- | --- | --- | --- | --- |
| 2030 | 5.120.2 | **покрасить стеллажи** | 12.02d | 2026-03-06 14:00 A | 2026-03-24 14:10 A | 2029 | 100% |  |  |  |  | 92.17h | 92.17h |
| 2031 | 5.120.2.1 | Заказать краску не пахнущую для радиаторов | 10min | 2026-03-06 14:00 A | 2026-03-06 14:10 A |  | 100% |  |  | start no earlier than 2026-03-03 09:00 | Зорькин В | 0.17h | 0.17h |
| 2032 | 5.120.2.2 | Доставка | 10d | 2026-03-06 14:10 A | 2026-03-24 14:10 A | 2031 | 100% |  |  | start no earlier than 2026-03-03 09:00 | Карабанов | 80h | 80h |
| 2033 | 5.120.2.3 | покраска | 4h | 2026-03-06 14:00 A | 2026-03-06 18:00 A |  | 100% |  |  | start no earlier than 2026-03-06 09:00 | Некрасов А; Труфанов А | 8h | 8h |
| 2034 | 5.120.2.4 | покраска | 4h | 2026-03-06 14:00 A | 2026-03-06 18:00 A |  | 100% |  |  | start no earlier than 2026-03-06 09:00 | Бундин В | 4h | 4h |
| 2035 | 5.120.3 | занести стеллажи в кабинеты с работниками 5ц | 4h | 2026-03-09 09:00 A | 2026-03-09 13:00 A | 2037 | 100% |  |  | start no earlier than 2026-03-09 09:00 | Бобренок В | 4h | 4h |
| 2036 | 5.120.4 | сборка стеллажей | 4h | 2026-03-13 09:00 A | 2026-03-13 13:00 A |  | 100% |  |  | start no earlier than 2026-03-13 09:00 | Труфанов А; Некрасов А | 8h | 8h |
| 2037 | 5.120.5 | монтаж доп полок с уголка | 4h | 2026-03-08 09:00 A | 2026-03-09 13:00 A | 2038 | 100% |  |  | start no earlier than 2026-03-08 09:00 | Бобренок В | 4h | 4h |
| 2038 | 5.120.6 | напилить фанеру на стеллажи | 8h | 2026-03-15 09:00 A | 2026-03-16 18:00 A |  | 100% |  |  | start no earlier than 2026-03-15 09:00 | Бундин В | 8h | 8h |
| 2039 | 5.120.7 | напилить фанеру на стеллажи | 4h | 2026-03-16 09:00 A | 2026-03-16 13:00 A |  | 100% |  |  | start no earlier than 2026-03-16 09:00 | Макаревич А; Тимофеев В | 8h | 8h |
| 2040 | 5.120.8 | **монтаж двери** | 8.06d? | 2026-03-03 09:00 | 2026-03-11 09:30 |  | 100% | 2026-03-05 09:00 | 2026-04-07 09:30 |  |  | 95.08h | 95.08h |
| 2041 | 5.120.8.1 | заявка фурнитуры | 30min | 2026-03-05 09:00 A | 2026-03-05 09:30 A |  | 100% |  |  | start no earlier than 2026-03-05 09:00 | Зорькин В | 0.5h | 0.5h |
| 2042 | 5.120.8.2 | получить коробку на дверь / контроолль поставки | 5min | 2026-03-18 09:00 A | 2026-03-18 09:05 A |  | 100% |  |  | start no earlier than 2026-03-18 09:00 | Зорькин В | 0.08h | 0.08h |
| 2043 | 5.120.8.3 | монтаж 2 двери | 4h | 2026-03-20 09:00 A | 2026-03-20 13:00 A |  | 100% |  |  | start no earlier than 2026-03-20 09:00 | Тимофеев В; Бундин В | 8h | 8h |
| 2044 | 5.120.8.4 | монтаж замка и ручек | 2h | 2026-03-24 09:00 A | 2026-03-24 11:00 A |  | 100% |  |  | start no earlier than 2026-03-24 09:00 | Тимофеев В | 2h | 2h |
| 2045 | 5.120.8.5 | **монтаж наличноков** | 10.06d | 2026-03-24 09:00 A | 2026-04-07 09:30 A |  | 100% |  |  |  |  | 84.5h | 84.5h |
| 2046 | 5.120.8.5.1 | заявка на наличинки | 30min | 2026-03-24 09:00 A | 2026-03-24 09:30 A |  | 100% |  |  | start no earlier than 2026-03-24 09:00 | Зорькин В | 0.5h | 0.5h |
| 2047 | 5.120.8.5.2 | доставка | 10d | 2026-03-24 09:30 A | 2026-04-07 09:30 A | 2046 | 100% |  |  | start no earlier than 2026-03-20 08:00 | Карабанов | 80h | 80h |
| 2048 | 5.120.8.5.3 | монтаж | 4h | 2026-04-04 09:30 A | 2026-04-06 13:00 A | 2047 | 100% |  |  | start no earlier than 2026-03-20 08:00 | Тимофеев В | 4h | 4h |
| 2049 | 5.121 | **монтаж розеток для весов** | 83d | 2026-03-02 09:00 A | 2026-06-24 18:00 A |  | 100% |  |  |  |  | 98.5h | 98.5h |
| 2050 | 5.121.1 | составить план монтажа, расчет материалов | 30min | 2026-03-02 09:00 A | 2026-03-02 09:30 A |  | 100% |  |  | start no earlier than 2026-03-02 09:00 | Некрасов А; Зорькин В; Труфанов А | 1.5h | 1.5h |
| 2051 | 5.121.2 | заявка трос/ талреп | 30min | 2026-03-02 09:30 A | 2026-03-02 10:00 A | 2050 | 100% |  |  | start no earlier than 2026-02-27 08:00 | Зорькин В | 0.5h | 0.5h |
| 2052 | 5.121.3 | доставка | 10d | 2026-03-02 10:00 A | 2026-03-16 10:00 A | 2051 | 100% |  |  | start no earlier than 2026-02-27 08:00 | Карабанов | 80h | 80h |
| 2053 | 5.121.4 | комплектация | 30min | 2026-06-01 09:00 A | 2026-06-01 09:30 A |  | 100% |  |  | start no earlier than 2026-06-01 09:00 | Зорькин В | 0.5h | 0.5h |
| 2054 | 5.121.5 | монтаж | 8h | 2026-06-24 09:00 A | 2026-06-24 18:00 A | 2052 | 100% |  |  | start no earlier than 2026-06-24 09:00 | Тимофеев В; Макаревич А | 16h | 16h |

| ID | WBS | Task | Duration | Start | Finish | Predecessors | Complete | Remaining | Actual start | Total slack | Free slack | Constraint | Resources | Work | Actual work |
| --- | --- | --- | --- | --- | --- | --- | --- | --- | --- | --- | --- | --- | --- | --- | --- |
| 2055 | 5.122 | **установить кнопочный пост вентилятора в окно в доступную зону** | 5.06d | 2026-03-03 09:00 A | 2026-03-10 09:30 |  | 1% | 5.01d |  | 269.53d |  |  |  | 44.5h | 0.5h |
| 2056 | 5.122.1 | заявка частотник 0,5-0,75квт | 30min | 2026-03-03 09:00 A | 2026-03-03 09:30 A |  | 100% |  |  |  |  | start no earlier than 2026-03-03 09:00 | Зорькин В | 0.5h | 0.5h |
| 2057 | 5.122.2 | доставка | 5d | 2026-03-03 09:30 | 2026-03-10 09:30 | 2056 |  |  |  | 269.53d |  | start no earlier than 2026-02-27 08:00 | Карабанов | 40h |  |
| 2058 | 5.122.3 | монтаж | 4h | 2026-03-03 09:00 | 2026-03-03 13:00 |  |  |  |  | 274.09d |  | start no earlier than 2026-03-03 09:00 | Дедов В | 4h |  |
| 2059 | 5.123 | замена местами бойлер с раздевали и кухня | 2h | 2026-02-27 09:00 A | 2026-02-27 11:00 A |  | 100% |  |  |  |  | start no earlier than 2026-02-27 08:00 | Бундин В; Труфанов А | 4h | 4h |
| 2060 | 5.124 | **установить калорифер на 4 котел** | 11.12d? | 2026-10-12 09:00 | 2026-10-27 10:00 |  |  |  |  | 96.47d |  |  |  | 97h |  |
| 2061 | 5.124.1 | заявка | 1h | 2026-10-12 09:00 | 2026-10-12 10:00 |  |  |  |  | 96.47d | 0d | start no earlier than 2026-10-12 09:00 | Зорькин В | 1h |  |
| 2062 | 5.124.2 | доставка | 10d | 2026-10-12 10:00 | 2026-10-26 10:00 | 2061 |  |  |  | 96.47d | 0d | start no earlier than 2026-02-27 08:00 | Карабанов | 80h |  |
| 2063 | 5.124.3 | монтаж | 1d? | 2026-10-26 10:00 | 2026-10-27 10:00 | 2062 |  |  |  | 96.47d |  | start no earlier than 2026-02-27 08:00 | Некрасов А; Труфанов А | 16h |  |
| 2064 | 5.125 | **изготовить бункер нерж** | 77d? | 2026-06-06 09:00 | 2026-09-16 18:00 |  | 83% | 13.29d? | 2026-03-16 09:00 |  |  |  |  | 115.5h | 81.5h |
| 2065 | 5.125.1 | составить чертеж | 1h | 2026-03-16 09:00 A | 2026-03-16 10:00 A |  | 100% |  |  |  |  | start no earlier than 2026-03-16 09:00 | Зорькин В | 1h | 1h |
| 2066 | 5.125.2 | заявка на нерж | 30min | 2026-03-16 10:00 A | 2026-03-16 10:30 A | 2065 | 100% |  |  |  |  | start no earlier than 2026-02-27 08:00 | Зорькин В | 0.5h | 0.5h |
| 2067 | 5.125.3 | доставка | 10d | 2026-04-23 09:00 A | 2026-05-06 18:00 A | 2066 | 100% |  |  |  |  | start no earlier than 2026-04-23 09:00 | Карабанов | 80h | 80h |
| 2068 | 5.125.4 | проверка черетежей / подготовка к сборке | 1h | 2026-10-06 09:00 | 2026-10-06 10:00 |  |  |  |  | 109.47d | 0d | start no earlier than 2026-10-06 09:00 | Труфанов А; Зорькин В | 2h |  |
| 2069 | 5.125.5 | сборка | 2d | 2026-10-06 10:00 | 2026-10-08 10:00 | 2067, 2068 |  |  |  | 109.47d |  | start no earlier than 2026-10-05 09:00 | Некрасов А; Тимофеев В | 32h |  |
| 2070 | 5.126 | аудит по взрывоопасности 5ц | 1d? | 2025-09-03 09:00 | 2025-09-03 18:00 |  |  |  |  | 402.59d |  | start no earlier than 2025-09-03 09:00 |  |  |  |
| 2071 | 5.127 | **расширить прорем для проезда погрузчика** | 3d? | 2024-05-27 09:00 | 2024-05-29 18:00 |  |  |  |  | 732.59d |  |  |  | 24h |  |
| 2072 | 5.127.1 | перенос канализ трубы | 1d? | 2024-05-27 09:00 | 2024-05-27 18:00 |  |  |  |  | 732.59d | 0d | start no earlier than 2024-05-27 09:00 | Некрасов А | 8h |  |
| 2073 | 5.127.2 | монтаж закладных в прорем +400мм | 1d? | 2024-05-28 09:00 | 2024-05-28 18:00 | 2072 |  |  |  | 732.59d | 0d | start no earlier than 2024-05-17 09:00 | Некрасов А | 8h |  |
| 2074 | 5.127.3 | демонтаж /расширение | 1d? | 2024-05-29 09:00 | 2024-05-29 18:00 | 2073 |  |  |  | 732.59d |  | start no earlier than 2024-05-17 09:00 | Некрасов А | 8h |  |
| 2075 | 5.128 | подключить концевые выключатели шибера растаривателя | 2h | 2023-06-21 09:00 | 2023-06-21 11:00 |  |  |  |  | 978.34d |  | start no earlier than 2023-06-21 09:00 | Дедов В | 2h |  |
| 2076 | 5.129 | **установить сирену при включении тельфера** | 119d? | 2023-05-29 09:00 A | 2023-11-09 18:00 |  |  | 118.79d? |  | 876.59d |  |  |  | 48.08h | 0.08h |
| 2077 | 5.129.1 | заявка на сирену и кабель | 5min | 2023-05-29 09:00 A | 2023-05-29 09:05 A |  | 100% |  |  |  |  | start no earlier than 2023-05-29 09:00 | Лобанов И | 0.08h | 0.08h |
| 2078 | 5.129.2 | доставка | 5d | 2023-05-29 09:05 | 2023-06-05 09:05 | 2077 |  |  |  | 989.58d | 112.99d | start no earlier than 2023-05-22 09:00 | Малинина М | 40h |  |
| 2079 | 5.129.3 | монтаж | 1d? | 2023-11-09 09:00 | 2023-11-09 18:00 | 2078 |  |  |  | 876.59d |  | start no earlier than 2023-11-09 09:00 | Дедов В | 8h |  |
| 2080 | 5.130 | держак мешка для сбора отработанного корма лопатой, что бы второй не держал мешок | 1d? | 2026-05-04 09:00 | 2026-05-04 18:00 |  |  |  |  | 229.59d |  | start no earlier than 2026-05-04 09:00 | Тимофеев В | 8h |  |

| ID | WBS | Task | Duration | Start | Finish | Predecessors | Complete | Remaining | Total slack | Constraint | Resources | Work | Actual work |
| --- | --- | --- | --- | --- | --- | --- | --- | --- | --- | --- | --- | --- | --- |
| 2081 | 5.131 | **Замена насосной станции** | 9.25d | 2026-09-01 09:00 A | 2026-09-11 11:00 |  | 92% | 0.71d | 135.34d |  |  | 6.33h | 6h |
| 2082 | 5.131.1 | Замена насоса | 2h | 2026-09-01 09:00 A | 2026-09-01 11:00 A |  | 100% |  |  | start no earlier than 2026-09-01 09:00 | Бундин В | 2h | 2h |
| 2083 | 5.131.2 | Заявка на станцию | 15min | 2026-09-02 09:00 | 2026-09-02 09:15 |  |  |  | 143.56d | start no earlier than 2026-09-02 08:00 | Зорькин В | 0.25h |  |
| 2084 | 5.131.3 | контроль доставки | 5min | 2026-09-11 09:00 | 2026-09-11 09:05 |  |  |  | 135.58d | start no earlier than 2026-09-11 09:00 | Зорькин В | 0.08h |  |
| 2085 | 5.131.4 | установка новой насосной станции | 2h | 2026-09-11 09:00 A | 2026-09-11 11:00 A |  | 100% |  |  | start no earlier than 2026-09-11 09:00 | Некрасов А; Макаревич А | 4h | 4h |
| 2086 | 5.132 | Попытаться заварить деки и хомуты той проволокой по нерже, что есть у нас | 3h | 2026-07-28 08:00 A | 2026-07-28 12:00 A |  | 100% |  |  | start no earlier than 2026-07-28 08:00 | Макаревич А | 3h | 3h |
| 2087 | 5.133 | **5 цех** | 0.25d | 2026-04-07 09:00 A | 2026-04-07 11:00 A |  | 100% |  |  |  |  | 3.5h | 3.5h |
| 2088 | 5.133.1 | Установка сеток на сито | 1h | 2026-04-07 09:00 A | 2026-04-07 10:00 A |  | 100% |  |  | start no earlier than 2026-04-07 08:00 | Бундин В | 1h | 1h |
| 2089 | 5.133.2 | **2 цех** | 0.25d | 2026-04-07 09:00 A | 2026-04-07 11:00 A |  | 100% |  |  |  |  | 2.5h | 2.5h |
| 2090 | 5.133.2.1 | Взять шланг с мойки зона экструдера, установить на складе навесок цех 2, для набора воды в кубы | 30min | 2026-04-07 09:00 A | 2026-04-07 09:30 A |  | 100% |  |  | start no earlier than 2026-04-07 08:00 | Бундин В | 0.5h | 0.5h |
| 2091 | 5.133.2.2 | Посмотреть подачу воды на поломоечной машинке | 2h | 2026-04-07 09:00 A | 2026-04-07 11:00 A |  | 100% |  |  | start no earlier than 2026-04-07 08:00 | Бундин В | 2h | 2h |
| 2092 | 6 | **модернизация** | 983.5d? | 2023-06-07 09:00 A | 2027-03-03 13:00 |  | 48% | 508.15d? | 5.09d |  |  | 3394.67h | 2643.67h |
| 2093 | 6.1 | доработка нерж труб для парогенератора (антиэлектрод) | 1h | 2026-07-06 09:00 | 2026-07-06 10:00 |  |  |  | 185.47d | start no earlier than 2026-07-06 09:00 | Тимофеев В | 1h |  |
| 2094 | 6.2 | **Дражжировка 2 линия 1 цех** | 0.25d | 2026-07-29 08:00 A | 2026-07-29 11:00 A |  | 100% |  |  |  |  | 2h | 2h |
| 2095 | 6.2.1 | установка трубки с отверстиями, эксперимент | 2h | 2026-07-29 08:00 A | 2026-07-29 11:00 A |  | 100% |  |  | start no earlier than 2026-07-29 08:00 | Тимофеев В | 2h | 2h |
| 2096 | 6.3 | **поточные весы на входе в барабан жира** | 0.12d | 2026-06-15 09:00 A | 2026-06-15 10:00 A |  | 100% |  |  |  |  | 1h | 1h |
| 2097 | 6.3.1 | запрос КП у НОТИС - весы с дозатором / бункеры | 1h | 2026-06-15 09:00 A | 2026-06-15 10:00 A |  | 100% |  |  | start no earlier than 2026-06-15 09:00 | Зорькин В | 1h | 1h |
| 2098 | 6.4 | **устройство загрузки в смесители** | 0.12d | 2026-03-31 09:00 | 2026-03-31 10:00 |  |  |  | 254.47d |  |  | 1h |  |
| 2099 | 6.4.1 | подбор оборудования, запрос КП | 1h | 2026-03-31 09:00 | 2026-03-31 10:00 |  |  |  | 254.47d | start no earlier than 2026-03-31 08:00 | Зорькин В | 1h |  |
| 2100 | 6.5 | **определить параметры сушки гранулы лаб испытанием** | 6d | 2024-09-09 09:00 A | 2024-09-16 18:00 A |  | 100% |  |  |  |  | 16h | 16h |
| 2101 | 6.5.1 | изучить метод материал, физ законы процесса сушки. | 4h | 2024-09-09 09:00 A | 2024-09-09 13:00 A |  | 100% |  |  | start no earlier than 2024-09-09 09:00 | Зорькин В | 4h | 4h |
| 2102 | 6.5.2 | Определить набор средств измерения и оборыдования для лаб работы. | 4h | 2024-09-09 14:00 A | 2024-09-09 18:00 A | 2101 | 100% |  |  | start no earlier than 2024-09-09 09:00 | Зорькин В | 4h | 4h |
| 2103 | 6.5.3 | разрабоать пошаговый план лаб работы сушки 1кг продукта в термошкафу | 4h | 2024-09-16 09:00 A | 2024-09-16 13:00 A | 2102 | 100% |  |  | start no earlier than 2024-09-16 09:00 | Зорькин В | 4h | 4h |
| 2104 | 6.5.4 | определить зависимость времени сушки от температуры и влажности среды. | 4h | 2024-09-16 14:00 A | 2024-09-16 18:00 A | 2103 | 100% |  |  | start no earlier than 2024-09-06 08:00 | Зорькин В | 4h | 4h |

| ID | WBS | Task | Type | Duration | Start | Finish | Predecessors | Complete | Remaining | Total slack | Constraint | Resources | Work | Actual work |
| --- | --- | --- | --- | --- | --- | --- | --- | --- | --- | --- | --- | --- | --- | --- |
| 2105 | 6.6 | **станция фильтрации гидролизат с еврокуба в промежут емкость. Фильтр + насос** |  | 27.25d | 2026-03-13 09:00 A | 2026-04-21 11:00 A |  | 100% |  |  |  |  | 8h | 8h |
| 2106 | 6.6.1 | составить схему размещения насос / фильтр |  | 1h | 2026-03-13 09:00 A | 2026-03-13 10:00 A |  | 100% |  |  | start no earlier than 2026-03-13 09:00 | Зорькин В | 1h | 1h |
| 2107 | 6.6.2 | заявка фильтр 5" коллона + фитинги РР |  | 1h | 2026-03-13 10:00 A | 2026-03-13 11:00 A | 2106 | 100% |  |  | start no earlier than 2026-03-12 08:00 | Зорькин В | 1h | 1h |
| 2108 | 6.6.3 | доставка |  | 10d | 2026-03-13 11:00 A | 2026-03-27 11:00 A | 2107 | 100% |  |  | start no earlier than 2026-03-12 08:00 |  |  |  |
| 2109 | 6.6.4 | сборка насосная станция с фильром в 1ц |  | 4h | 2026-04-20 09:00 A | 2026-04-20 13:00 A | 2108 | 100% |  |  | start no earlier than 2026-04-20 09:00 | Тимофеев В | 4h | 4h |
| 2110 | 6.6.5 | оформление протокол испытаний |  | 2h | 2026-04-21 09:00 A | 2026-04-21 11:00 A |  | 100% |  |  | start no earlier than 2026-04-21 09:00 | Зорькин В | 2h | 2h |
| 2111 | 6.7 | **тест форсунки на гидролизат фильтрованный гидролизат** |  | 95.25d | 2026-04-21 11:00 A | 2026-09-01 13:00 | 2105 | 72% | 26.28d | 144.09d |  |  | 19h | 15h |
| 2112 | 6.7.1 | подготовить переходник |  | 2h | 2026-04-21 11:00 A | 2026-04-21 13:00 A |  | 100% |  |  | start no earlier than 2026-03-12 08:00 | Тимофеев В | 2h | 2h |
| 2113 | 6.7.2 | тестирование разных форсунок |  | 2h | 2026-04-21 13:00 A | 2026-04-21 16:00 A | 2112 | 100% |  |  | start no earlier than 2026-03-12 08:00 | Тимофеев В; Зорькин В | 4h | 4h |
| 2114 | 6.7.3 | контроль наличия фитингов для подключения насосной фильтровальной станции к еврокубу |  | 30min | 2026-04-24 08:00 A | 2026-04-24 09:30 A |  | 100% |  |  | start no earlier than 2026-04-24 08:00 | Зорькин В; Тимофеев В | 1h | 1h |
| 2115 | 6.7.4 | тест - наполнить канистру с куба гидролизатом через станцию+фильтр |  | 2h | 2026-04-27 09:00 A | 2026-04-27 11:00 A |  | 100% |  |  | start no earlier than 2026-04-27 09:00 | Зорькин В; Тимофеев В | 3h | 3h |
| 2116 | 6.7.5 | фильтрованный гдз распылить форсунками штатным насосом - забивакет |  | 4h | 2026-05-13 09:00 A | 2026-05-13 13:00 A | 2115 | 100% |  |  | start no earlier than 2026-05-13 09:00 | Зорькин В; Тимофеев В | 5h | 5h |
| 2117 | 6.7.6 | проект распыление моторчиком |  | 4h | 2026-09-01 09:00 | 2026-09-01 13:00 |  |  |  | 144.09d | start no earlier than 2026-09-01 09:00 | Домоводов К | 4h |  |
| 2118 | 6.8 | **станция фильтраци куринный жир с еврокуба в промежут емкость. Насос + фильтр** |  | 36.75d? | 2026-03-05 09:00 A | 2026-04-24 16:00 A |  | 100% |  |  |  |  | 46h | 46h |
| 2119 | 6.8.1 | подбор производительный насос и фильтр для жира. Закачка с еврокуба, перекачка через фильтр |  | 1d? | 2026-03-05 09:00 A | 2026-03-05 18:00 A |  | 100% |  |  | start no earlier than 2026-03-05 09:00 | Домоводов К; Зорькин В | 16h | 16h |
| 2120 | 6.8.2 | заявка материалы |  | 1d? | 2026-03-06 09:00 A | 2026-03-06 18:00 A | 2119 | 100% |  |  | start no earlier than 2026-02-27 08:00 | Зорькин В | 8h | 8h |
| 2121 | 6.8.3 | тест насосной станцией с фильтром |  | 1d? | 2026-04-20 09:00 A | 2026-04-20 18:00 A |  | 100% |  |  | start no earlier than 2026-04-20 09:00 | Зорькин В; Тимофеев В | 16h | 16h |
| 2122 | 6.8.4 | сборка второй станции для жира на БГ11А |  | 6h | 2026-04-24 08:00 A | 2026-04-24 16:00 A |  | 100% |  |  | start no earlier than 2026-04-24 08:00 | Тимофеев В | 6h | 6h |
| 2123 | 6.9 | **мешалка гидролизата** |  | 131.12d | 2026-03-03 09:00 A | 2026-09-02 10:00 A |  | 100% |  |  |  |  | 37.08h | 37.08h |
| 2124 | 6.9.1 | определить диаметр вала / где инструкция? Выяснить |  | 20min | 2026-08-28 09:00 A | 2026-08-28 09:20 A |  | 100% |  |  | start no earlier than 2026-08-28 09:00 | Зорькин В | 0.33h | 0.33h |
| 2125 | 6.9.2 | согласовать договор /оплата счет |  | 1h | 2026-03-03 09:00 A | 2026-03-03 10:00 A |  | 100% |  |  | start no earlier than 2026-03-03 09:00 | Домоводов К | 1h | 1h |
| 2126 | 6.9.3 | доставка | milestone | 0d | 2026-08-10 08:00 A | 2026-08-10 08:00 A |  | 100% |  |  | start no earlier than 2026-08-10 08:00 |  |  |  |
| 2127 | 6.9.4 | планирование технологии работы / какие нужны доработки |  | 15min | 2026-08-12 09:00 A | 2026-08-12 09:15 A |  | 100% |  |  | start no earlier than 2026-08-12 09:00 | Домоводов К | 0.25h | 0.25h |
| 2128 | 6.9.5 | сборка и тест с операторами в 1ц. Можно приварить кронштейны под штабелер |  | 4h | 2026-08-12 09:00 A | 2026-08-12 13:00 A |  | 100% |  |  | start no earlier than 2026-08-12 09:00 | Макаревич А | 4h | 4h |
| 2129 | 6.9.6 | составить чертеж кронштейна |  | 1h | 2026-08-17 09:00 A | 2026-08-17 10:00 A |  | 100% |  |  | start no earlier than 2026-08-17 09:00 | Шуранов Ю | 1h | 1h |
| 2130 | 6.9.7 | заявка на лебедка |  | 15min | 2026-08-17 10:00 A | 2026-08-17 10:15 A | 2129 | 100% |  |  | start no earlier than 2026-08-14 09:00 | Шуранов Ю | 0.25h | 0.25h |
| 2131 | 6.9.8 | конроль доставки |  | 15min | 2026-08-22 10:15 A | 2026-08-24 09:15 A | 2130FS+5d | 100% |  |  | start no earlier than 2026-08-14 09:00 | Шуранов Ю | 0.25h | 0.25h |
| 2132 | 6.9.9 | монтаж лебедка |  | 6h | 2026-08-31 09:00 A | 2026-08-31 16:00 A | 2131FS+1d | 100% |  |  | start no earlier than 2026-08-31 09:00 | Некрасов А; Труфанов А | 12h | 12h |
| 2133 | 6.9.10 | монтаж кронштейн под лебедку |  | 6h | 2026-08-31 16:00 A | 2026-09-01 13:00 A | 2132 | 100% |  |  | start no earlier than 2026-08-31 09:00 | Некрасов А; Труфанов А | 12h | 12h |
| 2134 | 6.9.11 | Установить 3-х фазную вилку для мешалки рядом с частотником |  | 2h | 2026-08-31 08:00 A | 2026-08-31 11:00 A |  | 100% |  |  | start no earlier than 2026-08-31 08:00 | Дедов В | 2h | 2h |
| 2135 | 6.9.12 | Установить розетку для электротали, проложить кабель к розетке возле мухобойки |  | 3h | 2026-08-31 08:00 A | 2026-08-31 12:00 A |  | 100% |  |  | start no earlier than 2026-08-31 08:00 | Дедов В | 3h | 3h |
| 2136 | 6.9.13 | Подключить таль к розетке, проложить гофру |  | 1h | 2026-09-02 09:00 A | 2026-09-02 10:00 A |  | 100% |  |  | start no earlier than 2026-09-02 09:00 | Бундин В | 1h | 1h |

| ID | WBS | Task | Duration | Start | Finish | Predecessors | Complete | Remaining | Total slack | Constraint | Resources | Work | Actual work |
| --- | --- | --- | --- | --- | --- | --- | --- | --- | --- | --- | --- | --- | --- |
| 2137 | 6.10 | **качественное нанесение жира тесты** | 270.5d? | 2026-03-02 09:00 A | 2027-03-03 13:00 A |  | 100% |  |  |  |  | 2102h | 2102h |
| 2138 | 6.10.1 | **испытания форсунка 2х фазная 1ц** | 2.25d | 2026-03-02 09:00 A | 2026-03-04 11:00 A |  | 100% |  |  |  |  | 5.5h | 5.5h |
| 2139 | 6.10.1.1 | подготовить кронштейн крепления форсунки к конвейеру | 2h | 2026-03-02 09:00 A | 2026-03-02 11:00 A |  | 100% |  |  | start no earlier than 2026-03-02 09:00 | Тимофеев В | 2h | 2h |
| 2140 | 6.10.1.2 | подготовить пневморедуктор, временно с НОТИС 3ц | 1h | 2026-03-02 11:00 A | 2026-03-02 12:00 A | 2139 | 100% |  |  | start no earlier than 2026-02-27 08:00 | Тимофеев В | 1h | 1h |
| 2141 | 6.10.1.3 | подготовить фильтр 1шт | 30min | 2026-03-02 12:00 A | 2026-03-02 12:30 A | 2140 | 100% |  |  | start no earlier than 2026-02-27 08:00 | Тимофеев В | 0.5h | 0.5h |
| 2142 | 6.10.1.4 | Тест форсунки на жирах, скооперироваться с технологами | 2h | 2026-03-04 09:00 A | 2026-03-04 11:00 A |  | 100% |  |  | start no earlier than 2026-03-04 09:00 | Тимофеев В | 2h | 2h |
| 2143 | 6.10.2 | **монтаж форсунки в линию** | 262.5d? | 2026-03-11 09:00 A | 2027-03-03 13:00 A |  | 100% |  |  |  | Тимофеев В | 2096.5h | 2096.5h |
| 2144 | 6.10.2.1 | **тест однофазная форсунка** | 30.25d? | 2026-03-11 09:00 A | 2026-04-22 11:00 A |  | 100% |  |  |  |  | 52.5h | 52.5h |
| 2145 | 6.10.2.1.1 | заявка пневморедуктор, фитинги насос - кран - 3х ходовой | 30min | 2026-03-11 09:00 A | 2026-03-11 09:30 A |  | 100% |  |  | start no earlier than 2026-03-11 09:00 | Зорькин В | 0.5h | 0.5h |
| 2146 | 6.10.2.1.2 | проект рама для монтаж фильтров, редуктор, кронштейн форсунки | 1d? | 2026-03-11 09:30 A | 2026-03-12 09:30 A | 2145 | 100% |  |  | start no earlier than 2026-02-27 08:00 | Домоводов К | 8h | 8h |
| 2147 | 6.10.2.1.3 | доставка | 5d | 2026-03-30 09:00 A | 2026-04-03 18:00 A |  | 100% |  |  | start no earlier than 2026-03-30 09:00 | Карабанов | 40h | 40h |
| 2148 | 6.10.2.1.4 | сборка рама, покраска | 2h | 2026-04-22 09:00 A | 2026-04-22 11:00 A | 2146 | 100% |  |  | start no earlier than 2026-04-22 09:00 | Тимофеев В | 2h | 2h |
| 2149 | 6.10.2.1.5 | монтаж 0,3 форсунки | 2h | 2026-04-22 09:00 A | 2026-04-22 11:00 A | 2147 | 100% |  |  | start no earlier than 2026-04-22 09:00 | Тимофеев В | 2h | 2h |
| 2150 | 6.11 | **тест однофазная форсунка** | 0.02d | 2026-03-16 09:00 A | 2026-03-16 09:10 A |  | 100% |  |  |  |  | 0.17h | 0.17h |
| 2151 | 6.11.1 | получить счет | 10min | 2026-03-16 09:00 A | 2026-03-16 09:10 A |  | 100% |  |  | start no earlier than 2026-03-16 09:00 | Домоводов К | 0.17h | 0.17h |
| 2152 | 6.12 | **установить фильтры жир на 1 и 2 линию** | 71.25d | 2026-03-17 09:00 A | 2026-06-24 11:00 |  | 83% | 11.88d | 193.34d |  |  | 14h | 12h |
| 2153 | 6.12.1 | сборка система фильтров 2 фильтра на 2 линии подготовиь + рама | 4h | 2026-03-17 09:00 A | 2026-03-17 13:00 A |  | 100% |  |  | start no earlier than 2026-03-17 09:00 | Тимофеев В | 4h | 4h |
| 2154 | 6.12.2 | монтаж стационарно рама под фильтры | 4h | 2026-04-22 09:00 A | 2026-04-22 13:00 A | 2153 | 100% |  |  | start no earlier than 2026-04-22 09:00 | Тимофеев В | 4h | 4h |
| 2155 | 6.12.3 | калибровка PID регулятора подачи жира | 2h | 2026-05-13 09:00 A | 2026-05-13 11:00 A |  | 100% |  |  | start no earlier than 2026-05-13 09:00 | Зорькин В; Домоводов К | 4h | 4h |
| 2156 | 6.12.4 | подготовка для установить на 1 линию | 2h | 2026-06-24 09:00 | 2026-06-24 11:00 |  |  |  | 193.34d | start no earlier than 2026-06-24 09:00 | Тимофеев В | 2h |  |
| 2157 | 6.13 | **ТЕКО 0,4 или 1,5 поставить пленку с БЕСТРОМА 620мм** | 6.09d | 2026-03-13 09:00 A | 2026-03-23 09:45 A |  | 100% |  |  |  |  | 0.75h | 0.75h |
| 2158 | 6.13.1 | запрос возможности в ТЕКО | 30min | 2026-03-13 09:00 A | 2026-03-13 09:30 A |  | 100% |  |  | start no earlier than 2026-03-13 09:00 | Зорькин В | 0.5h | 0.5h |
| 2159 | 6.13.2 | контроль ответ | 15min | 2026-03-23 09:30 A | 2026-03-23 09:45 A | 2158FS+10d | 100% |  |  | start no earlier than 2026-03-12 08:00 | Зорькин В | 0.25h | 0.25h |
| 2160 | 6.14 | **фильера с вставками для 2ц** | 0.02d | 2025-02-21 09:00 A | 2025-02-21 09:10 A |  | 100% |  |  |  |  | 0.17h | 0.17h |
| 2161 | 6.14.1 | контроль изготовления | 10min | 2025-02-21 09:00 A | 2025-02-21 09:10 A |  | 100% |  |  | start no earlier than 2025-02-21 09:00 | Шуранов Ю | 0.17h | 0.17h |

| ID | WBS | Task | Duration | Start | Finish | Predecessors | Complete | Total slack | Free slack | Constraint | Resources | Work | Actual work |
| --- | --- | --- | --- | --- | --- | --- | --- | --- | --- | --- | --- | --- | --- |
| 2162 | 6.15 | **ручка для экструдера крутиьт мотор на 1 и 2 линию** | 138d? | 2024-08-09 09:00 | 2025-02-18 18:00 |  |  | 543.59d |  |  |  | 9h |  |
| 2163 | 6.15.1 | изготовление | 1d? | 2025-02-18 09:00 | 2025-02-18 18:00 |  |  | 543.59d |  | start no earlier than 2025-02-18 09:00 | Черепанов И | 8h |  |
| 2164 | 6.15.2 | составить чертежи / разместить изготовление | 1h | 2024-08-09 09:00 | 2024-08-09 10:00 |  |  | 681.47d |  | start no earlier than 2024-08-09 09:00 | Шуранов Ю | 1h |  |
| 2165 | 6.16 | **охлаждение шкафов управления печью 1 2 3 линия** | 5d? | 2024-04-18 09:00 | 2024-04-24 18:00 |  |  | 757.59d |  |  |  | 40h |  |
| 2166 | 6.16.1 | выбор и заявка кондиционеры для щитов управления | 1d? | 2024-04-18 09:00 | 2024-04-18 18:00 |  |  | 757.59d | 0d | start no earlier than 2024-04-18 09:00 | Домоводов К | 8h |  |
| 2167 | 6.16.2 | оплата / доставка | 1d? | 2024-04-19 09:00 | 2024-04-19 18:00 | 2166 |  | 757.59d | 0d | start no earlier than 2024-04-04 09:00 | Мультан | 8h |  |
| 2168 | 6.16.3 | монтаж | 3d | 2024-04-22 09:00 | 2024-04-24 18:00 | 2167 |  | 757.59d |  | start no earlier than 2024-04-11 09:00 | Некрасов А | 24h |  |
| 2169 | 6.17 | **подача гидролизат в смеситель насосом** | 25d? | 2024-03-25 09:00 | 2024-04-26 18:00 |  |  | 755.59d |  |  |  | 200h |  |
| 2170 | 6.17.1 | выбор насоса / заявка на насос | 1d? | 2024-03-25 09:00 | 2024-03-25 18:00 |  |  | 755.59d | 0d | start no earlier than 2024-03-25 09:00 | Домоводов К | 8h |  |
| 2171 | 6.17.2 | проректирование автоматика, монтажная часть / заявка | 1d? | 2024-03-26 09:00 | 2024-03-26 18:00 | 2170 |  | 755.59d | 0d | start no earlier than 2024-03-22 09:00 | Домоводов К | 8h |  |
| 2172 | 6.17.3 | поставка оборудования | 20d | 2024-03-27 09:00 | 2024-04-23 18:00 | 2171 |  | 755.59d | 0d | start no earlier than 2024-03-22 09:00 | Мультан | 160h |  |
| 2173 | 6.17.4 | монтаж электрика | 1d? | 2024-04-24 09:00 | 2024-04-24 18:00 | 2172 |  | 755.59d | 0d | start no earlier than 2024-03-22 09:00 | Некрасов А | 8h |  |
| 2174 | 6.17.5 | монтаж трубопровод | 1d? | 2024-04-25 09:00 | 2024-04-25 18:00 | 2173 |  | 755.59d | 0d | start no earlier than 2024-03-22 09:00 | Некрасов А | 8h |  |
| 2175 | 6.17.6 | монтаж автоматика | 1d? | 2024-04-26 09:00 | 2024-04-26 18:00 | 2174 |  | 755.59d |  | start no earlier than 2024-03-22 09:00 | Некрасов А | 8h |  |
| 2176 | 6.18 | **установить форсунки на подачу жир и гидролизат** | 106.38d | 2024-03-26 09:00 A | 2024-08-21 12:00 A |  | 100% |  |  |  |  | 187h | 187h |
| 2177 | 6.18.1 | выбор тип форсунок, заявка | 1d | 2024-03-26 09:00 A | 2024-03-26 18:00 A |  | 100% |  |  | start no earlier than 2024-03-26 09:00 | Домоводов К | 8h | 8h |
| 2178 | 6.18.2 | проректирование / заявка на пневматику и электрику для управления форсунками | 1d | 2024-03-27 09:00 A | 2024-03-27 18:00 A | 2177 | 100% |  |  | start no earlier than 2024-03-22 09:00 | Домоводов К | 8h | 8h |
| 2179 | 6.18.3 | тех решение / чертеж крепления форсунок | 1d | 2024-03-28 09:00 A | 2024-03-28 18:00 A | 2178 | 100% |  |  | start no earlier than 2024-03-22 09:00 | Домоводов К | 8h | 8h |
| 2180 | 6.18.4 | доставка | 20d | 2024-03-29 09:00 A | 2024-04-25 18:00 A | 2177, 2179 | 100% |  |  | start no earlier than 2024-03-22 09:00 | Мультан | 160h | 160h |
| 2181 | 6.18.5 | монтаж механника | 2h | 2024-08-21 09:00 A | 2024-08-21 11:00 A | 2180 | 100% |  |  | start no earlier than 2024-08-21 09:00 | Тимофеев В | 2h | 2h |
| 2182 | 6.18.6 | монтаж пневматика | 1h | 2024-08-21 11:00 A | 2024-08-21 12:00 A | 2181 | 100% |  |  | start no earlier than 2024-03-22 09:00 | Тимофеев В | 1h | 1h |
| 2183 | 6.19 | **модернизация откидной воронка загрузки в барабан дрожировки** | 10.62d | 2024-05-14 09:00 A | 2024-05-28 15:00 A |  | 100% |  |  |  |  | 89h | 89h |
| 2184 | 6.19.1 | составить эскиз / заказ шарниры (при остановке экструдера) | 1h | 2024-05-14 09:00 A | 2024-05-14 10:00 A |  | 100% |  |  | start no earlier than 2024-05-14 09:00 | Шуранов Ю | 1h | 1h |
| 2185 | 6.19.2 | доставка | 10d | 2024-05-14 10:00 A | 2024-05-28 10:00 A | 2184 | 100% |  |  | start no earlier than 2024-03-14 09:00 | Мультан | 80h | 80h |
| 2186 | 6.19.3 | монгтаж | 4h | 2024-05-28 10:00 A | 2024-05-28 15:00 A | 2185 | 100% |  |  | start no earlier than 2024-05-14 09:00 | Макаревич А; Некрасов А | 8h | 8h |
| 2187 | 6.20 | модернизация ножевого узла | 1d? | 2023-12-28 09:00 | 2023-12-28 18:00 |  |  | 841.59d |  | start no earlier than 2023-12-28 09:00 |  |  |  |

| ID | WBS | Task | Duration | Start | Finish | Predecessors | Complete | Remaining | Total slack | Free slack | Constraint | Resources | Work | Actual work |
| --- | --- | --- | --- | --- | --- | --- | --- | --- | --- | --- | --- | --- | --- | --- |
| 2188 | 6.21 | **модернизация дозации воды в прекондиционер** | 0.62d | 2023-12-25 09:00 A | 2023-12-25 15:00 A |  | 100% |  |  |  |  |  | 5h | 5h |
| 2189 | 6.21.1 | установить балансировочный кран 2 линия | 1h | 2023-12-25 09:00 A | 2023-12-25 10:00 A |  | 100% |  |  |  | start no earlier than 2023-12-25 09:00 | Дедов В | 1h | 1h |
| 2190 | 6.21.2 | установить расходомер 2 линия | 2h | 2023-12-25 10:00 A | 2023-12-25 12:00 A | 2189 | 100% |  |  |  | start no earlier than 2023-12-20 09:00 | Дедов В | 2h | 2h |
| 2191 | 6.21.3 | установить расходомер 2 линия | 2h | 2023-12-25 12:00 A | 2023-12-25 15:00 A | 2190 | 100% |  |  |  | start no earlier than 2023-12-20 09:00 | Дедов В | 2h | 2h |
| 2192 | 6.22 | **заменить шланг на высоктемпературный на жир** | 1.62d? | 2024-05-14 09:00 A | 2024-05-15 15:00 A |  | 100% |  |  |  |  |  | 13h | 13h |
| 2193 | 6.22.1 | заявка / подбор | 1h | 2024-05-14 09:00 A | 2024-05-14 10:00 A |  | 100% |  |  |  | start no earlier than 2024-05-14 09:00 | Шуранов Ю | 1h | 1h |
| 2194 | 6.22.2 | доставка | 1d? | 2024-05-14 10:00 A | 2024-05-15 10:00 A | 2193 | 100% |  |  |  | start no earlier than 2023-12-13 08:00 | Малинина М | 8h | 8h |
| 2195 | 6.22.3 | замена | 4h | 2024-05-15 10:00 A | 2024-05-15 15:00 A | 2194 | 100% |  |  |  | start no earlier than 2024-01-15 09:00 | Тимофеев В | 4h | 4h |
| 2196 | 6.23 | **тепловая защита электромоторов мехнизмов** | 108.75d | 2023-12-28 09:00 A | 2024-05-28 16:00 |  | 2% | 106.58d | 733.84d |  |  |  | 100h | 2h |
| 2197 | 6.23.1 | **составить список эл моторов (нужен ток ) без теплового реле - от вибросита - до упаковки вся технология** | 75.25d | 2024-01-30 09:00 A | 2024-05-14 11:00 |  | 17% | 62.71d | 744.34d |  |  |  | 12h | 2h |
| 2198 | 6.23.1.1 | 5 цех | 2h | 2024-01-30 09:00 A | 2024-01-30 11:00 A |  | 100% |  |  |  | start no earlier than 2024-01-30 09:00 | Дедов В | 2h | 2h |
| 2199 | 6.23.1.2 | 1 цех | 4h | 2024-01-30 09:00 | 2024-01-30 13:00 |  |  |  | 819.09d |  | start no earlier than 2024-01-30 09:00 | Дедов В | 4h |  |
| 2200 | 6.23.1.3 | 2 цех | 4h | 2024-01-30 09:00 | 2024-01-30 13:00 |  |  |  | 819.09d |  | start no earlier than 2024-01-30 09:00 | Дедов В | 4h |  |
| 2201 | 6.23.1.4 | заполнитьт таблицу для заявки место-двиг-ток | 2h | 2024-05-14 09:00 | 2024-05-14 11:00 |  |  |  | 744.34d |  | start no earlier than 2024-05-14 09:00 | Шуранов Ю | 2h |  |
| 2202 | 6.23.2 | переписать список мотор-редукторов | 2h | 2023-12-28 09:00 | 2023-12-28 11:00 |  |  |  | 830.59d | 96.75d | start no earlier than 2023-12-28 09:00 | Дедов В | 2h |  |
| 2203 | 6.23.3 | заявка тепл реле | 2h | 2024-05-14 09:00 | 2024-05-14 11:00 | 2202FS+1d |  |  | 733.84d | 0d | start no earlier than 2024-05-14 09:00 | Шуранов Ю | 2h |  |
| 2204 | 6.23.4 | дост авка | 10d | 2024-05-14 11:00 | 2024-05-28 11:00 | 2203 |  |  | 733.84d | 0d | start no earlier than 2023-12-13 08:00 | Малинина М | 80h |  |
| 2205 | 6.23.5 | монтаж конвейер 2ц | 2h | 2024-05-28 11:00 | 2024-05-28 13:00 | 2203, 2204 |  |  | 733.84d | 0d | start no earlier than 2024-01-19 09:00 | Дедов В | 2h |  |
| 2206 | 6.23.6 | монтаж составить список | 2h | 2024-05-28 14:00 | 2024-05-28 16:00 | 2205 |  |  | 733.84d |  | start no earlier than 2023-12-13 08:00 | Домоводов К | 2h |  |
| 2207 | 6.24 | **устройство контроля уровня сырья в большом бункере** | 14.03d | 2023-08-16 09:00 A | 2023-09-05 09:15 |  |  | 14d | 924.56d |  |  |  | 192.25h | 0.25h |
| 2208 | 6.24.1 | заявка на датчик | 15min | 2023-08-16 09:00 A | 2023-08-16 09:15 A |  | 100% |  |  |  | start no earlier than 2023-08-14 09:00 | Лобанов И | 0.25h | 0.25h |
| 2209 | 6.24.2 | доставка | 10d | 2023-08-16 09:15 | 2023-08-30 09:15 | 2208 |  |  | 924.56d | 0d | start no earlier than 2023-03-10 09:00 | Малинина М; Домоводов К | 160h |  |
| 2210 | 6.24.3 | выполнение монажных работ | 4d | 2023-08-30 09:15 | 2023-09-05 09:15 | 2209 |  |  | 924.56d |  | start no earlier than 2023-03-10 09:00 | Подрядчик | 32h |  |
| 2211 | 6.25 | **конвейер с охладителя регулировка ленты - модернизация** | 6.25d | 2024-05-14 09:00 A | 2024-05-22 11:00 A |  | 100% |  |  |  |  |  | 50h | 50h |
| 2212 | 6.25.1 | выбор и заявка натяжные буксы | 2h | 2024-05-14 09:00 A | 2024-05-14 11:00 A |  | 100% |  |  |  | start no earlier than 2024-05-14 09:00 | Шуранов Ю | 2h | 2h |
| 2213 | 6.25.2 | доставка | 5d | 2024-05-14 11:00 A | 2024-05-21 11:00 A | 2212 | 100% |  |  |  | start no earlier than 2023-10-30 09:00 | Малинина М | 40h | 40h |
| 2214 | 6.25.3 | монтаж | 1d | 2024-05-21 11:00 A | 2024-05-22 11:00 A | 2213 | 100% |  |  |  | start no earlier than 2023-12-01 09:00 | Тимофеев В | 8h | 8h |

| ID | WBS | Task | Duration | Start | Finish | Predecessors | Complete | Remaining | Actual start | Total slack | Free slack | Constraint | Resources | Work | Actual work |
| --- | --- | --- | --- | --- | --- | --- | --- | --- | --- | --- | --- | --- | --- | --- | --- |
| 2215 | 6.26 | **прекондиционер забивается отслоением слипшегося сырья** | 204d? | 2023-08-03 09:00 | 2024-05-14 18:00 |  |  |  |  | 0d |  |  |  | 24h |  |
| 2216 | 6.26.1 | **решение тех совет** | 1d? | 2023-08-03 09:00 | 2023-08-03 18:00 |  |  |  |  |  |  |  |  | 24h |  |
| 2217 | 6.26.1.1 | вар1 - доп лопатки на выходе | 1d? | 2024-05-14 09:00 | 2024-05-14 18:00 |  |  |  |  | 743.59d |  | start no earlier than 2024-05-14 09:00 | Шуранов Ю | 8h |  |
| 2218 | 6.26.1.2 | вар 2 - вертикальные ворошители | 1d? | 2024-05-14 09:00 | 2024-05-14 18:00 |  |  |  |  | 743.59d |  | start no earlier than 2024-05-14 09:00 | Шуранов Ю | 8h |  |
| 2219 | 6.26.1.3 | вар 3 - подача пара | 1d? | 2024-05-14 09:00 | 2024-05-14 18:00 |  |  |  |  | 743.59d |  | start no earlier than 2024-05-14 09:00 | Шуранов Ю | 8h |  |
| 2220 | 6.27 | **фильтры на баки жиров перед насосами** | 439.12d | 2023-07-20 09:00 A | 2025-03-26 10:00 A |  | 100% |  |  |  |  |  |  | 4.75h | 4.75h |
| 2221 | 6.27.1 | утвердить тех решение | 1h | 2023-07-20 09:00 A | 2023-07-20 10:00 A |  | 100% |  |  |  |  | start no earlier than 2023-07-20 09:00 | Лобанов И; Домоводов К; Сапелин С | 3h | 3h |
| 2222 | 6.27.2 | купить сетку в корпусе | 30min | 2024-05-14 09:00 A | 2024-05-14 09:30 A |  | 100% |  |  |  |  | start no earlier than 2024-05-14 09:00 | Шуранов Ю | 0.5h | 0.5h |
| 2223 | 6.27.3 | купить 1/2 муфта для установки фитингов | 15min | 2025-03-26 09:00 A | 2025-03-26 09:15 A |  | 100% |  |  |  |  | start no earlier than 2025-03-26 08:00 | Шуранов Ю | 0.25h | 0.25h |
| 2224 | 6.27.4 | проверка фитингов | 1h | 2025-03-26 09:00 A | 2025-03-26 10:00 A |  | 100% |  |  |  |  | start no earlier than 2025-03-26 08:00 | Зорькин В | 1h | 1h |
| 2225 | 6.28 | **защита редутора шнеков при отказе маслянного насоса** | 20.12d? | 2023-08-02 09:00 | 2023-08-30 10:00 |  | 33% | 13.52d? | 2023-07-28 09:00 |  |  |  |  | 126.5h | 41.5h |
| 2226 | 6.28.1 | поиск фитинг для замера реле давления | 30min | 2023-07-28 09:00 A | 2023-07-28 09:30 A |  | 100% |  |  |  |  | start no earlier than 2023-07-28 09:00 | Тимофеев В | 0.5h | 0.5h |
| 2227 | 6.28.2 | заявка на фитинг | 1h | 2023-07-31 09:00 A | 2023-07-31 10:00 A | 2226 | 100% |  |  |  |  | start no earlier than 2023-07-31 09:00 | Лобанов И | 1h | 1h |
| 2228 | 6.28.3 | доставка | 5d | 2023-07-31 10:00 A | 2023-08-07 10:00 A | 2227 | 100% |  |  |  |  | start no earlier than 2023-07-31 09:00 | Малинина М | 40h | 40h |
| 2229 | 6.28.4 | заявка реле потока 1/2 или 3/4 | 1h | 2026-03-19 09:00 | 2026-03-19 10:00 |  |  |  |  | 251.97d | 0d | start no earlier than 2026-03-19 09:00 | Шуранов Ю | 1h |  |
| 2230 | 6.28.5 | доставка | 10d | 2026-03-19 10:00 | 2026-04-02 10:00 | 2229 |  |  |  | 251.97d | 1.88d | start no earlier than 2026-03-12 08:00 | Карабанов | 80h |  |
| 2231 | 6.28.6 | монтаж гидравлика | 2h | 2026-04-06 09:00 | 2026-04-06 11:00 | 2230 |  |  |  | 250.09d | 0d | start no earlier than 2026-04-06 09:00 | Тимофеев В | 2h |  |
| 2232 | 6.28.7 | монтаж электрика схема защиты + привязка к частотному приводу | 2h | 2026-04-06 11:00 | 2026-04-06 13:00 | 2231 |  |  |  | 250.09d |  | start no earlier than 2023-07-20 09:00 | Тимофеев В | 2h |  |
| 2233 | 6.29 | **подача сырья в упаковщки 1 цех** | 199.5d? | 2023-06-07 09:00 A | 2024-03-12 13:00 |  | 12% | 175.32d? |  | 789.09d |  |  |  | 37h | 8h |
| 2234 | 6.29.1 | испытание пневмотранспорта напорная магистраль | 4h | 2024-03-12 09:00 A | 2024-03-12 13:00 A |  | 100% |  |  |  |  | start no earlier than 2024-03-12 09:00 | Бобренок В; Некрасов А | 8h | 8h |
| 2235 | 6.29.2 | технологическая схема подачи продукта в упаковщики | 1d? | 2023-06-19 09:00 | 2023-06-19 18:00 |  |  |  |  | 979.59d |  | start no earlier than 2023-06-19 09:00 | Технолог | 8h |  |
| 2236 | 6.29.3 | поиск / запрорс цен на диверторы | 2h | 2023-06-07 09:00 | 2023-06-07 11:00 |  |  |  |  | 985.97d | 0d | start no earlier than 2023-06-07 09:00 | Домоводов К | 2h |  |
| 2237 | 6.29.4 | поиск / запрос цены на эжекторный приемник | 2h | 2023-06-07 11:00 | 2023-06-07 13:00 | 2236 |  |  |  | 985.97d | 0d | start no earlier than 2023-05-10 08:00 | Домоводов К | 2h |  |
| 2238 | 6.29.5 | расчет трассы | 2d | 2023-06-07 14:00 | 2023-06-09 13:00 | 2237 |  |  |  | 985.97d | 0d | start no earlier than 2023-05-10 08:00 | Домоводов К | 16h |  |
| 2239 | 6.29.6 | подбор приобритение вентилятора | 1h | 2023-06-09 14:00 | 2023-06-09 15:00 | 2238 |  |  |  | 985.97d |  | start no earlier than 2023-04-27 09:00 | Домоводов К | 1h |  |

| ID | WBS | Task | Type | Duration | Start | Finish | Predecessors | Complete | Remaining | Total slack | Free slack | Constraint | Resources | Work | Actual work |
| --- | --- | --- | --- | --- | --- | --- | --- | --- | --- | --- | --- | --- | --- | --- | --- |
| 2240 | 6.30 | **защита тэн печи при отключении вентиляторов** |  | 160.25d? | 2023-06-09 09:00 | 2024-01-19 11:00 |  |  |  | 826.34d |  |  |  | 66h |  |
| 2241 | 6.30.1 | устиановить защиту на пускателе 380 1 линия |  | 2h | 2024-01-19 09:00 | 2024-01-19 11:00 |  |  |  | 826.34d |  | start no earlier than 2024-01-19 09:00 | Тимофеев В | 2h |  |
| 2242 | 6.30.2 | составить схему защиты |  | 1d? | 2023-06-09 09:00 | 2023-06-09 18:00 |  |  |  | 978.59d | 0d | start no earlier than 2023-06-09 09:00 | Домоводов К | 8h |  |
| 2243 | 6.30.3 | заявка |  | 1d? | 2023-06-12 09:00 | 2023-06-12 18:00 | 2242 |  |  | 978.59d | 0d | start no earlier than 2023-04-25 09:00 | Домоводов К | 8h |  |
| 2244 | 6.30.4 | оплата поставка |  | 5d | 2023-06-13 09:00 | 2023-06-19 18:00 | 2243 |  |  | 978.59d | 5d | start no earlier than 2023-05-02 09:00 | Малинина М | 40h |  |
| 2245 | 6.30.5 | сборка и монтаж |  | 1d? | 2023-06-27 09:00 | 2023-06-27 18:00 | 2244 |  |  | 973.59d |  | start no earlier than 2023-06-27 09:00 | Бобренок В | 8h |  |
| 2246 | 6.31 | Настройка даты на пробнике, нужно приподнять на 3-5 мм (ждем решение технологов, информация поменялась, читать письмо от 01.09.2026) |  | 3h | 2026-09-03 09:00 A | 2026-09-03 12:00 A |  | 100% |  |  |  | start no earlier than 2026-09-03 09:00 | Тимофеев В | 3h | 3h |
| 2247 | 7 | **техника** |  | 638.03d? | 2024-05-14 09:00 A | 2026-10-13 09:15 |  | 98% | 14.91d? | 106.56d |  |  |  | 52.5h | 51.25h |
| 2248 | 7.1 | не заводится TRF, сломана шпилька колесо. Контроль приезда приемка работ |  | 1h | 2026-08-17 09:00 A | 2026-08-17 10:00 A |  | 100% |  |  |  | start no earlier than 2026-08-17 09:00 | Шуранов Ю | 1h | 1h |
| 2249 | 7.2 | **капремонт погрузчика коматсу короткий** |  | 51.03d | 2026-08-13 09:00 A | 2026-10-13 09:15 |  | 91% | 4.64d | 106.56d |  |  |  | 2.75h | 2.5h |
| 2250 | 7.2.1 | заявка получить цену в тракресурс |  | 15min | 2026-08-13 09:00 A | 2026-08-13 09:15 A |  | 100% |  |  |  | start no earlier than 2026-08-13 09:00 | Домоводов К | 0.25h | 0.25h |
| 2251 | 7.2.2 | заявка получить цену в форклифт |  | 15min | 2026-08-13 09:15 A | 2026-08-13 09:30 A | 2250 | 100% |  |  |  | start no earlier than 2026-08-13 09:00 | Домоводов К | 0.25h | 0.25h |
| 2252 | 7.2.3 | получить КП 2 | milestone | 0d | 2026-08-17 09:00 A | 2026-08-17 09:00 A |  | 100% |  |  |  | start no earlier than 2026-08-17 09:00 | Домоводов К |  |  |
| 2253 | 7.2.4 | решение о дате | milestone | 0d | 2026-09-07 09:00 A | 2026-09-07 09:00 A | 2251FS+1d | 100% |  |  |  | start no earlier than 2026-09-07 09:00 | Домоводов К |  |  |
| 2254 | 7.2.5 | орг отправить погрузчик в ремонт / составить акт |  | 2h | 2026-09-01 09:00 A | 2026-09-01 11:00 A | 2251, 2253FS+1d | 100% |  |  |  | start no earlier than 2026-08-26 09:00 | Шуранов Ю | 2h | 2h |
| 2255 | 7.2.6 | контроль сроков ремонта |  | 15min | 2026-10-13 09:00 | 2026-10-13 09:15 | 2254FS+20d |  |  | 106.56d |  | start no earlier than 2026-10-13 09:00 | Зорькин В | 0.25h |  |
| 2256 | 7.3 | заказать по комплекту воздушных фильтров для погрузчиков |  | 1h | 2026-08-18 09:00 A | 2026-08-18 10:00 A |  | 100% |  |  |  | start no earlier than 2026-08-18 09:00 | Шуранов Ю | 1h | 1h |
| 2257 | 7.4 | провкрить моточасы для проведения ТО |  | 1h | 2026-08-18 09:00 A | 2026-08-18 10:00 A |  | 100% |  |  |  | start no earlier than 2026-08-18 09:00 | Шуранов Ю | 1h | 1h |
| 2258 | 7.5 | не заводиться trf погрузчик, посмотреть подачу топлива |  | 1h | 2026-05-25 08:00 A | 2026-05-25 10:00 A |  | 100% |  |  |  | start no earlier than 2026-05-25 08:00 | Тимофеев В; Шуранов Ю | 2h | 2h |
| 2259 | 7.6 | ТО карбюратора ТРФ организовать |  | 1h | 2026-05-27 09:00 A | 2026-05-27 10:00 A |  | 100% |  |  |  | start no earlier than 2026-05-27 09:00 | Шуранов Ю | 1h | 1h |
| 2260 | 7.7 | ренгулировка ремня погрузчик желтый №209490 контроль |  | 1h | 2026-05-14 09:00 A | 2026-05-14 10:00 A |  | 100% |  |  |  | start no earlier than 2026-05-14 09:00 | Шуранов Ю | 1h | 1h |
| 2261 | 7.8 | ремонт генераторов -найти фирму |  | 1d? | 2026-05-07 09:00 A | 2026-05-07 18:00 A |  | 100% |  |  |  | start no earlier than 2026-05-07 09:00 | Шуранов Ю | 8h | 8h |
| 2262 | 7.9 | греется мотор сменный погрузчик (вероятно помпа). Орг визит |  | 15min | 2026-04-27 09:00 A | 2026-04-27 09:15 A |  | 100% |  |  |  | start no earlier than 2026-04-27 08:00 | Шуранов Ю | 0.25h | 0.25h |
| 2263 | 7.10 | установить вентиляторы на погрузчики |  | 2h | 2026-04-27 08:00 A | 2026-04-27 11:00 A |  | 100% |  |  |  | start no earlier than 2026-04-27 08:00 | Тимофеев В | 2h | 2h |
| 2264 | 7.11 | заменить шланги гидравлики погрузчик ТРФ |  | 1d? | 2026-04-21 09:00 A | 2026-04-21 18:00 A |  | 100% |  |  |  | start no earlier than 2026-04-21 09:00 |  |  |  |
| 2265 | 7.12 | пригласить тракресурс |  | 1h | 2026-04-21 09:00 A | 2026-04-21 10:00 A |  | 100% |  |  |  | start no earlier than 2026-04-21 09:00 | Шуранов Ю | 1h | 1h |
| 2266 | 7.13 | проварить ковш трактора в слесарке |  | 4h | 2026-03-24 08:00 A | 2026-03-24 13:00 A |  | 100% |  |  |  | start no earlier than 2026-03-24 08:00 | Бобренок В | 4h | 4h |
| 2267 | 7.14 | контроль доставки / приемка погрузчи коматсу |  | 1h | 2026-03-13 09:00 A | 2026-03-13 10:00 A |  | 100% |  |  |  | start no earlier than 2026-03-13 09:00 | Шуранов Ю | 1h | 1h |
| 2268 | 7.15 | ремонт штабелер 5 цех ролик и опрное колесо. Контроль |  | 30min | 2026-03-13 09:00 A | 2026-03-13 09:30 A |  | 100% |  |  |  | start no earlier than 2026-03-13 09:00 | Шуранов Ю | 0.5h | 0.5h |
| 2269 | 7.16 | ремонт ковш трактор |  | 6h | 2026-03-03 09:00 A | 2026-03-03 16:00 A |  | 100% |  |  |  | start no earlier than 2026-03-03 08:00 | Некрасов А; Труфанов А | 12h | 12h |

| ID | WBS | Task | Type | Duration | Start | Finish | Predecessors | Complete | Remaining | Total slack | Constraint | Resources | Work | Actual work |
| --- | --- | --- | --- | --- | --- | --- | --- | --- | --- | --- | --- | --- | --- | --- |
| 2270 | 7.17 | **ремонт цепи желтый вилочный + ручник** |  | 0.16d | 2025-07-28 09:00 A | 2025-07-28 10:15 A |  | 100% |  |  |  |  | 1.25h | 1.25h |
| 2271 | 7.17.1 | контроль даты визита |  | 15min | 2025-07-28 09:00 A | 2025-07-28 09:15 A |  | 100% |  |  | start no earlier than 2025-07-28 09:00 | Шуранов Ю | 0.25h | 0.25h |
| 2272 | 7.17.2 | ремонт контроль \принять работы |  | 1h | 2025-07-28 09:15 A | 2025-07-28 10:15 A | 2271 | 100% |  |  | start no earlier than 2025-07-23 09:00 | Шуранов Ю | 1h | 1h |
| 2273 | 7.18 | реморнт педаль газ на 3d принтере |  | 1h | 2025-07-23 09:00 A | 2025-07-23 10:00 A |  | 100% |  |  | start no earlier than 2025-07-23 09:00 | Шуранов Ю | 1h | 1h |
| 2274 | 7.19 | реморнт педаль газ на 3d принтере |  | 1h | 2026-09-01 09:00 | 2026-09-01 10:00 |  |  |  | 144.47d | start no earlier than 2026-09-01 09:00 | Домоводов К | 1h |  |
| 2275 | 7.20 | ТО штабелеры кайтымовская орг |  | 1h | 2025-07-23 09:00 A | 2025-07-23 10:00 A |  | 100% |  |  | start no earlier than 2025-07-23 09:00 | Шуранов Ю | 1h | 1h |
| 2276 | 7.21 | заявка доводчик двери желт коматсу |  | 15min | 2024-05-14 09:00 A | 2024-05-14 09:15 A |  | 100% |  |  | start no earlier than 2024-05-14 09:00 | Шуранов Ю | 0.25h | 0.25h |
| 2277 | 7.22 | **ошибка 02а22 штабелер PS16N 414** |  | 0.12d | 2024-05-14 09:00 A | 2024-05-14 10:00 A |  | 100% |  |  |  |  | 1h | 1h |
| 2278 | 7.22.1 | составить рекламацию / вызов специалистов |  | 1h | 2024-05-14 09:00 A | 2024-05-14 10:00 A |  | 100% |  |  | start no earlier than 2024-05-14 09:00 | Шуранов Ю | 1h | 1h |
| 2279 | 7.23 | **неисправна кнопка стоп штабелер 5 цех** |  | 0.19d | 2024-05-14 09:00 A | 2024-05-14 10:30 A |  | 100% |  |  |  |  | 1.5h | 1.5h |
| 2280 | 7.23.1 | орг работы по замене калеса штабелера |  | 1h | 2024-05-14 09:00 A | 2024-05-14 10:00 A |  | 100% |  |  | start no earlier than 2024-05-14 09:00 | Шуранов Ю | 1h | 1h |
| 2281 | 7.23.2 | орг забор штабелера на ремонт гидроциондра. Договор с сервисной компанией о дате, обменть штабелер с 2 цеха |  | 30min | 2024-05-14 10:00 A | 2024-05-14 10:30 A | 2280 | 100% |  |  | start no earlier than 2024-05-14 09:00 | Шуранов Ю | 0.5h | 0.5h |
| 2282 | 7.24 | **ремонт стеклоочиститель вилочного** |  | 0.5d | 2024-05-14 09:00 A | 2024-05-14 13:00 A |  | 100% |  |  |  |  | 5h | 5h |
| 2283 | 7.24.1 | осмотр механизма чтто сломалось |  | 4h | 2024-05-14 09:00 A | 2024-05-14 13:00 A |  | 100% |  |  | start no earlier than 2024-05-14 09:00 | Шуранов Ю | 4h | 4h |
| 2284 | 7.24.2 | заявка на покупку стеклоочист |  | 1h | 2024-05-14 09:00 A | 2024-05-14 10:00 A |  | 100% |  |  | start no earlier than 2024-05-14 09:00 | Шуранов Ю | 1h | 1h |
| 2285 | 7.25 | купить ремень на генератор |  | 2h | 2024-05-14 09:00 A | 2024-05-14 11:00 A |  | 100% |  |  | start no earlier than 2024-05-14 09:00 | Шуранов Ю | 2h | 2h |
| 2286 | 8 | **Лаборатория** |  | 0.06d | 2026-04-20 09:00 A | 2026-04-20 09:30 A |  | 100% |  |  |  |  | 1h | 1h |
| 2287 | 8.1 | Отнести старый бульбулятор в архив |  | 30min | 2026-04-20 09:00 A | 2026-04-20 09:30 A |  | 100% |  |  | start no earlier than 2026-04-20 09:00 | Тимофеев В | 0.5h | 0.5h |
| 2288 | 8.2 | Отнести короб от нового бульбулятора тоже в архив |  | 30min | 2026-04-20 09:00 A | 2026-04-20 09:30 A |  | 100% |  |  | start no earlier than 2026-04-20 09:00 | Тимофеев В | 0.5h | 0.5h |
| 2289 | 9 | **слесарное помещение** |  | 89.38d? | 2026-06-11 09:00 A | 2026-10-04 12:00 |  | 76% | 21.12d? | 113.22d |  |  | 28.5h | 21h |
| 2290 | 9.1 | Разбор полок на большом стеллаже, наведенеие порядка | manual | 3h | 2026-10-03 09:00 | 2026-10-03 12:00 |  |  |  |  | start no earlier than 2026-10-03 09:00 | Бундин В | 3h |  |
| 2291 | 9.2 | Ремонт электродов парогенератора |  | 3h | 2026-10-04 09:00 | 2026-10-04 12:00 |  |  |  | 113.22d | start no earlier than 2026-10-04 09:00 | Бобренок В | 3h |  |
| 2292 | 9.3 | **уборка и сортировка. Приготовить, дневные проверят и продолжат** |  | 3.25d | 2026-09-22 09:00 A | 2026-09-25 11:00 A |  | 100% |  |  |  |  | 9h | 9h |
| 2293 | 9.3.1 | освободить стеллаж для оперативного хранения с ФИО |  | 1h | 2026-09-22 16:00 A | 2026-09-22 17:00 A | 2296 | 100% |  |  | start no earlier than 2026-09-22 09:00 | Макаревич А | 1h | 1h |
| 2294 | 9.3.2 | куча №1 - не годное на выброс |  | 2h | 2026-09-22 09:00 A | 2026-09-22 11:00 A |  | 100% |  |  | start no earlier than 2026-09-22 09:00 | Макаревич А | 2h | 2h |
| 2295 | 9.3.3 | куча №2 - годное, но хранить нужно на дальних складах |  | 2h | 2026-09-22 11:00 A | 2026-09-22 13:00 A | 2294 | 100% |  |  | start no earlier than 2026-09-21 09:00 | Макаревич А | 2h | 2h |
| 2296 | 9.3.4 | куча №3 - не понятно где хранить. |  | 2h | 2026-09-22 14:00 A | 2026-09-22 16:00 A | 2295 | 100% |  |  | start no earlier than 2026-09-18 08:00 | Макаревич А | 2h | 2h |
| 2297 | 9.3.5 | сортировка и перемещение мусор / металлолм/ дальние стеллажи |  | 2h | 2026-09-25 09:00 A | 2026-09-25 11:00 A |  | 100% |  |  | start no earlier than 2026-09-25 09:00 | Бундин В | 2h | 2h |
| 2298 | 9.4 | отвезти паллет возле слесарки в синий | manual | 1h | 2026-08-30 09:00 A | 2026-08-30 10:00 A |  | 100% |  |  | start no earlier than 2026-08-30 09:00 | Бундин В | 1h | 1h |
| 2299 | 9.5 | заварить хомут от деко 5 ц. |  | 2h | 2026-07-02 09:00 A | 2026-07-02 11:00 A |  | 100% |  |  | start no earlier than 2026-07-02 09:00 | Тимофеев В | 2h | 2h |
| 2300 | 9.6 | доставить временно наш компрессор на 3 склад для обдува погрузчиков | manual | 1h | 2026-06-29 09:00 A | 2026-06-29 10:00 A |  | 100% |  |  | start no earlier than 2026-06-29 09:00 | Тимофеев В | 1h | 1h |
| 2301 | 9.7 | ремонт 2-х ручных запайщиков- запчасти на складе (нагревательные блоки, тены) | manual | 2h | 2026-06-27 09:00 A | 2026-06-27 11:00 A |  | 100% |  |  | start no earlier than 2026-06-27 09:00 | Дедов В | 2h | 2h |
| 2302 | 9.8 | оставляем порядок после своей смены в слесарке |  | 0.5h | 2026-06-12 09:00 | 2026-06-12 09:30 |  |  |  | 201.53d | start no earlier than 2026-06-12 09:00 | Дедов В; Бобренок В; Бундин В | 1.5h |  |
| 2303 | 9.9 | Проверка напольных весов, почему не работают, возможно отошел контакт |  | 2h | 2026-07-24 09:00 A | 2026-07-24 11:00 A |  | 100% |  |  | start no earlier than 2026-07-24 09:00 | Бундин В | 2h | 2h |
| 2304 | 9.10 | уборка |  | 0.25d? | 2026-06-11 09:00 A | 2026-06-11 11:00 A |  | 100% |  |  |  | Труфанов А | 2h | 2h |
| 2305 | 9.11 | проверить весы настольные (показывают вес больше, если получится калибровать) |  | 2h | 2026-06-11 09:00 A | 2026-06-11 11:00 A |  | 100% |  |  | start no earlier than 2026-06-11 09:00 | Дедов В | 2h | 2h |

| ID | WBS | Task | Duration | Start | Finish | Predecessors | Complete | Remaining | Total slack | Free slack | Constraint | Resources | Work | Actual work |
| --- | --- | --- | --- | --- | --- | --- | --- | --- | --- | --- | --- | --- | --- | --- |
| 2306 | 10 | **ЗИП ремонт** | 643.25d? | 2024-05-09 09:00 A | 2026-10-15 11:00 |  | 53% | 302.22d? | 104.34d |  |  |  | 841.42h | 397.33h |
| 2307 | 10.1 | Восстановление платы от пробника, зачистка контактов, где погоревшие пины соединение через внешний клемник | 3h | 2026-10-02 09:00 | 2026-10-02 12:00 |  |  |  | 114.22d |  | start no earlier than 2026-10-02 08:00 | Дедов В | 3h |  |
| 2308 | 10.2 | **ремонт блоков управления датерами** | 0.38d | 2026-10-02 09:00 | 2026-10-02 12:00 |  |  |  | 114.22d |  |  |  | 3h |  |
| 2309 | 10.2.1 | составить схему подключения - мотор / датчик / тен / -- первые компоненты на плате блока (основной упор на эту задачу) Продолжаем делать | 3h | 2026-10-02 09:00 | 2026-10-02 12:00 |  |  |  | 114.22d |  | start no earlier than 2026-10-02 09:00 | Дедов В | 3h |  |
| 2311 | 10.3 | **Собрать редуктор питателя, который разобранный на верстаке** | 8.34d | 2026-09-28 09:00 | 2026-10-07 11:45 |  |  |  | 110.25d |  |  |  | 2.75h |  |
| 2312 | 10.3.1 | отпраитвь на перемонтку | 15min | 2026-09-28 09:00 | 2026-09-28 09:15 |  |  |  | 110.25d | 0d | start no earlier than 2026-09-28 09:00 | Зорькин В | 0.25h |  |
| 2313 | 10.3.2 | контроль | 15min | 2026-10-04 09:15 | 2026-10-04 09:30 | 2312FS+5d |  |  | 110.25d | 0d | start no earlier than 2026-09-25 08:00 | Зорькин В | 0.25h |  |
| 2314 | 10.3.3 | орг забрать | 15min | 2026-10-06 09:30 | 2026-10-06 09:45 | 2313FS+2d |  |  | 110.25d | 0d | start no earlier than 2026-09-25 08:00 | Зорькин В | 0.25h |  |
| 2315 | 10.3.4 | сборка | 2h | 2026-10-07 09:45 | 2026-10-07 11:45 | 2314FS+1d |  |  | 110.25d |  | start no earlier than 2026-09-25 08:00 | Бундин В | 2h |  |
| 2316 | 10.4 | **Дефектовка двигателя от питателя прекондиционера/ прозвонить (возможно подготовить для сдачи на перемотку)** | 8.25d | 2026-09-04 09:00 A | 2026-09-13 11:00 |  | 50% | 4.12d | 133.34d |  |  |  | 4h | 2h |
| 2317 | 10.4.1 | разбрка тест | 1h | 2026-09-04 09:00 A | 2026-09-04 10:00 A |  | 100% |  |  |  | start no earlier than 2026-09-04 09:00 | Бобренок В | 1h | 1h |
| 2318 | 10.4.2 | тест 2 с редуктором | 1h | 2026-09-08 09:00 A | 2026-09-08 10:00 A |  | 100% |  |  |  | start no earlier than 2026-09-08 08:00 | Тимофеев В | 1h | 1h |
| 2319 | 10.4.3 | разборка ревизия | 2h | 2026-09-13 09:00 | 2026-09-13 11:00 |  |  |  | 133.34d |  | start no earlier than 2026-09-13 09:00 | Макаревич А | 2h |  |
| 2320 | 10.5 | **ремонт редутор печи №?** | 26.31d | 2026-09-05 09:00 A | 2026-10-02 11:30 |  | 52% | 12.53d | 114.28d |  |  |  | 5.25h | 2.75h |
| 2321 | 10.5.1 | дефектовка редуктора печи 2 цех, лежит в слесарке | 2h | 2026-09-05 09:00 A | 2026-09-05 11:00 A |  | 100% |  |  |  | start no earlier than 2026-09-05 09:00 | Макаревич А | 2h | 2h |
| 2322 | 10.5.2 | возможно ли установить тавотницу на подшипник червяка? | 15min | 2026-09-10 09:00 A | 2026-09-10 09:15 A |  | 100% |  |  |  | start no earlier than 2026-09-10 09:00 | Тимофеев В | 0.25h | 0.25h |
| 2323 | 10.5.3 | заказ шестерни червя в ЗИП - отправить курьера | 15min | 2026-09-09 09:00 A | 2026-09-09 09:15 A | 2321 | 100% |  |  |  | start no earlier than 2026-09-09 09:00 | Зорькин В | 0.25h | 0.25h |
| 2324 | 10.5.4 | контроль изг шетесиерен | 15min | 2026-09-19 09:15 A | 2026-09-19 09:30 A | 2323FS+10d | 100% |  |  |  | start no earlier than 2026-09-08 08:00 | Зорькин В | 0.25h | 0.25h |
| 2325 | 10.5.5 | заказ шестерни червя в ЗИП - отправить курьера | 15min | 2026-09-21 09:00 | 2026-09-21 09:15 | 2321 |  |  | 114.28d | 0d | start no earlier than 2026-09-21 09:00 | Зорькин В | 0.25h |  |
| 2326 | 10.5.6 | контроль изг шетесиерен | 15min | 2026-10-01 09:15 | 2026-10-01 09:30 | 2325FS+10d |  |  | 114.28d | 0d | start no earlier than 2026-09-08 08:00 | Зорькин В | 0.25h |  |
| 2327 | 10.5.7 | сборка редутор венец | 2h | 2026-10-02 09:30 | 2026-10-02 11:30 | 2324FS+1d, 2326FS+1d |  |  | 114.28d |  | start no earlier than 2026-09-20 09:00 | Макаревич А | 2h |  |
| 2328 | 10.6 | ремонт оборотные сетки-поддоны от печи от 2ц | 2h | 2026-09-13 09:00 | 2026-09-13 11:00 |  |  |  | 133.34d |  | start no earlier than 2026-09-13 09:00 | Макаревич А | 2h |  |
| 2329 | 10.7 | подготовить электродную группу для 2 цеха | 3h | 2026-08-25 09:00 A | 2026-08-25 12:00 A |  | 100% |  |  |  | start no earlier than 2026-08-25 08:00 | Бундин В | 3h | 3h |
| 2330 | 10.8 | пепенос трубы нерж с 3ц на синий склад | 1h | 2026-08-24 09:00 | 2026-08-24 10:00 |  |  |  | 150.47d |  | start no earlier than 2026-08-24 09:00 | Некрасов А; Тимофеев В | 2h |  |
| 2331 | 10.9 | ремонт электрод парогенертора для 2ц | 4h | 2026-08-18 09:00 A | 2026-08-18 13:00 A |  | 100% |  |  |  | start no earlier than 2026-08-18 09:00 | Бобренок В | 4h | 4h |
| 2332 | 10.10 | перевоз батареи свинец от погрузчика на синий склад | 30min | 2026-08-12 09:00 A | 2026-08-12 09:30 A |  | 100% |  |  |  | start no earlier than 2026-08-12 09:00 | Макаревич А | 0.5h | 0.5h |

| ID | WBS | Task | Type | Duration | Start | Finish | Predecessors | Complete | Actual start | Actual finish | Constraint | Resources | Work | Actual work |
| --- | --- | --- | --- | --- | --- | --- | --- | --- | --- | --- | --- | --- | --- | --- |
| 2333 | 10.11 | **заточка ножей** |  | 6.03d | 2026-08-13 09:00 A | 2026-08-21 09:15 A |  | 100% |  |  |  |  | 0.5h | 0.5h |
| 2334 | 10.11.1 | разместить ЛТ70 курьеру, отметиь журнал |  | 15min | 2026-08-13 09:00 A | 2026-08-13 09:15 A |  | 100% |  |  | start no earlier than 2026-08-13 09:00 | Зорькин В | 0.25h | 0.25h |
| 2335 | 10.11.2 | контроль, орг забрать |  | 15min | 2026-08-21 09:00 A | 2026-08-21 09:15 A |  | 100% |  |  | start no earlier than 2026-08-21 09:00 | Шуранов Ю | 0.25h | 0.25h |
| 2336 | 10.12 | **ножевой узел для 1ц** |  | 0.03d | 2026-08-13 09:00 A | 2026-08-13 09:15 A |  | 100% |  |  |  |  | 0.25h | 0.25h |
| 2337 | 10.12.1 | контроль поставки |  | 15min | 2026-08-13 09:00 A | 2026-08-13 09:15 A |  | 100% |  |  | start no earlier than 2026-08-13 09:00 | Домоводов К | 0.25h | 0.25h |
| 2338 | 10.13 | подготовить электроды для парогенератора цех 1 |  | 4h | 2026-08-05 08:00 A | 2026-08-05 13:00 A |  | 100% |  |  | start no earlier than 2026-08-05 08:00 | Макаревич А | 4h | 4h |
| 2339 | 10.14 | восстановить голову насоса гидрализата (в слесарке) подписать | manual | 2h | 2026-08-01 09:00 A | 2026-08-01 11:00 A |  | 100% |  |  | start no earlier than 2026-08-01 09:00 | Бундин В | 2h | 2h |
| 2340 | 10.15 | **восстановить сетку спечи (она в слесарке)** |  | 1d? | 2026-08-14 09:00 | 2026-08-14 18:00 |  | 100% | 2026-08-03 09:00 | 2026-08-03 18:00 |  |  | 8h | 8h |
| 2341 | 10.15.1 | заказать сверла по нерж. М5 и М6 |  | 1d? | 2026-08-03 09:00 A | 2026-08-03 18:00 A |  | 100% |  |  | start no earlier than 2026-08-03 08:00 | Шуранов Ю | 8h | 8h |
| 2342 | 10.16 | подготовить антиэлектроды по аналогии с нашими (все на складе) | manual | 5h | 2026-08-01 09:00 A | 2026-08-01 15:00 A |  | 100% |  |  | start no earlier than 2026-08-01 09:00 | Бундин В | 5h | 5h |
| 2343 | 10.17 | подготовить электродную группу для парогенератора |  | 3h | 2026-06-12 09:00 A | 2026-06-12 12:00 A |  | 100% |  |  | start no earlier than 2026-06-12 09:00 | Бундин В | 3h | 3h |
| 2344 | 10.18 | собрать 2 стула для ИТР |  | 2h | 2026-06-07 09:00 A | 2026-06-08 11:00 A |  | 100% |  |  | start no earlier than 2026-06-07 09:00 | Бобренок В | 2h | 2h |
| 2345 | 10.19 | **покрасить швейлеры возле слесарки(грунтовка, затем серый цвет)** |  | 0.25d | 2026-06-12 09:00 A | 2026-06-12 11:00 A |  | 100% |  |  |  | Бобренок В | 4h | 4h |
| 2346 | 10.19.1 | болгаркой убрать сварочные сопли и покрасить |  | 2h | 2026-06-12 09:00 A | 2026-06-12 11:00 A |  | 100% |  |  | start no earlier than 2026-06-12 09:00 | Бундин В | 2h | 2h |
| 2347 | 10.20 | подготовить фильтры для кондиционеров, замена фильтр ткани. Находятся в слесарке | manual | 2h | 2026-06-14 09:00 A | 2026-06-14 11:00 A |  | 100% |  |  | start no earlier than 2026-06-14 09:00 | Бундин В | 2h | 2h |
| 2348 | 10.21 | **заявка на фильеры от 02.06 1ц и 2ц** |  | 7.19d | 2026-06-02 09:00 A | 2026-06-11 10:30 A |  | 100% |  |  |  |  | 4.5h | 4.5h |
| 2349 | 10.21.1 | подготовить чертежи по ТЗ |  | 2h | 2026-06-02 09:00 A | 2026-06-02 11:00 A |  | 100% |  |  | start no earlier than 2026-06-02 09:00 | Домоводов К | 2h | 2h |
| 2350 | 10.21.2 | **партия 1** |  | 6.19d | 2026-06-03 09:00 A | 2026-06-11 10:30 A |  | 100% |  |  |  |  | 1.5h | 1.5h |
| 2351 | 10.21.2.1 | разместить токарю заварка фильер + шлифвка |  | 30min | 2026-06-03 09:00 A | 2026-06-03 09:30 A |  | 100% |  |  | start no earlier than 2026-06-03 08:00 | Шуранов Ю | 0.5h | 0.5h |
| 2352 | 10.21.2.2 | забрать заваренные / разместить на изготовление дюз |  | 30min | 2026-06-07 09:30 A | 2026-06-08 09:30 A | 2351FS+4d | 100% |  |  | start no earlier than 2026-06-03 08:00 | Шуранов Ю | 0.5h | 0.5h |
| 2353 | 10.21.2.3 | забрать готовые |  | 30min | 2026-06-11 10:00 A | 2026-06-11 10:30 A | 2352FS+4d | 100% |  |  | start no earlier than 2026-06-03 08:00 | Шуранов Ю | 0.5h | 0.5h |
| 2354 | 10.21.3 | **партия 2** |  | 3.12d | 2026-06-04 09:00 A | 2026-06-09 10:00 A |  | 100% |  |  |  |  | 1h | 1h |
| 2355 | 10.21.3.1 | разместить готовые балванки на прожиг отверстий |  | 30min | 2026-06-04 09:00 A | 2026-06-04 09:30 A |  | 100% |  |  | start no earlier than 2026-06-04 09:00 | Шуранов Ю | 0.5h | 0.5h |
| 2356 | 10.21.3.2 | забрать готовые |  | 30min | 2026-06-09 09:30 A | 2026-06-09 10:00 A | 2355FS+5d | 100% |  |  | start no earlier than 2026-06-03 08:00 | Шуранов Ю | 0.5h | 0.5h |

| ID | WBS | Task | Duration | Start | Finish | Predecessors | Complete | Total slack | Free slack | Constraint | Resources | Work | Actual work |
| --- | --- | --- | --- | --- | --- | --- | --- | --- | --- | --- | --- | --- | --- |
| 2357 | 10.22 | **зип тенов на печь 70 и 85 + шестерни питатель 70** | 30.06d | 2026-05-28 09:00 A | 2026-07-09 09:30 A |  | 100% |  |  |  |  | 0.75h | 0.75h |
| 2358 | 10.22.1 | запрос Настя, получить счет | 15min | 2026-05-28 09:00 A | 2026-05-28 09:15 A |  | 100% |  |  | start no earlier than 2026-05-28 09:00 | Домоводов К | 0.25h | 0.25h |
| 2359 | 10.22.2 | оплата | 15min | 2026-06-04 09:00 A | 2026-06-04 09:15 A | 2358FS+2d | 100% |  |  | start no earlier than 2026-06-04 09:00 | Домоводов К | 0.25h | 0.25h |
| 2360 | 10.22.3 | контроль поставки | 15min | 2026-07-09 09:15 A | 2026-07-09 09:30 A | 2359FS+30d | 100% |  |  | start no earlier than 2026-05-27 08:00 | Зорькин В | 0.25h | 0.25h |
| 2361 | 10.23 | подготовка к инвентаризации | 3h | 2026-05-26 09:00 A | 2026-05-26 12:00 A |  | 100% |  |  | start no earlier than 2026-05-26 09:00 | Бундин В | 3h | 3h |
| 2362 | 10.24 | посчитать и записать какие и какое количество автоматов и контакторов есть в слесарке | 1h | 2026-05-23 09:00 A | 2026-05-25 10:00 A |  | 100% |  |  | start no earlier than 2026-05-23 09:00 | Макаревич А | 1h | 1h |
| 2363 | 10.25 | передать весы (малые в 1 цех, большие в 5 цех) со слесарки | 1h | 2026-05-22 09:00 A | 2026-05-22 10:00 A |  | 100% |  |  | start no earlier than 2026-05-22 09:00 | Макаревич А | 1h | 1h |
| 2364 | 10.26 | проверить работает или нет двигатель с накопительного стола цех 1- Валентин покажет. | 1h | 2026-05-19 08:00 A | 2026-05-19 10:00 A |  | 100% |  |  | start no earlier than 2026-05-19 08:00 | Дедов В | 1h | 1h |
| 2365 | 10.27 | наточить ножи для ц.2 | 1h | 2026-05-19 09:00 A | 2026-05-19 10:00 A |  | 100% |  |  | start no earlier than 2026-05-19 09:00 | Тимофеев В | 1h | 1h |
| 2366 | 10.28 | подготовка к инвентаризации (посчитать какие и метраж кабеля в слесарке и желтом нашей половине) | 2h | 2026-05-24 09:00 A | 2026-05-25 11:00 A |  | 100% |  |  | start no earlier than 2026-05-24 09:00 | Дедов В | 2h | 2h |
| 2367 | 10.29 | подготовить рабочее место в слесарке для работы на кровле Олега | 1h | 2026-05-15 09:00 A | 2026-05-15 10:00 A |  | 100% |  |  | start no earlier than 2026-05-15 09:00 | Некрасов А; Труфанов А; Тимофеев В; Макаревич А | 4h | 4h |
| 2368 | 10.30 | **ремонт инсекютер с 1ц в слесарке. Повесить в цехе, зафиксировать в журнал мастера** | 0.12d | 2026-05-19 09:00 A | 2026-05-19 10:00 A |  | 100% |  |  |  |  | 1h | 1h |
| 2369 | 10.30.1 | взять светильник "антимуха" у Луговских и повесить на входе в корридор между раздевалками | 1h | 2026-05-19 09:00 A | 2026-05-19 10:00 A |  | 100% |  |  | start no earlier than 2026-05-19 09:00 | Дедов В | 1h | 1h |
| 2370 | 10.31 | **орг ремонт мотор с вращаюбщего барабана 1ц** | 0.16d | 2026-09-01 09:00 | 2026-09-01 10:15 |  |  | 144.44d |  |  |  | 1.25h |  |
| 2371 | 10.31.1 | подписать шильдик. На веревочке картонка / пластик | 15min | 2026-09-01 09:00 | 2026-09-01 09:15 |  |  | 144.44d | 0d | start no earlier than 2026-09-01 09:00 | Шуранов Ю | 0.25h |  |
| 2372 | 10.31.2 | орг ремонт | 1h | 2026-09-01 09:15 | 2026-09-01 10:15 | 2371 |  | 144.44d |  | start no earlier than 2026-09-01 09:00 | Шуранов Ю | 1h |  |
| 2373 | 10.32 | получить на складе резинки на двери прекондиционеров и выдать цех 1 и 2 | 1h | 2026-05-11 09:00 A | 2026-05-11 10:00 A |  | 100% |  |  | start no earlier than 2026-05-11 09:00 |  |  |  |
| 2374 | 10.33 | подготовить электродную группу для 1 цеха | 3h | 2026-05-11 09:00 A | 2026-05-11 12:00 A |  | 100% |  |  | start no earlier than 2026-05-11 09:00 | Бундин В | 3h | 3h |
| 2375 | 10.34 | на емкость нерж сделать сгон и поплавок | 4h | 2026-05-09 09:00 A | 2026-05-11 13:00 A |  | 100% |  |  | start no earlier than 2026-05-09 09:00 | Макаревич А | 4h | 4h |
| 2376 | 10.35 | отвезти термоодеяло с слесарки в синий склад | 1h | 2026-05-11 09:00 A | 2026-05-11 10:00 A |  | 100% |  |  | start no earlier than 2026-05-11 09:00 | Бундин В | 1h | 1h |
| 2377 | 10.36 | приехали дроселя для светильников, восстановить не рабочие | 4h | 2026-05-12 09:00 A | 2026-05-12 13:00 A |  | 100% |  |  | start no earlier than 2026-05-12 09:00 | Бундин В | 4h | 4h |
| 2378 | 10.37 | **орг ремонт мотор с конв №2 1 линия 1ц** | 0.25d | 2026-09-01 09:00 | 2026-09-01 11:00 |  |  | 144.34d |  |  |  | 2h |  |
| 2379 | 10.37.1 | подписать шильдик | 60min | 2026-09-01 09:00 | 2026-09-01 10:00 |  |  | 144.34d | 0d | start no earlier than 2026-09-01 09:00 | Шуранов Ю | 1h |  |
| 2380 | 10.37.2 | орг ремонт | 1h | 2026-09-01 10:00 | 2026-09-01 11:00 | 2379 |  | 144.34d |  | start no earlier than 2026-05-14 09:00 | Шуранов Ю | 1h |  |
| 2381 | 10.38 | сборка редуктор с шлюз питателя (фото в чате 14.05) | 3h | 2026-08-31 09:00 A | 2026-08-31 12:00 A |  | 100% |  |  | start no earlier than 2026-09-02 09:00 | Тимофеев В | 3h | 3h |

| ID | WBS | Task | Type | Duration | Start | Finish | Predecessors | Complete | Constraint | Resources | Work | Actual work |
| --- | --- | --- | --- | --- | --- | --- | --- | --- | --- | --- | --- | --- |
| 2382 | 10.39 | **собрать мотор-редуктор прекондиционера в слесарке (сальники на складе в лотках снизу подписаны)** |  | 0.12d | 2026-06-15 09:00 A | 2026-06-15 10:00 A |  | 100% |  | Бундин В | 3h | 3h |
| 2383 | 10.39.1 | транспортировка в синий склад |  | 1h | 2026-06-15 09:00 A | 2026-06-15 10:00 A |  | 100% | start no earlier than 2026-06-15 09:00 | Тимофеев В; Некрасов А | 2h | 2h |
| 2384 | 10.40 | **вскрыть листогиб** |  | 4.5d | 2026-05-09 09:00 A | 2026-05-15 13:00 A |  | 100% |  |  | 11.17h | 11.17h |
| 2385 | 10.40.1 | проверить работу листогиба (попробовать загнуть нерж) |  | 1h | 2026-05-09 09:00 A | 2026-05-11 10:00 A |  | 100% | start no earlier than 2026-05-09 09:00 | Макаревич А | 1h | 1h |
| 2386 | 10.40.2 | как удлинить ручки, предложение |  | 5min | 2026-05-13 09:00 A | 2026-05-13 09:05 A |  | 100% | start no earlier than 2026-05-13 09:00 | Труфанов А | 0.08h | 0.08h |
| 2387 | 10.40.3 | куда крепить стационарно. Синий склад /контейнер. Предложения. |  | 5min | 2026-05-13 09:00 A | 2026-05-13 09:05 A |  | 100% | start no earlier than 2026-05-13 09:00 | Труфанов А | 0.08h | 0.08h |
| 2388 | 10.40.4 | изготовить раму для крепления к полу |  | 4h | 2026-05-15 09:00 A | 2026-05-15 13:00 A |  | 100% | start no earlier than 2026-05-15 09:00 | Тимофеев В; Макаревич А | 8h | 8h |
| 2389 | 10.40.5 | усилить ручки |  | 1h | 2026-05-15 09:00 A | 2026-05-15 10:00 A |  | 100% | start no earlier than 2026-05-15 09:00 | Тимофеев В; Макаревич А | 2h | 2h |
| 2390 | 10.41 | вывезти питатель на синий склад |  | 1h | 2026-05-05 09:00 A | 2026-05-05 10:00 A |  | 100% | start no earlier than 2026-05-05 09:00 | Тимофеев В | 1h | 1h |
| 2391 | 10.42 | транспортировка гильз и шнеков на синий склад (уложить по приходам из китая) |  | 3h | 2026-05-05 09:00 A | 2026-05-05 12:00 A |  | 100% | start no earlier than 2026-05-05 09:00 | Тимофеев В; Бобренок В; Шуранов Ю | 9h | 9h |
| 2392 | 10.43 | найти на синем складе комплектующие для инвентаризации с Алексеем |  | 3h | 2026-05-05 09:00 A | 2026-05-05 12:00 A |  | 100% | start no earlier than 2026-05-05 08:00 | Шуранов Ю | 3h | 3h |
| 2393 | 10.44 | посчитать все валы от транспортеров, занести в таблицу учета |  | 4h | 2026-05-11 09:00 A | 2026-05-11 13:00 A |  | 100% | start no earlier than 2026-05-09 09:00 | Шуранов Ю | 4h | 4h |
| 2394 | 10.45 | посчитать сколько валов для транспортеров Теко в слесарке |  | 1h | 2026-04-30 09:00 A | 2026-04-30 10:00 A |  | 100% | start no earlier than 2026-04-30 09:00 | Шуранов Ю | 1h | 1h |
| 2395 | 10.46 | уборка остатки металл в контейнер |  | 1h | 2026-04-29 09:00 A | 2026-04-29 10:00 A |  | 100% | start no earlier than 2026-04-29 09:00 | Некрасов А; Тимофеев В; Труфанов А; Бундин В | 4h | 4h |
| 2396 | 10.47 | **ЗИП на ПГ антиэлектрод** |  | 33d? | 2026-05-13 09:00 A | 2026-06-26 18:00 A |  | 100% |  |  | 9.5h | 9.5h |
| 2397 | 10.47.1 | поиск в продаже труба нерж ф205 (проверить у Тимофеева диамтр) |  | 1h | 2026-05-13 09:00 A | 2026-05-13 10:00 A |  | 100% | start no earlier than 2026-05-13 09:00 | Зорькин В | 1h | 1h |
| 2398 | 10.47.2 | заявка |  | 15min | 2026-05-13 10:00 A | 2026-05-13 10:15 A | 2397 | 100% | start no earlier than 2026-04-24 08:00 | Зорькин В | 0.25h | 0.25h |
| 2399 | 10.47.3 | контроль доставки. Карабанов размещает у свои |  | 15min | 2026-05-19 09:00 A | 2026-05-19 09:15 A | 2398FS+5d | 100% | start no earlier than 2026-05-19 09:00 | Зорькин В | 0.25h | 0.25h |
| 2400 | 10.47.4 | монтаж |  | 1d? | 2026-06-26 09:00 A | 2026-06-26 18:00 A | 2399FS+2d | 100% | start no earlier than 2026-06-26 09:00 | Тимофеев В | 8h | 8h |
| 2401 | 10.48 | **ремонт шуруповерт макита** |  | 40d | 2026-04-19 09:00 A | 2026-06-14 11:00 A |  | 100% |  |  | 5h | 5h |
| 2402 | 10.48.1 | разобрать шуруповерт макита, выяснить с редуктором проблема или нет | manual | 2h | 2026-04-19 09:00 A | 2026-04-19 11:00 A |  | 100% | start no earlier than 2026-04-19 09:00 | Дедов В | 2h | 2h |
| 2403 | 10.48.2 | отправить фидео запрос о ремонте в сервисн центр |  | 1h | 2026-04-20 09:00 A | 2026-04-20 10:00 A |  | 100% | start no earlier than 2026-04-20 08:00 | Зорькин В | 1h | 1h |
| 2404 | 10.48.3 | конртроль / решение о списании | milestone | 0d | 2026-04-27 09:00 A | 2026-04-27 09:00 A |  | 100% | start no earlier than 2026-04-27 09:00 | Зорькин В |  |  |
| 2405 | 10.48.4 | попробовать собрать шуроповерт, находится в слесарке | manual | 2h | 2026-06-14 09:00 A | 2026-06-14 11:00 A |  | 100% | start no earlier than 2026-06-14 09:00 | Бундин В | 2h | 2h |
| 2406 | 10.49 | взять винты пота м6х25 и перекрутить на сетке для печи | manual | 1h | 2026-04-20 09:00 A | 2026-04-20 10:00 A |  | 100% | start no earlier than 2026-04-20 09:00 | Тимофеев В | 1h | 1h |

| ID | WBS | Task | Type | Duration | Start | Finish | Predecessors | Complete | Remaining | Total slack | Constraint | Resources | Work | Actual work |
| --- | --- | --- | --- | --- | --- | --- | --- | --- | --- | --- | --- | --- | --- | --- |
| 2407 | 10.50 | **шестерня питателя LT85** |  | 7.01d | 2026-04-08 09:00 A | 2026-04-17 09:05 |  | 94% | 0.44d | 241.58d |  |  | 1.33h | 1.25h |
| 2408 | 10.50.1 | **1. заказ с китая** |  | 7.01d | 2026-04-08 09:00 A | 2026-04-17 09:05 |  | 75% | 1.75d | 241.58d |  |  | 0.33h | 0.25h |
| 2409 | 10.50.1.1 | запрос / контроль |  | 15min | 2026-04-08 09:00 A | 2026-04-08 09:15 A |  | 100% |  |  | start no earlier than 2026-04-08 09:00 | Шуранов Ю | 0.25h | 0.25h |
| 2410 | 10.50.1.2 | контроль |  | 5min | 2026-04-17 09:00 | 2026-04-17 09:05 |  |  |  | 241.58d | start no earlier than 2026-04-17 09:00 | Шуранов Ю | 0.08h |  |
| 2411 | 10.50.2 | **2. изготовление по образцу** |  | 5.03d | 2026-04-08 09:00 A | 2026-04-15 09:15 A |  | 100% |  |  |  |  | 1h | 1h |
| 2412 | 10.50.2.1 | выяснить возможносить изготвления |  | 30min | 2026-04-08 09:00 A | 2026-04-08 09:30 A |  | 100% |  |  | start no earlier than 2026-04-08 09:00 | Зорькин В | 0.5h | 0.5h |
| 2413 | 10.50.2.2 | отправить курьера |  | 15min | 2026-04-08 09:30 A | 2026-04-08 09:45 A | 2412 | 100% |  |  | start no earlier than 2026-04-06 09:00 | Зорькин В | 0.25h | 0.25h |
| 2414 | 10.50.2.3 | контроль |  | 15min | 2026-04-15 09:00 A | 2026-04-15 09:15 A | 2413 | 100% |  |  | start no earlier than 2026-04-15 09:00 | Зорькин В | 0.25h | 0.25h |
| 2415 | 10.51 | проверить наличие лент в ЗИП перед утилизаций б/у |  | 2h | 2026-03-31 09:00 A | 2026-03-31 11:00 A |  | 100% |  |  | start no earlier than 2026-03-31 08:00 | Зорькин В | 2h | 2h |
| 2416 | 10.52 | соединители лент траснспортеры линий - проверить остаток |  | 30min | 2026-08-31 09:00 | 2026-08-31 09:30 |  |  |  | 145.53d | start no earlier than 2026-08-31 09:00 | Зорькин В | 0.5h |  |
| 2417 | 10.53 | **освободить место на син склад / перенос в новый контейнер** |  | 1.5d | 2026-03-30 08:00 A | 2026-03-31 13:00 A |  | 100% |  |  |  |  | 38h | 38h |
| 2418 | 10.53.1 | перенести метал, норию в контейнер с синего склада |  | 4h | 2026-03-30 09:00 A | 2026-03-30 13:00 A |  | 100% |  |  | start no earlier than 2026-03-30 09:00 | Бобренок В; Некрасов А; Тимофеев В | 12h | 12h |
| 2419 | 10.53.2 | сборка стеллаж хранения металла |  | 4h | 2026-03-30 08:00 A | 2026-03-30 13:00 A |  | 100% |  |  | start no earlier than 2026-03-30 08:00 | Некрасов А; Труфанов А; Тимофеев В | 10h | 10h |
| 2420 | 10.53.3 | монтаж стеллаж хранения металла |  | 4h | 2026-03-31 09:00 A | 2026-03-31 13:00 A |  | 100% |  |  | start no earlier than 2026-03-31 09:00 | Некрасов А; Труфанов А | 8h | 8h |
| 2421 | 10.53.4 | загрузка мусор в трактор дерево, отход |  | 4h | 2026-03-31 09:00 A | 2026-03-31 13:00 A |  | 100% |  |  | start no earlier than 2026-03-31 08:00 | Некрасов А; Труфанов А | 8h | 8h |
| 2422 | 10.54 | заточка ножей 2ц орг |  | 30min | 2026-03-25 09:00 A | 2026-03-25 09:30 A |  | 100% |  |  | start no earlier than 2026-03-25 08:00 | Зорькин В | 0.5h | 0.5h |
| 2423 | 10.55 | ремонт водонагреватель орг |  | 1h | 2026-03-23 09:00 A | 2026-03-23 10:00 A |  | 100% |  |  | start no earlier than 2026-03-23 09:00 | Шуранов Ю | 1h | 1h |
| 2424 | 10.56 | ремонт парогенератор орг |  | 1h | 2026-03-23 09:00 A | 2026-03-23 10:00 A |  | 100% |  |  | start no earlier than 2026-03-23 09:00 | Шуранов Ю | 1h | 1h |
| 2425 | 10.57 | **стеллаж для организации хранения металла** |  | 11.5d | 2026-03-23 09:00 A | 2026-04-07 13:00 A |  | 100% |  |  |  |  | 84h | 84h |
| 2426 | 10.57.1 | составить эскиз / расчет заявка металл |  | 4h | 2026-03-23 09:00 A | 2026-03-23 13:00 A |  | 100% |  |  | start no earlier than 2026-03-23 09:00 | Зорькин В | 4h | 4h |
| 2427 | 10.57.2 | доставка |  | 10d | 2026-03-23 14:00 A | 2026-04-06 13:00 A | 2426 | 100% |  |  | start no earlier than 2026-03-20 08:00 | Карабанов | 80h | 80h |
| 2428 | 10.57.3 | сборка |  | 2d | 2026-04-03 14:00 A | 2026-04-07 13:00 A | 2427 | 100% |  |  | start no earlier than 2026-03-20 08:00 |  |  |  |
| 2429 | 10.58 | установить крыльчатку мотор-редуктор смесителя / перенос в контейнер |  | 30min | 2026-08-31 09:00 A | 2026-08-31 09:30 A |  | 100% |  |  | start no earlier than 2026-09-02 09:00 | Тимофеев В | 0.5h | 0.5h |
| 2430 | 10.59 | **изготовить ножевой узел для 2ц** |  | 10.02d | 2026-03-17 09:00 A | 2026-03-31 09:10 A |  | 100% |  |  |  |  | 80.33h | 80.33h |
| 2431 | 10.59.1 | получить счет |  | 10min | 2026-03-17 09:00 A | 2026-03-17 09:10 A |  | 100% |  |  | start no earlier than 2026-03-17 08:00 | Домоводов К | 0.17h | 0.17h |
| 2432 | 10.59.2 | изготовление |  | 10d | 2026-03-17 09:10 A | 2026-03-31 09:10 A | 2431 | 100% |  |  | start no earlier than 2026-03-17 08:00 | Фрезер ЧПУ | 80h | 80h |
| 2433 | 10.59.3 | контроль |  | 5min | 2026-03-28 09:10 A | 2026-03-30 09:05 A | 2432FS+1d | 100% |  |  | start no earlier than 2026-03-17 08:00 | Зорькин В | 0.08h | 0.08h |
| 2434 | 10.59.4 | орг доставка |  | 5min | 2026-03-28 09:15 A | 2026-03-30 09:05 A | 2433 | 100% |  |  | start no earlier than 2026-03-17 08:00 | Зорькин В | 0.08h | 0.08h |
| 2435 | 10.60 | сгоревшие двигатели унести в контенер в коробку |  | 1h | 2026-03-15 09:00 A | 2026-03-16 10:00 A |  | 100% |  |  | start no earlier than 2026-03-15 09:00 | Бобренок В | 1h | 1h |
| 2436 | 10.61 | ремонт головы насоса нгш57 гидродлизат 2шт |  | 2h | 2026-03-16 09:00 A | 2026-03-16 11:00 A |  | 100% |  |  | start no earlier than 2026-03-16 09:00 | Труфанов А | 2h | 2h |
| 2437 | 10.62 | изготовить ножевой узел для 2ц | milestone | 0d | 2026-03-16 09:00 A | 2026-03-16 09:00 A |  | 100% |  |  | start no earlier than 2026-03-16 09:00 | Домоводов К |  |  |
| 2438 | 10.63 | по всем цехам обход, проверка обратный клпан бойлеры / настройка температуры . Составить список под замену |  | 2h | 2026-09-01 09:00 | 2026-09-01 11:00 |  |  |  | 144.34d | start no earlier than 2026-09-01 09:00 | Дедов В | 2h |  |

| ID | WBS | Task | Type | Duration | Start | Finish | Predecessors | Complete | Remaining | Total slack | Free slack | Constraint | Resources | Work | Actual work |
| --- | --- | --- | --- | --- | --- | --- | --- | --- | --- | --- | --- | --- | --- | --- | --- |
| 2439 | 10.64 | **ремонт датчик расхода пара с линия 3** |  | 33.04d | 2026-09-01 09:00 A | 2026-10-06 09:20 |  |  | 33.04d | 111.55d |  |  |  | 0.92h |  |
| 2440 | 10.64.1 | заявка взип |  | 15min | 2026-09-01 09:00 | 2026-09-01 09:15 |  |  |  | 119.48d | 0d | start no earlier than 2026-09-01 09:00 | Шуранов Ю | 0.25h |  |
| 2441 | 10.64.2 | орг отправить в ремонт |  | 20min | 2026-09-01 09:15 | 2026-09-01 09:35 | 2440 |  |  | 119.48d | 7.93d | start no earlier than 2026-03-12 08:00 | Шуранов Ю | 0.33h |  |
| 2442 | 10.64.3 | контроль | milestone | 0d | 2026-09-22 09:35 A | 2026-09-22 09:35 A | 2441FS+20d | 100% |  |  |  | start no earlier than 2026-04-17 09:00 | Зорькин В |  |  |
| 2443 | 10.64.4 | контроль | milestone | 0d | 2026-09-30 09:00 | 2026-09-30 09:00 | 2441FS+20d |  |  | 111.55d | 0d | start no earlier than 2026-09-30 09:00 | Зорькин В |  |  |
| 2444 | 10.64.5 | орг забрать сремонта |  | 20min | 2026-10-06 09:00 | 2026-10-06 09:20 | 2442FS+5d, 2443FS+5d |  |  | 111.55d |  | start no earlier than 2026-03-12 08:00 | Шуранов Ю | 0.33h |  |
| 2445 | 10.65 | реставрация вал с охладителя. Полполнить расход ЗИП |  | 1h | 2026-09-01 09:00 | 2026-09-01 10:00 |  |  |  | 144.47d |  | start no earlier than 2026-09-01 09:00 | Шуранов Ю | 1h |  |
| 2446 | 10.66 | ремонт датчик наличия сырья / собрать из 2х один |  | 3h | 2026-09-01 09:00 | 2026-09-01 12:00 |  |  |  | 144.22d |  | start no earlier than 2026-09-01 09:00 | Дедов В | 3h |  |
| 2447 | 10.67 | **ремонт бойлер с 5ц гардероб** |  | 7.04d | 2026-03-13 09:00 A | 2026-03-24 09:20 |  | 57% | 3.02d | 259.55d |  |  |  | 0.58h | 0.33h |
| 2448 | 10.67.1 | орг отправить в ремонт |  | 15min | 2026-03-13 09:00 A | 2026-03-13 09:15 A |  | 100% |  |  |  | start no earlier than 2026-03-13 09:00 | Шуранов Ю | 0.25h | 0.25h |
| 2449 | 10.67.2 | контроль доставка / оплата |  | 5min | 2026-03-23 09:00 A | 2026-03-23 09:05 A | 2448FS+5d | 100% |  |  |  | start no earlier than 2026-03-23 09:00 | Шуранов Ю | 0.08h | 0.08h |
| 2450 | 10.67.3 | орг доставка |  | 15min | 2026-03-24 09:05 | 2026-03-24 09:20 | 2449FS+1d |  |  | 259.55d |  | start no earlier than 2026-03-12 08:00 | Шуранов Ю | 0.25h |  |
| 2451 | 10.68 | диагностика двигателей и редукторов в слесарке. Подробности Шуранов по тлф |  | 2h | 2026-09-01 09:00 A | 2026-09-01 11:00 A |  | 100% |  |  |  | start no earlier than 2026-09-02 09:00 | Бундин В | 2h | 2h |
| 2452 | 10.69 | которые в коробке с них снять крыльчатки |  | 2h | 2026-09-01 09:00 A | 2026-09-01 11:00 A | 2451 | 100% |  |  |  | start no earlier than 2026-03-06 08:00 | Бундин В | 2h | 2h |
| 2453 | 10.70 | ножевой узел 2ц заменаить подшипники. У мастера |  | 1h | 2026-03-04 08:00 A | 2026-03-04 10:00 A |  | 100% |  |  |  | start no earlier than 2026-03-04 08:00 | Дедов В | 1h | 1h |
| 2454 | 10.71 | **ремонт электродов ПГ в ЗИП** |  | 2.75d | 2026-03-08 09:00 A | 2026-03-11 16:00 A |  | 100% |  |  |  |  |  | 12h | 12h |
| 2455 | 10.71.1 | 2шт - шт |  | 6h | 2026-03-08 09:00 A | 2026-03-09 16:00 A |  | 100% |  |  |  | start no earlier than 2026-03-08 09:00 | Макаревич А | 6h | 6h |
| 2456 | 10.71.2 | 1шт = 2ц |  | 6h | 2026-03-11 09:00 A | 2026-03-11 16:00 A |  | 100% |  |  |  | start no earlier than 2026-03-11 09:00 | Макаревич А | 6h | 6h |
| 2457 | 10.72 | промер изношенных шнеков, подготовить таблицу и инструкцию для делегировать |  | 1h | 2026-03-03 09:00 A | 2026-03-03 10:00 A |  | 100% |  |  |  | start no earlier than 2026-03-03 09:00 | Зорькин В | 1h | 1h |
| 2458 | 10.73 | заказ нутромер утерянные детали |  | 30min | 2026-03-06 09:00 A | 2026-03-06 09:30 A |  | 100% |  |  |  | start no earlier than 2026-03-06 09:00 | Зорькин В | 0.5h | 0.5h |
| 2459 | 10.74 | **стопорнное кольцо для валов шнеков** |  | 0.09d | 2026-03-02 09:00 A | 2026-03-02 09:45 A |  | 100% |  |  |  |  |  | 0.75h | 0.75h |
| 2460 | 10.74.1 | заявка снабжение |  | 15min | 2026-03-02 09:00 A | 2026-03-02 09:15 A |  | 100% |  |  |  | start no earlier than 2026-03-02 09:00 | Зорькин В | 0.25h | 0.25h |
| 2461 | 10.74.2 | заявка токарь |  | 15min | 2026-03-02 09:15 A | 2026-03-02 09:30 A | 2460 | 100% |  |  |  | start no earlier than 2026-02-27 08:00 | Зорькин В | 0.25h | 0.25h |
| 2462 | 10.74.3 | заявка кита |  | 15min | 2026-03-02 09:30 A | 2026-03-02 09:45 A | 2461 | 100% |  |  |  | start no earlier than 2026-02-27 08:00 | Зорькин В | 0.25h | 0.25h |

| ID | WBS | Task | Duration | Start | Finish | Predecessors | Complete | Remaining | Total slack | Free slack | Constraint | Resources | Work | Actual work |
| --- | --- | --- | --- | --- | --- | --- | --- | --- | --- | --- | --- | --- | --- | --- |
| 2463 | 10.75 | **быстрая замена шнеков - кондуктор для хранения и перемещения подготвленного ствола** | 3.25d | 2026-10-12 09:00 | 2026-10-15 11:00 |  |  |  | 104.34d |  |  |  | 20h |  |
| 2464 | 10.75.1 | проект кондуктора и траверсы перемещения ствола штабелером | 2h | 2026-10-12 09:00 | 2026-10-12 11:00 |  |  |  | 104.34d | 0d | start no earlier than 2026-10-12 09:00 | Тимофеев В; Бундин В | 4h |  |
| 2465 | 10.75.2 | сборка | 2d | 2026-10-13 11:00 | 2026-10-15 11:00 | 2464FS+1d |  |  | 104.34d |  | start no earlier than 2026-04-16 09:00 | Бобренок В | 16h |  |
| 2466 | 10.76 | **заявка шкив на вал прекондиционер + разрезная вставка + спец шпильки** | 0.12d | 2025-08-04 09:00 | 2025-08-04 10:00 |  |  |  | 425.47d |  |  |  | 1h |  |
| 2467 | 10.76.1 | подбор шкив / заявка | 1h | 2025-08-04 09:00 | 2025-08-04 10:00 |  |  |  | 425.47d |  | start no earlier than 2025-08-04 09:00 | Зорькин В | 1h |  |
| 2468 | 10.77 | **ремонт вал прекондиционер** | 12.02d | 2025-07-31 09:00 A | 2025-08-18 09:10 |  | 86% | 1.72d | 415.57d |  |  |  | 1.17h | 1h |
| 2469 | 10.77.1 | подготовить к отправке очистить | 1h | 2025-07-31 09:00 A | 2025-07-31 10:00 A |  | 100% |  |  |  | start no earlier than 2025-07-31 09:00 | Пинчук А | 1h | 1h |
| 2470 | 10.77.2 | орг курьера / отправить | 5min | 2025-08-04 09:00 | 2025-08-04 09:05 | 2469 |  |  | 415.57d | 0d | start no earlier than 2025-08-04 09:00 | Зорькин В | 0.08h |  |
| 2471 | 10.77.3 | контроль / забрать | 5min | 2025-08-18 09:05 | 2025-08-18 09:10 | 2470FS+10d |  |  | 415.57d |  | start no earlier than 2025-07-31 09:00 | Зорькин В | 0.08h |  |
| 2472 | 10.78 | **ремонт вал в барабана жир 2л** | 152.01d | 2025-08-04 09:00 A | 2026-03-04 09:05 |  | 50% | 76.01d | 273.58d |  |  |  | 0.17h | 0.08h |
| 2473 | 10.78.1 | отправить на ремонт | 5min | 2025-08-04 09:00 | 2025-08-04 09:05 |  |  |  | 425.58d |  | start no earlier than 2025-08-04 09:00 | Зорькин В | 0.08h |  |
| 2474 | 10.78.2 | контроль забрать | 5min | 2026-03-04 09:00 A | 2026-03-04 09:05 A | 2473FS+10d | 100% |  |  |  | start no earlier than 2026-03-04 09:00 | Зорькин В | 0.08h | 0.08h |
| 2475 | 10.79 | **заявка эл мотор шибера в ЗИП** | 0.01d | 2025-02-19 09:00 | 2025-02-19 09:05 |  |  |  | 543.58d |  |  |  | 0.08h |  |
| 2476 | 10.79.1 | контроль | 5min | 2025-02-19 09:00 | 2025-02-19 09:05 |  |  |  | 543.58d |  | start no earlier than 2025-02-19 09:00 | Шуранов Ю | 0.08h |  |
| 2477 | 10.80 | составить таблицу ЗИП наличия редукторов / где используется | 4h | 2025-02-21 09:00 | 2025-02-21 13:00 |  |  |  | 541.09d |  | start no earlier than 2025-02-21 09:00 | Тимофеев В; Шуранов Ю | 8h |  |
| 2478 | 10.81 | составить таблицу соответсвия номеров подшипников - где используется | 4h | 2025-02-21 09:00 | 2025-02-21 13:00 |  |  |  | 541.09d |  | start no earlier than 2025-02-21 09:00 | Тимофеев В; Шуранов Ю | 8h |  |
| 2479 | 10.82 | ремонт болгарки замена кнопки | 1h | 2024-10-21 09:00 A | 2024-10-21 10:00 A |  | 100% |  |  |  | start no earlier than 2024-10-21 09:00 | Зорькин В | 1h | 1h |
| 2480 | 10.83 | сборка редуктор LT70 замена пружинные шайбы | 1d? | 2024-09-29 09:00 A | 2024-09-30 18:00 A |  | 100% |  |  |  | start no earlier than 2024-09-29 09:00 | Макаревич А | 8h | 8h |
| 2481 | 10.84 | **прорверить наличие остатков** | 0.01d | 2024-09-25 08:00 A | 2024-09-25 09:05 A |  | 100% |  |  |  |  |  | 2h | 2h |
| 2482 | 10.84.1 | Манжет (армированная 2,2-75*100*10 ГОСТ 8752-79) | 5min | 2024-09-25 08:00 A | 2024-09-25 09:05 A |  | 100% |  |  |  | start no earlier than 2024-09-25 08:00 | Дедов В | 0.08h | 0.08h |
| 2483 | 10.84.2 | Манжет (армированная 1,2-80*105*10) | 5min | 2024-09-25 08:00 A | 2024-09-25 09:05 A |  | 100% |  |  |  | start no earlier than 2024-09-25 08:00 | Дедов В | 0.08h | 0.08h |
| 2484 | 10.84.3 | Манжет (армированная 2,2-80*105*10 ГОСТ 8752-79) | 5min | 2024-09-25 08:00 A | 2024-09-25 09:05 A |  | 100% |  |  |  | start no earlier than 2024-09-25 08:00 | Дедов В | 0.08h | 0.08h |
| 2485 | 10.84.4 | Манжет (армированная 2,2-55*80*10 ГОСТ 8752-79) | 5min | 2024-09-25 08:00 A | 2024-09-25 09:05 A |  | 100% |  |  |  | start no earlier than 2024-09-25 08:00 | Дедов В | 0.08h | 0.08h |
| 2486 | 10.84.5 | Масло (Для швейных машин) | 0.01d | 2024-09-25 08:00 A | 2024-09-25 09:05 A |  | 100% |  |  |  | start no earlier than 2024-09-25 08:00 | Дедов В | 0.08h | 0.08h |
| 2487 | 10.84.6 | Наконечник (ТМЛ 16-10-6 медный луженый) | 0.01d | 2024-09-25 08:00 A | 2024-09-25 09:05 A |  | 100% |  |  |  | start no earlier than 2024-09-25 08:00 | Дедов В | 0.08h | 0.08h |
| 2488 | 10.84.7 | Наконечник (ТМЛ 10-8-5 медный луженый) | 0.01d | 2024-09-25 08:00 A | 2024-09-25 09:05 A |  | 100% |  |  |  | start no earlier than 2024-09-25 08:00 | Дедов В | 0.08h | 0.08h |
| 2489 | 10.84.8 | Подшипник (56006-2RS (180106)SKF (30*5*10)) | 0.01d | 2024-09-25 08:00 A | 2024-09-25 09:05 A |  | 100% |  |  |  | start no earlier than 2024-09-25 08:00 | Дедов В | 0.08h | 0.08h |
| 2490 | 10.84.9 | Подшипник (51410/ART) | 0.01d | 2024-09-25 08:00 A | 2024-09-25 09:05 A |  | 100% |  |  |  | start no earlier than 2024-09-25 08:00 | Дедов В | 0.08h | 0.08h |
| 2491 | 10.84.10 | Подшипник (UCF 208 (40)) | 0.01d | 2024-09-25 08:00 A | 2024-09-25 09:05 A |  | 100% |  |  |  | start no earlier than 2024-09-25 08:00 | Дедов В | 0.08h | 0.08h |
| 2492 | 10.84.11 | Подшипник (6203.LLU/2ASU1/NTN) | 0.01d | 2024-09-25 08:00 A | 2024-09-25 09:05 A |  | 100% |  |  |  | start no earlier than 2024-09-25 08:00 | Дедов В | 0.08h | 0.08h |
| 2493 | 10.84.12 | Подшипник (22212(53512) SKF (60*110*28)) | 0.01d | 2024-09-25 08:00 A | 2024-09-25 09:05 A |  | 100% |  |  |  | start no earlier than 2024-09-25 08:00 | Дедов В | 0.08h | 0.08h |
| 2494 | 10.84.13 | Подшипник (UC 204 (480204) (20х47х17/31)) | 0.01d | 2024-09-25 08:00 A | 2024-09-25 09:05 A |  | 100% |  |  |  | start no earlier than 2024-09-25 08:00 | Дедов В | 0.08h | 0.08h |
| 2495 | 10.84.14 | Подшипник (6906-2RS (30*47*9)) | 0.01d | 2024-09-25 08:00 A | 2024-09-25 09:05 A |  | 100% |  |  |  | start no earlier than 2024-09-25 08:00 | Дедов В | 0.08h | 0.08h |
| 2496 | 10.84.15 | Подшипник (6003-2RS (180103) (17*35*10)) | 0.01d | 2024-09-25 08:00 A | 2024-09-25 09:05 A |  | 100% |  |  |  | start no earlier than 2024-09-25 08:00 | Дедов В | 0.08h | 0.08h |
| 2497 | 10.84.16 | Подшипник (6203-2RS (180203) (17*40*12)) | 0.01d | 2024-09-25 08:00 A | 2024-09-25 09:05 A |  | 100% |  |  |  | start no earlier than 2024-09-25 08:00 | Дедов В | 0.08h | 0.08h |
| 2498 | 10.84.17 | Подшипник (6002 2RS, SKF (180102, 15*32*9)) | 0.01d | 2024-09-25 08:00 A | 2024-09-25 09:05 A |  | 100% |  |  |  | start no earlier than 2024-09-25 08:00 | Дедов В | 0.08h | 0.08h |
| 2499 | 10.84.18 | Провод ПЩ-4 | 0.01d | 2024-09-25 08:00 A | 2024-09-25 09:05 A |  | 100% |  |  |  | start no earlier than 2024-09-25 08:00 | Дедов В | 0.08h | 0.08h |
| 2500 | 10.84.19 | Ремень клиновый А-1400 | 0.01d | 2024-09-25 08:00 A | 2024-09-25 09:05 A |  | 100% |  |  |  | start no earlier than 2024-09-25 08:00 | Дедов В | 0.08h | 0.08h |
| 2501 | 10.84.20 | Ремень клиновый В (Б)-1320 | 0.01d | 2024-09-25 08:00 A | 2024-09-25 09:05 A |  | 100% |  |  |  | start no earlier than 2024-09-25 08:00 | Дедов В | 0.08h | 0.08h |
| 2502 | 10.84.21 | Реле (тепловое РТИ-3353 23-32А) | 0.01d | 2024-09-25 08:00 A | 2024-09-25 09:05 A |  | 100% |  |  |  | start no earlier than 2024-09-25 08:00 | Дедов В | 0.08h | 0.08h |
| 2503 | 10.84.22 | Шланг (для дозирующих насосов черного цвета 6,4х9,6 мм) | 0.01d | 2024-09-25 08:00 A | 2024-09-25 09:05 A |  | 100% |  |  |  | start no earlier than 2024-09-25 08:00 | Дедов В | 0.08h | 0.08h |
| 2504 | 10.84.23 | Труба гофрированная (ПВХ 25мм с протяжкой легкая серая) | 0.01d | 2024-09-25 08:00 A | 2024-09-25 09:05 A |  | 100% |  |  |  | start no earlier than 2024-09-25 08:00 | Дедов В | 0.08h | 0.08h |
| 2505 | 10.84.24 | Шпонка призматическая (DIN 6885 A 18х11х 90мм) | 0.01d | 2024-09-25 08:00 A | 2024-09-25 09:05 A |  | 100% |  |  |  | start no earlier than 2024-09-25 08:00 | Дедов В | 0.08h | 0.08h |

| ID | WBS | Task | Duration | Start | Finish | Predecessors | Complete | Remaining | Total slack | Free slack | Constraint | Resources | Work | Actual work |
| --- | --- | --- | --- | --- | --- | --- | --- | --- | --- | --- | --- | --- | --- | --- |
| 2506 | 10.85 | **прорверить остатки подшипников** | 0.01d | 2024-09-10 08:00 A | 2024-09-10 09:05 A |  | 100% |  |  |  |  |  | 1.17h | 1.17h |
| 2507 | 10.85.1 | 180101АС17/6 ГПЗ | 5min | 2024-09-10 08:00 A | 2024-09-10 09:05 A |  | 100% |  |  |  | start no earlier than 2024-09-10 08:00 | Дедов В | 0.08h | 0.08h |
| 2508 | 10.85.2 | 180202 (6202 2RS) (15*35*11) SKF | 0.01d | 2024-09-10 08:00 A | 2024-09-10 09:05 A |  | 100% |  |  |  | start no earlier than 2024-09-10 08:00 | Дедов В | 0.08h | 0.08h |
| 2509 | 10.85.3 | 180206 (6206 2RS) (30*62*16) HIKI | 0.01d | 2024-09-10 08:00 A | 2024-09-10 09:05 A |  | 100% |  |  |  | start no earlier than 2024-09-10 08:00 | Дедов В | 0.08h | 0.08h |
| 2510 | 10.85.4 | 22212.EAW33C3 / SNR | 0.01d | 2024-09-10 08:00 A | 2024-09-10 09:05 A |  | 100% |  |  |  | start no earlier than 2024-09-10 08:00 | Дедов В | 0.08h | 0.08h |
| 2511 | 10.85.5 | 51407/NEUTR | 0.01d | 2024-09-10 08:00 A | 2024-09-10 09:05 A |  | 100% |  |  |  | start no earlier than 2024-09-10 08:00 | Дедов В | 0.08h | 0.08h |
| 2512 | 10.85.6 | 6001 ZZ.CM | 0.01d | 2024-09-10 08:00 A | 2024-09-10 09:05 A |  | 100% |  |  |  | start no earlier than 2024-09-10 08:00 | Дедов В | 0.08h | 0.08h |
| 2513 | 10.85.7 | 6201.VVC3/ITJ | 0.01d | 2024-09-10 08:00 A | 2024-09-10 09:05 A |  | 100% |  |  |  | start no earlier than 2024-09-10 08:00 | Дедов В | 0.08h | 0.08h |
| 2514 | 10.85.8 | 6205LLU (NTN) | 0.01d | 2024-09-10 08:00 A | 2024-09-10 09:05 A |  | 100% |  |  |  | start no earlier than 2024-09-10 08:00 | Дедов В | 0.08h | 0.08h |
| 2515 | 10.85.9 | 6206. VVC3/ITJ | 0.01d | 2024-09-10 08:00 A | 2024-09-10 09:05 A |  | 100% |  |  |  | start no earlier than 2024-09-10 08:00 | Дедов В | 0.08h | 0.08h |
| 2516 | 10.85.10 | 686-2RS/ART | 0.01d | 2024-09-10 08:00 A | 2024-09-10 09:05 A |  | 100% |  |  |  | start no earlier than 2024-09-10 08:00 | Дедов В | 0.08h | 0.08h |
| 2517 | 10.85.11 | 7512 (32212)(60*110*24) | 0.01d | 2024-09-10 08:00 A | 2024-09-10 09:05 A |  | 100% |  |  |  | start no earlier than 2024-09-10 08:00 | Дедов В | 0.08h | 0.08h |
| 2518 | 10.85.12 | HK1210/NEUTR | 0.01d | 2024-09-10 08:00 A | 2024-09-10 09:05 A |  | 100% |  |  |  | start no earlier than 2024-09-10 08:00 | Дедов В | 0.08h | 0.08h |
| 2519 | 10.85.13 | UC 205 Neutr | 0.01d | 2024-09-10 08:00 A | 2024-09-10 09:05 A |  | 100% |  |  |  | start no earlier than 2024-09-10 08:00 | Дедов В | 0.08h | 0.08h |
| 2520 | 10.85.14 | UCFC 210 ASAHI | 0.01d | 2024-09-10 08:00 A | 2024-09-10 09:05 A |  | 100% |  |  |  | start no earlier than 2024-09-10 08:00 | Дедов В | 0.08h | 0.08h |
| 2521 | 10.86 | **создать реестр документации на оборудование** | 2d? | 2024-09-10 09:00 | 2024-09-11 18:00 |  |  |  | 657.59d |  |  |  | 8h |  |
| 2522 | 10.86.1 | опись документации в наличии, сортировка | 1d? | 2024-09-10 09:00 | 2024-09-10 18:00 |  |  |  | 657.59d | 0d | start no earlier than 2024-09-10 09:00 | Зорькин В | 8h |  |
| 2523 | 10.86.2 | оформление реестра наличия документации | 1d? | 2024-09-11 09:00 | 2024-09-11 18:00 | 2522 |  |  | 657.59d |  | start no earlier than 2024-09-06 08:00 |  |  |  |
| 2524 | 10.87 | **ремонт двигатель с шлюз питатель** | 0.02d | 2024-08-09 09:00 | 2024-08-09 09:10 |  |  |  | 681.57d |  |  |  | 0.17h |  |
| 2525 | 10.87.1 | контроль / орг курьер - | 10min | 2024-08-09 09:00 | 2024-08-09 09:10 |  |  |  | 681.57d |  | start no earlier than 2024-08-09 09:00 | Шуранов Ю | 0.17h |  |
| 2526 | 10.88 | **организовать хранение зап. частей для производства в одном месте, создать склад и нести полную материальную ответственность** | 18d? | 2024-05-09 09:00 A | 2024-06-03 18:00 |  | 15% | 15.3d? | 729.59d |  |  |  | 272h | 24h |
| 2527 | 10.88.1 | монтаж забор / ворота | 3d | 2024-05-09 09:00 A | 2024-05-13 18:00 A |  | 100% |  |  |  | start no earlier than 2024-05-09 09:00 | Макаревич А | 24h | 24h |
| 2528 | 10.88.2 | монтаж ворота, забор | 1d? | 2024-05-14 09:00 | 2024-05-14 18:00 | 2527 |  |  | 729.59d | 0d | start no earlier than 2024-05-13 09:00 | Некрасов А; Черепанов И | 16h |  |
| 2529 | 10.88.3 | подготови доски для стеллажей на 3 складе | 1d? | 2024-05-20 09:00 | 2024-05-20 18:00 |  |  |  | 739.59d |  | start no earlier than 2024-05-18 09:00 | КИнжекул | 8h |  |
| 2530 | 10.88.4 | переместить стеллажи на 2 этаж ГП + сборка | 1d? | 2024-05-15 09:00 | 2024-05-15 18:00 | 2528 |  |  | 736.59d | 7d | start no earlier than 2024-05-08 08:00 | Некрасов А; Черепанов И | 16h |  |
| 2531 | 10.88.5 | составить список всех позиций за забором для учета | 2d | 2024-05-15 09:00 | 2024-05-16 18:00 | 2528 |  |  | 729.59d | 0d | start no earlier than 2024-05-14 09:00 | Шуранов Ю | 16h |  |
| 2532 | 10.88.6 | состаить список ЗИП склад 3 цех | 2d | 2024-05-17 09:00 | 2024-05-20 18:00 | 2531 |  |  | 729.59d | 0d | start no earlier than 2024-05-08 09:00 | Шуранов Ю | 16h |  |
| 2533 | 10.88.7 | состаить список ЗИП склад слесарное помещение | 2d | 2024-05-21 09:00 | 2024-05-22 18:00 | 2532 |  |  | 729.59d | 0d | start no earlier than 2024-05-14 09:00 | Шуранов Ю | 16h |  |
| 2534 | 10.88.8 | составить список ЗИП Контейнер | 2d | 2024-05-23 09:00 | 2024-05-24 18:00 | 2533 |  |  | 729.59d | 0d | start no earlier than 2024-05-14 09:00 | Шуранов Ю | 16h |  |
| 2535 | 10.88.9 | перемещение ЗИП с 3 цеха на 2 этаж ГП | 2d | 2024-05-27 09:00 | 2024-05-28 18:00 | 2530, 2534 |  |  | 729.59d | 0d | start no earlier than 2024-05-14 09:00 | Шуранов Ю; Некрасов А; Черепанов И | 48h |  |
| 2536 | 10.88.10 | перемещение ЗИП с контейнера на 2 этаж ГП | 2d | 2024-05-29 09:00 | 2024-05-30 18:00 | 2535 |  |  | 729.59d | 0d | start no earlier than 2024-05-14 09:00 | Шуранов Ю; Некрасов А; Черепанов И | 48h |  |
| 2537 | 10.88.11 | перемещение ЗИП с слесарного помещения на 2 этаж ГП | 2d | 2024-05-31 09:00 | 2024-06-03 18:00 | 2536 |  |  | 729.59d |  | start no earlier than 2024-05-14 09:00 | Шуранов Ю; Некрасов А; Черепанов И | 48h |  |

| ID | WBS | Task | Type | Duration | Start | Finish | Predecessors | Complete | Remaining | Actual start | Total slack | Free slack | Constraint | Resources | Work | Actual work |
| --- | --- | --- | --- | --- | --- | --- | --- | --- | --- | --- | --- | --- | --- | --- | --- | --- |
| 2538 | 10.89 | **клапан эл магнитный для парогенератора на подачу воды** |  | 0.06d | 2025-01-16 09:00 | 2025-01-16 09:30 |  |  |  |  | 567.53d |  |  |  | 0.5h |  |
| 2539 | 10.89.1 | контролль остатков, заявка на катушку |  | 30min | 2025-01-16 09:00 | 2025-01-16 09:30 |  |  |  |  | 567.53d |  | start no earlier than 2025-01-16 09:00 | Шуранов Ю | 0.5h |  |
| 2540 | 10.90 | **вал с конвейера №1 разместить на ремонт** |  | 15.06d | 2024-05-14 09:00 | 2024-06-04 09:30 |  |  |  |  | 729.53d |  |  |  | 120.5h |  |
| 2541 | 10.90.1 | орг курьера |  | 15min | 2024-05-14 09:00 | 2024-05-14 09:15 |  |  |  |  | 729.53d | 0d | start no earlier than 2024-05-14 09:00 | Шуранов Ю | 0.25h |  |
| 2542 | 10.90.2 | ремонт |  | 15d | 2024-05-14 09:15 | 2024-06-04 09:15 | 2541 |  |  |  | 729.53d | 0d | start no earlier than 2024-05-08 08:00 | Подрядчик | 120h |  |
| 2543 | 10.90.3 | контроль, орг курьера забрать |  | 15min | 2024-06-04 09:15 | 2024-06-04 09:30 | 2542 |  |  |  | 729.53d |  | start no earlier than 2024-05-14 09:00 | Шуранов Ю | 0.25h |  |
| 2544 | 10.91 | подшипник LMK20.UU/FBJ или NEUTR - 4шт ТЕКО после замены |  | 10min | 2024-05-14 09:00 | 2024-05-14 09:10 |  |  |  |  | 744.57d |  | start no earlier than 2024-05-14 09:00 | Шуранов Ю | 0.17h |  |
| 2545 | 10.92 | UC204 подшипники |  | 10min | 2024-05-14 09:00 | 2024-05-14 09:10 |  |  |  |  | 744.57d |  | start no earlier than 2024-05-14 09:00 | Шуранов Ю | 0.17h |  |
| 2546 | 10.93 | сетка на дробилку 37квт 5 цех 0,5мм и 0,7 мм - заявка ЕВРОМЕД |  | 1h | 2024-05-14 09:00 | 2024-05-14 10:00 |  |  |  |  | 744.47d |  | start no earlier than 2024-05-14 09:00 | Шуранов Ю | 1h |  |
| 2547 | 11 | **ЗИП заказ (заявки)** |  | 4.02d | 2026-09-04 09:00 A | 2026-09-09 09:10 |  | 71% | 1.15d |  | 137.57d |  |  |  | 0.58h | 0.42h |
| 2548 | 11.1 | контактор для тельфера 5ц 24 переменка |  | 15min | 2026-09-04 09:00 A | 2026-09-04 09:15 A |  | 100% |  |  |  |  | start no earlier than 2026-09-04 09:00 | Зорькин В | 0.25h | 0.25h |
| 2549 | 11.2 | Наконечники штырьевые для сборки схем (получить инфу у Тимофеева) |  | 10min | 2026-09-09 09:00 | 2026-09-09 09:10 |  |  |  |  | 137.57d |  | start no earlier than 2026-09-09 09:00 | Зорькин В | 0.17h |  |
| 2550 | 11.3 | Газ в слесарку, закончился |  | 10min | 2026-09-07 09:00 A | 2026-09-07 09:10 A |  | 100% |  |  |  |  | start no earlier than 2026-09-07 09:00 | Зорькин В | 0.17h | 0.17h |
| 2551 | 12 | **ТО** |  | 772.25d? | 2023-12-28 09:00 A | 2026-12-02 11:00 |  | 45% | 421.37d? |  | 70.34d |  |  |  | 30842.1h | 17185.7h |
| 2552 | 12.1 | **1 цех** |  | 134.25d? | 2024-04-04 09:00 | 2024-10-09 11:00 |  | 62% | 50.44d? | 2023-12-28 09:00 |  |  |  |  | 5957.25h | 812.17h |
| 2553 | 12.1.1 | **Разобрать улитки с охладителя 2 линия, 4 улитки на печах и улитки циклонов - замена подшипников, каких нет сообщить** |  | 16.25d | 2026-09-07 09:00 A | 2026-09-23 11:00 |  | 95% | 0.79d |  | 123.34d |  |  |  | 22.5h | 21.5h |
| 2554 | 12.1.1.1 | очистка моторов шлюз питателей циклонов от пыли |  | 30min | 2026-09-11 09:00 A | 2026-09-11 09:30 A |  | 100% |  |  |  |  | start no earlier than 2026-09-11 08:00 | Бобренок В | 0.5h | 0.5h |
| 2555 | 12.1.1.2 | очистка центрального вала от налипей грязи через смотровое окно |  | 1h | 2026-09-11 09:00 A | 2026-09-11 10:00 A |  | 100% |  |  |  |  | start no earlier than 2026-09-11 08:00 | Бобренок В | 1h | 1h |
| 2556 | 12.1.1.3 | монтаж шильдиков на которые починил |  | 1h | 2026-09-15 09:00 | 2026-09-15 10:00 |  |  |  |  | 131.47d |  | start no earlier than 2026-09-15 09:00 | Бундин В | 1h |  |
| 2557 | 12.1.1.4 | вентилятор охладителя | manual | 4h | 2026-09-07 09:00 A | 2026-09-07 13:00 A |  | 100% |  |  |  |  |  | Бундин В | 4h | 4h |
| 2558 | 12.1.1.5 | линия 1 вентилятор печи 1 |  | 4h | 2026-09-08 09:00 A | 2026-09-08 13:00 A |  | 100% |  |  |  |  | start no earlier than 2026-09-08 09:00 | Бундин В | 4h | 4h |
| 2559 | 12.1.1.6 | линия 1 вентилятор печи 2 | manual | 4h | 2026-09-09 09:00 A | 2026-09-09 13:00 A |  | 100% |  |  |  |  |  | Бундин В | 4h | 4h |
| 2560 | 12.1.1.7 | линия 2 вентилятор циклона 1 | manual | 4h | 2026-09-09 14:00 A | 2026-09-09 18:00 A | 2559 | 100% |  |  |  |  |  | Бундин В | 4h | 4h |
| 2561 | 12.1.1.8 | линия 2 вентилятор циклона 2 | manual | 2h | 2026-09-23 09:00 A | 2026-09-23 11:00 A | 2560 | 100% |  |  |  |  |  | Бундин В; Некрасов А | 4h | 4h |
| 2562 | 12.1.2 | ТО ШУ печи №1 (замена кабеля, наконечников…) |  | 1h | 2026-08-27 09:00 A | 2026-08-27 10:00 A |  | 100% |  |  |  |  | start no earlier than 2026-08-27 09:00 | Тимофеев В | 1h | 1h |

| ID | WBS | Task | Duration | Start | Finish | Complete | Remaining | Total slack | Constraint | Resources | Work | Actual work |
| --- | --- | --- | --- | --- | --- | --- | --- | --- | --- | --- | --- | --- |
| 2563 | 12.1.3 | **приточная вентиляция** | 163.12d | 2026-03-04 09:00 A | 2026-10-07 10:00 | 75% | 40.78d | 110.47d |  |  | 4h | 3h |
| 2564 | 12.1.3.1 | замена оба фильтра | 1h | 2026-03-04 09:00 A | 2026-03-04 10:00 A | 100% |  |  | start no earlier than 2026-03-04 08:00 | Труфанов А | 1h | 1h |
| 2565 | 12.1.3.2 | замена фильтра | 1h | 2026-04-15 09:00 A | 2026-04-15 10:00 A | 100% |  |  | start no earlier than 2026-04-15 09:00 | Труфанов А | 1h | 1h |
| 2566 | 12.1.3.3 | Замена фильтра | 1h | 2026-07-29 09:00 A | 2026-07-29 10:00 A | 100% |  |  | start no earlier than 2026-07-29 08:00 | Бундин В | 1h | 1h |
| 2567 | 12.1.3.4 | Проверка фильтра, по необходимости замена | 1h | 2026-10-07 09:00 | 2026-10-07 10:00 |  |  | 110.47d | start no earlier than 2026-10-07 09:00 | Дедов В | 1h |  |
| 2568 | 12.1.4 | **техническая вода** | 158.02d | 2026-03-11 09:00 A | 2026-10-07 09:10 | 89% | 17.56d | 110.57d |  |  | 1.5h | 1.33h |
| 2569 | 12.1.4.1 | проверка гидроаккумулятора | 10min | 2026-03-11 09:00 A | 2026-03-11 09:10 A | 100% |  |  | start no earlier than 2026-03-11 09:00 | Некрасов А | 0.17h | 0.17h |
| 2570 | 12.1.4.2 | замена фильтров | 10min | 2026-03-11 09:00 A | 2026-03-11 09:10 A | 100% |  |  | start no earlier than 2026-03-11 09:00 | Некрасов А | 0.17h | 0.17h |
| 2571 | 12.1.4.3 | замена фильтров | 30min | 2026-05-27 09:00 A | 2026-05-27 09:30 A | 100% |  |  | start no earlier than 2026-03-11 09:00 | Бундин В | 0.5h | 0.5h |
| 2572 | 12.1.4.4 | замена фильтров | 30min | 2026-03-12 09:00 A | 2026-03-12 09:30 A | 100% |  |  | start no earlier than 2026-03-12 09:00 | Бобренок В | 0.5h | 0.5h |
| 2573 | 12.1.4.5 | проверка гидроаккумулятора | 10min | 2026-10-07 09:00 | 2026-10-07 09:10 |  |  | 110.57d | start no earlier than 2026-10-07 09:00 | Тимофеев В | 0.17h |  |
| 2574 | 12.1.5 | **линия 1** | 147.06d? | 2026-03-18 09:00 A | 2026-09-30 09:30 A | 100% |  |  |  |  | 27h | 27h |
| 2575 | 12.1.5.1 | **питатель экструдера** | 147.06d? | 2026-03-18 09:00 A | 2026-09-30 09:30 A | 100% |  |  |  |  | 11h | 11h |
| 2576 | 12.1.5.1.1 | замена подшипники | 1d? | 2026-04-08 09:00 A | 2026-04-08 18:00 A | 100% |  |  | start no earlier than 2026-04-08 09:00 | Тимофеев В | 8h | 8h |
| 2577 | 12.1.5.1.2 | контроль палстик втулки | 1h | 2026-05-13 09:00 A | 2026-05-13 10:00 A | 100% |  |  | start no earlier than 2026-05-13 09:00 | Бобренок В | 1h | 1h |
| 2578 | 12.1.5.1.3 | контроль шестерен привода, редуктора | 10min | 2026-03-18 09:00 A | 2026-03-18 09:10 A | 100% |  |  | start no earlier than 2026-03-18 09:00 | Труфанов А | 0.17h | 0.17h |
| 2579 | 12.1.5.1.4 | контроль состояние пластик втулки | 30min | 2026-06-02 09:00 A | 2026-06-02 09:30 A | 100% |  |  | start no earlier than 2026-06-02 09:00 | Некрасов А | 0.5h | 0.5h |
| 2580 | 12.1.5.1.5 | Ревизия питателя | 20min | 2026-07-29 09:00 A | 2026-07-29 09:20 A | 100% |  |  | start no earlier than 2026-07-29 08:00 | Бундин В | 0.33h | 0.33h |
| 2581 | 12.1.5.1.6 | Ревизия питателя, контроль состояния подшипников/втулки/шестерен | 30min | 2026-09-23 09:00 A | 2026-09-23 09:30 A | 100% |  |  | start no earlier than 2026-09-23 09:00 | Некрасов А | 0.5h | 0.5h |
| 2582 | 12.1.5.1.7 | Ревизия питателя, контроль состояния подшипников/втулки/шестерен/втулки | 30min | 2026-09-30 09:00 A | 2026-09-30 09:30 A | 100% |  |  | start no earlier than 2026-09-30 09:00 | Тимофеев В | 0.5h | 0.5h |
| 2583 | 12.1.5.2 | **прекондицинер экструдера** | 107.03d | 2026-05-13 09:00 A | 2026-09-30 09:15 A | 100% |  |  |  |  | 1h | 1h |
| 2584 | 12.1.5.2.1 | контроль привода, подшипников | 15min | 2026-05-13 09:00 A | 2026-05-13 09:15 A | 100% |  |  | start no earlier than 2026-05-13 09:00 | Бобренок В | 0.25h | 0.25h |
| 2585 | 12.1.5.2.2 | контроль привода, подшипников | 15min | 2026-07-29 09:00 A | 2026-07-29 09:15 A | 100% |  |  | start no earlier than 2026-07-29 08:00 | Труфанов А | 0.25h | 0.25h |
| 2586 | 12.1.5.2.3 | контроль привода, подшипников | 15min | 2026-09-23 09:00 A | 2026-09-23 09:15 A | 100% |  |  | start no earlier than 2026-09-23 09:00 | Некрасов А | 0.25h | 0.25h |
| 2587 | 12.1.5.2.4 | контроль привода, подшипников/при необходимости замена | 15min | 2026-09-30 09:00 A | 2026-09-30 09:15 A | 100% |  |  | start no earlier than 2026-09-30 09:00 | Тимофеев В | 0.25h | 0.25h |

| ID | WBS | Task | Duration | Start | Finish | Complete | Remaining | Total slack | Constraint | Resources | Work | Actual work |
| --- | --- | --- | --- | --- | --- | --- | --- | --- | --- | --- | --- | --- |
| 2588 | 12.1.5.3 | **парогенератор** | 131.12d | 2026-04-08 09:00 A | 2026-09-29 10:00 A | 100% |  |  |  |  | 15h | 15h |
| 2589 | 12.1.5.3.1 | вскрытие электородов, чистка | 1h | 2026-05-13 09:00 A | 2026-05-13 10:00 A | 100% |  |  | start no earlier than 2026-05-13 09:00 | Бобренок В | 1h | 1h |
| 2590 | 12.1.5.3.2 | замена реле вкл насоса. (не вкл) | 2h | 2026-05-13 09:00 A | 2026-05-13 11:00 A | 100% |  |  | start no earlier than 2026-05-13 09:00 | Бобренок В | 2h | 2h |
| 2591 | 12.1.5.3.3 | замена гофротрубы / закрепить жестко | 2h | 2026-04-08 09:00 A | 2026-04-08 11:00 A | 100% |  |  | start no earlier than 2026-04-08 09:00 | Бобренок В | 2h | 2h |
| 2592 | 12.1.5.3.4 | чистка парогенератора, если нужно замена электродов | 2h | 2026-06-10 09:00 A | 2026-06-10 11:00 A | 100% |  |  | start no earlier than 2026-06-10 09:00 | Дедов В | 2h | 2h |
| 2593 | 12.1.5.3.5 | читска парогенератора, если нужно замена электродов | 2h | 2026-05-20 09:00 A | 2026-05-20 11:00 A | 100% |  |  | start no earlier than 2026-05-20 09:00 | Некрасов А | 2h | 2h |
| 2594 | 12.1.5.3.6 | читска парогенератора, если нужно замена электродов | 1h | 2026-06-02 09:00 A | 2026-06-02 10:00 A | 100% |  |  | start no earlier than 2026-06-02 09:00 | Тимофеев В | 1h | 1h |
| 2595 | 12.1.5.3.7 | вскрытие электородов, чистка | 1h | 2026-08-12 09:00 A | 2026-08-12 10:00 A | 100% |  |  | start no earlier than 2026-08-12 09:00 | Некрасов А | 1h | 1h |
| 2596 | 12.1.5.3.8 | вскрытие электородов, чистка (при остановке линии на мойку, если не остановилась, передать по смене Бундину) | 1h | 2026-09-22 09:00 A | 2026-09-22 10:00 A | 100% |  |  | start no earlier than 2026-09-22 09:00 | Макаревич А; Бундин В | 2h | 2h |
| 2597 | 12.1.5.3.9 | вскрытие электородов, чистка (при остановке линии на мойку, если не остановилась, передать по смене Тимофееву) | 1h | 2026-09-29 09:00 A | 2026-09-29 10:00 A | 100% |  |  | start no earlier than 2026-09-29 09:00 | Бундин В; Тимофеев В | 2h | 2h |
| 2598 | 12.1.6 | **редуктор экструдера и маслянная станция** | 435.04d | 2025-02-17 09:00 A | 2026-10-07 09:20 | 52% | 209.26d | 110.55d |  |  | 13.17h | 6.83h |
| 2599 | 12.1.6.1 | чистка фильтра | 30min | 2026-06-02 09:00 A | 2026-06-02 09:30 A | 100% |  |  | start no earlier than 2026-06-02 09:00 | Тимофеев В | 0.5h | 0.5h |
| 2600 | 12.1.6.2 | муфта редутор-мотор | 15min | 2026-03-11 09:00 A | 2026-03-11 09:15 A | 100% |  |  | start no earlier than 2026-03-11 09:00 | Тимофеев В | 0.25h | 0.25h |
| 2601 | 12.1.6.3 | чистка фильтра | 30min | 2026-07-16 09:00 A | 2026-07-16 09:30 A | 100% |  |  | start no earlier than 2026-07-16 09:00 | Бобренок В | 0.5h | 0.5h |
| 2602 | 12.1.6.4 | тэны и термпары шнеков- прортяжка | 30min | 2025-02-25 09:00 | 2025-02-25 09:30 |  |  | 539.53d | start no earlier than 2025-02-25 09:00 | Дедов В | 0.5h |  |
| 2603 | 12.1.6.5 | Чистка фильтра | 30min | 2026-07-29 08:00 A | 2026-07-29 09:30 A | 100% |  |  | start no earlier than 2026-07-29 08:00 | Тимофеев В | 0.5h | 0.5h |
| 2604 | 12.1.6.6 | тэны и термпоры шнеков- прортяжка | 30min | 2026-09-23 09:00 A | 2026-09-23 09:30 A | 100% |  |  | start no earlier than 2026-09-23 09:00 | Некрасов А | 0.5h | 0.5h |
| 2605 | 12.1.6.7 | Чистка фильтра | 30min | 2026-09-23 09:00 A | 2026-09-23 09:30 A | 100% |  |  | start no earlier than 2026-09-23 09:00 | Бундин В | 0.5h | 0.5h |
| 2606 | 12.1.6.8 | Чистка фильтра/тэны и термопары шнеков - протяжка | 30min | 2026-09-30 09:00 A | 2026-09-30 09:30 A | 100% |  |  | start no earlier than 2026-09-30 09:00 | Тимофеев В | 0.5h | 0.5h |
| 2607 | 12.1.6.9 | **шкаф управления экструдером** | 144.03d | 2026-03-31 09:00 A | 2026-10-07 09:15 | 86% | 20.58d | 110.56d |  |  | 1.75h | 1.5h |
| 2608 | 12.1.6.9.1 | протяжка контактов | 30min | 2026-03-31 09:00 A | 2026-03-31 09:30 A | 100% |  |  | start no earlier than 2026-03-11 09:00 | Некрасов А | 0.5h | 0.5h |
| 2609 | 12.1.6.9.2 | частотные привода экструдера, ножей, питателя - продувка | 30min | 2026-05-27 09:00 A | 2026-05-27 09:30 A | 100% |  |  | start no earlier than 2026-05-27 09:00 | Бундин В | 0.5h | 0.5h |
| 2610 | 12.1.6.9.3 | частотные привода экструдера, ножей, питателя - продувка | 15min | 2026-07-29 09:00 A | 2026-07-29 09:15 A | 100% |  |  | start no earlier than 2026-07-29 08:00 | Труфанов А | 0.25h | 0.25h |
| 2611 | 12.1.6.9.4 | частотные привода экструдера, ножей, питателя - продувка | 15min | 2026-09-23 09:00 A | 2026-09-23 09:15 A | 100% |  |  | start no earlier than 2026-09-23 09:00 | Некрасов А | 0.25h | 0.25h |
| 2612 | 12.1.6.9.5 | частотные привода экструдера, ножей, питателя - продувка | 15min | 2026-10-07 09:00 | 2026-10-07 09:15 |  |  | 110.56d | start no earlier than 2026-10-07 09:00 | Тимофеев В | 0.25h |  |

| ID | WBS | Task | Duration | Start | Finish | Complete | Remaining | Total slack | Constraint | Resources | Work | Actual work |
| --- | --- | --- | --- | --- | --- | --- | --- | --- | --- | --- | --- | --- |
| 2613 | 12.1.6.10 | **блок тэнов сушки** | 108.03d | 2026-05-20 09:00 A | 2026-10-07 09:15 | 71% | 30.87d | 110.56d |  |  | 1.75h | 1.25h |
| 2614 | 12.1.6.10.1 | ревизия, замена отгоревших жил, проверка токов | 1h | 2026-05-20 09:00 A | 2026-05-20 10:00 A | 100% |  |  | start no earlier than 2026-05-20 09:00 | Некрасов А | 1h | 1h |
| 2615 | 12.1.6.10.2 | ревизия/ проверка токов | 15min | 2026-08-26 09:00 | 2026-08-26 09:15 |  |  | 148.56d | start no earlier than 2026-08-26 09:00 | Некрасов А | 0.25h |  |
| 2616 | 12.1.6.10.3 | ревизия/ проверка токов | 15min | 2026-09-23 09:00 A | 2026-09-23 09:15 A | 100% |  |  | start no earlier than 2026-09-23 09:00 | Труфанов А | 0.25h | 0.25h |
| 2617 | 12.1.6.10.4 | ревизия/ проверка токов | 15min | 2026-10-07 09:00 | 2026-10-07 09:15 |  |  | 110.56d | start no earlier than 2026-10-07 09:00 | Тимофеев В | 0.25h |  |
| 2618 | 12.1.6.11 | **шкаф управления тэнами сушки** | 68.5d | 2026-06-10 09:00 A | 2026-09-11 13:00 | 11% | 61.29d | 135.09d |  |  | 4.75h | 0.5h |
| 2619 | 12.1.6.11.1 | протяжка контактов | 15min | 2026-06-10 09:00 | 2026-06-10 09:15 |  |  | 203.56d | start no earlier than 2026-06-10 09:00 | Дедов В | 0.25h |  |
| 2620 | 12.1.6.11.2 | замена неисправных жил | 4h | 2026-09-11 09:00 | 2026-09-11 13:00 |  |  | 135.09d | start no earlier than 2026-09-11 09:00 | Тимофеев В | 4h |  |
| 2621 | 12.1.6.11.3 | частотные привода экструдера, ножей, питателя - продувка | 30min | 2026-07-16 09:00 A | 2026-07-16 09:30 A | 100% |  |  | start no earlier than 2026-07-16 09:00 | Бобренок В | 0.5h | 0.5h |
| 2622 | 12.1.6.12 | конвейер №1 с печи в дрожировщик прорверка подшипники, реуктор | 30min | 2025-02-17 09:00 | 2025-02-17 09:30 |  |  | 545.53d | start no earlier than 2025-02-15 09:00 | Дедов В | 0.5h |  |
| 2623 | 12.1.6.13 | Осмотр, продувка, протяжка контактов | 20min | 2026-09-23 09:00 A | 2026-09-23 09:20 A | 100% |  |  | start no earlier than 2026-09-23 09:00 | Труфанов А | 0.33h | 0.33h |
| 2624 | 12.1.6.14 | Осмотр, продувка, протяжка контактов | 20min | 2026-10-07 09:00 | 2026-10-07 09:20 |  |  | 110.55d | start no earlier than 2026-10-07 09:00 | Тимофеев В | 0.33h |  |
| 2625 | 12.1.7 | **барабан смесительный дрожировка - прорверка подшипнки , реуктор** | 157.03d | 2026-03-04 08:00 A | 2026-09-30 09:15 A | 100% |  |  |  |  | 2.75h | 2.75h |
| 2626 | 12.1.7.1 | замена вал № 4 час | 2h | 2026-03-04 08:00 A | 2026-03-04 11:00 A | 100% |  |  | start no earlier than 2026-03-04 08:00 | Тимофеев В | 2h | 2h |
| 2627 | 12.1.7.2 | Дефектовка - проверить подачу, вибрации, посторонние шумы. | 15min | 2026-07-29 08:00 A | 2026-07-29 09:15 A | 100% |  |  | start no earlier than 2026-07-29 08:00 | Тимофеев В | 0.25h | 0.25h |
| 2628 | 12.1.7.3 | Дефектовка - проверить подачу, вибрации, посторонние шумы. | 15min | 2026-09-23 09:00 A | 2026-09-23 09:15 A | 100% |  |  | start no earlier than 2026-09-23 09:00 | Некрасов А | 0.25h | 0.25h |
| 2629 | 12.1.7.4 | Дефектовка - проверить подачу, вибрации, посторонние шумы/проверка фильтров/насосов/фитингов | 15min | 2026-09-30 09:00 A | 2026-09-30 09:15 A | 100% |  |  | start no earlier than 2026-09-30 09:00 | Тимофеев В | 0.25h | 0.25h |
| 2630 | 12.1.8 | **печь** | 639.12d | 2024-05-07 09:00 A | 2026-10-07 10:00 | 90% | 63.91d | 110.47d |  |  | 19h | 17.5h |
| 2631 | 12.1.8.1 | проверка состояния сетки, ремонт шплинтов | 2h | 2026-07-16 09:00 A | 2026-07-16 11:00 A | 100% |  |  | start no earlier than 2026-07-16 09:00 | Бобренок В; Некрасов А; Труфанов А | 6h | 6h |
| 2632 | 12.1.8.2 | укоротить звено привода | 1h | 2026-07-16 09:00 A | 2026-07-16 10:00 A | 100% |  |  | start no earlier than 2026-07-16 09:00 | Некрасов А | 1h | 1h |
| 2633 | 12.1.8.3 | вентиляторы обдува сушки | 2h | 2024-06-14 09:00 A | 2024-06-14 11:00 A | 100% |  |  | start no earlier than 2024-06-14 09:00 | ТО_2 | 2h | 2h |
| 2634 | 12.1.8.4 | пневотранспорт вентилятор | 2h | 2024-05-07 09:00 A | 2024-05-07 11:00 A | 100% |  |  | start no earlier than 2024-05-07 09:00 | ТО_1 | 2h | 2h |
| 2635 | 12.1.8.5 | пневотранспорт роторный питатель - проверка масла | 30min | 2025-02-17 09:00 A | 2025-02-17 09:30 A | 100% |  |  | start no earlier than 2025-02-16 09:00 | Черепанов И | 0.5h | 0.5h |
| 2636 | 12.1.8.6 | пневотранспорт роторный питатель - проверка масла | 30min | 2026-07-29 09:00 A | 2026-07-29 09:30 A | 100% |  |  | start no earlier than 2026-07-29 08:00 | Труфанов А | 0.5h | 0.5h |
| 2637 | 12.1.8.7 | привод сетки ПЕЧИ сушки - прорверка масла | 30min | 2025-02-17 09:00 A | 2025-02-17 09:30 A | 100% |  |  | start no earlier than 2025-02-16 09:00 | Черепанов И | 0.5h | 0.5h |
| 2638 | 12.1.8.8 | привод сетки ПЕЧИ сушки - прорверка масла | 30min | 2026-07-29 09:00 A | 2026-07-29 09:30 A | 100% |  |  | start no earlier than 2026-07-29 08:00 | Труфанов А | 0.5h | 0.5h |
| 2639 | 12.1.8.9 | дозатор сухой гидролизат - разборка, чистка, замена подшипников | 2h | 2026-08-18 09:00 A | 2026-08-18 11:00 A | 100% |  |  | start no earlier than 2026-08-18 09:00 | Бундин В | 2h | 2h |
| 2640 | 12.1.8.10 | Осмотр цепи и сетки | 1h | 2026-07-29 09:00 A | 2026-07-29 10:00 A | 100% |  |  | start no earlier than 2026-07-29 08:00 | Труфанов А | 1h | 1h |
| 2641 | 12.1.8.11 | Контроль состояния сетки/цепи | 30min | 2026-09-23 09:00 A | 2026-09-23 09:30 A | 100% |  |  | start no earlier than 2026-09-23 09:00 | Некрасов А | 0.5h | 0.5h |
| 2642 | 12.1.8.12 | Смазка цепи (при наличии на складе) | 1h | 2026-09-23 09:00 A | 2026-09-23 10:00 A | 100% |  |  | start no earlier than 2026-09-23 09:00 | Некрасов А | 1h | 1h |
| 2643 | 12.1.8.13 | Контроль состояния сетки/цепи | 1h | 2026-10-07 09:00 | 2026-10-07 10:00 |  |  | 110.47d | start no earlier than 2026-10-07 09:00 | Тимофеев В | 1h |  |
| 2644 | 12.1.8.14 | Проверка масла на приводе/осмотр | 30min | 2026-10-07 09:00 | 2026-10-07 09:30 |  |  | 110.53d | start no earlier than 2026-10-07 09:00 | Тимофеев В | 0.5h |  |

| ID | WBS | Task | Duration | Start | Finish | Complete | Remaining | Actual start | Total slack | Constraint | Resources | Work | Actual work |
| --- | --- | --- | --- | --- | --- | --- | --- | --- | --- | --- | --- | --- | --- |
| 2645 | 12.1.9 | **линия 2** | 0.25d? | 2023-12-29 09:00 | 2023-12-29 11:00 | 83% | 0.04d? | 2024-04-10 09:00 |  |  |  | 41.58h | 34.75h |
| 2646 | 12.1.9.1 | **питатель экструдера** | 153.06d | 2026-03-18 09:00 A | 2026-10-07 09:30 | 91% | 13.91d |  | 110.53d |  |  | 4.5h | 4h |
| 2647 | 12.1.9.1.1 | контроль состояние пластик втулки | 30min | 2026-06-02 09:00 A | 2026-06-02 09:30 A | 100% |  |  |  | start no earlier than 2026-06-02 09:00 | Некрасов А | 0.5h | 0.5h |
| 2648 | 12.1.9.1.2 | замена подшипники | 1h | 2026-04-08 09:00 A | 2026-04-08 10:00 A | 100% |  |  |  | start no earlier than 2026-04-08 09:00 |  |  |  |
| 2649 | 12.1.9.1.3 | замена шестеренок -взять у Веры на складе | 2h | 2026-05-20 09:00 A | 2026-05-20 11:00 A | 100% |  |  |  | start no earlier than 2026-05-20 09:00 | Бобренок В | 2h | 2h |
| 2650 | 12.1.9.1.4 | контроль пластик втулки | 30min | 2026-05-13 09:00 A | 2026-05-13 09:30 A | 100% |  |  |  | start no earlier than 2026-05-13 09:00 | Бобренок В | 0.5h | 0.5h |
| 2651 | 12.1.9.1.5 | контроль шестерен привода, редуктора | 10min | 2026-03-18 09:00 A | 2026-03-18 09:10 A | 100% |  |  |  | start no earlier than 2026-03-18 09:00 | Труфанов А | 0.17h | 0.17h |
| 2652 | 12.1.9.1.6 | Ревизия питателя | 20min | 2026-07-29 09:00 A | 2026-07-29 09:20 A | 100% |  |  |  | start no earlier than 2026-07-29 08:00 | Бундин В | 0.33h | 0.33h |
| 2653 | 12.1.9.1.7 | Ревизия питателя, контроль состояния подшипников/втулки/шестерен | 30min | 2026-09-23 09:00 A | 2026-09-23 09:30 A | 100% |  |  |  | start no earlier than 2026-09-23 09:00 | Бундин В | 0.5h | 0.5h |
| 2654 | 12.1.9.1.8 | Ревизия питателя, контроль состояния подшипников/втулки/шестерен | 30min | 2026-10-07 09:00 | 2026-10-07 09:30 |  |  |  | 110.53d | start no earlier than 2026-10-07 09:00 | Дедов В | 0.5h |  |
| 2655 | 12.1.9.2 | **прекондицинер экструдера** | 113.03d | 2026-05-13 09:00 A | 2026-10-07 09:15 | 75% | 28.26d |  | 110.56d |  |  | 1h | 0.75h |
| 2656 | 12.1.9.2.1 | контроль привода, подшипников | 15min | 2026-05-13 09:00 A | 2026-05-13 09:15 A | 100% |  |  |  | start no earlier than 2026-05-13 09:00 | Бобренок В | 0.25h | 0.25h |
| 2657 | 12.1.9.2.2 | контроль привода, подшипников | 15min | 2026-07-29 09:00 A | 2026-07-29 09:15 A | 100% |  |  |  | start no earlier than 2026-07-29 08:00 | Труфанов А | 0.25h | 0.25h |
| 2658 | 12.1.9.2.3 | контроль привода, подшипников | 15min | 2026-09-23 09:00 A | 2026-09-23 09:15 A | 100% |  |  |  | start no earlier than 2026-09-23 09:00 | Бундин В | 0.25h | 0.25h |
| 2659 | 12.1.9.2.4 | контроль привода, подшипников | 15min | 2026-10-07 09:00 | 2026-10-07 09:15 |  |  |  | 110.56d | start no earlier than 2026-10-07 09:00 | Дедов В | 0.25h |  |
| 2660 | 12.1.9.3 | **парогенератор** | 65.12d | 2026-05-13 09:00 A | 2026-08-12 10:00 A | 100% |  |  |  |  |  | 2h | 2h |
| 2661 | 12.1.9.3.1 | вскрытие электородов, чистка | 1h | 2026-05-13 09:00 A | 2026-05-13 10:00 A | 100% |  |  |  | start no earlier than 2026-05-13 09:00 | Бобренок В | 1h | 1h |
| 2662 | 12.1.9.3.2 | вскрытие электородов, чистка | 1h | 2026-08-12 09:00 A | 2026-08-12 10:00 A | 100% |  |  |  | start no earlier than 2026-08-12 09:00 | Некрасов А | 1h | 1h |
| 2663 | 12.1.9.4 | тэны и термпоры шнеков- прортяжка | 30min | 2024-04-10 09:00 | 2024-04-10 09:30 |  |  |  | 768.53d | start no earlier than 2024-04-10 09:00 | Черепанов И | 0.5h |  |
| 2664 | 12.1.9.5 | Чистка парогенератора | 1h | 2026-07-29 09:00 A | 2026-07-29 10:00 A | 100% |  |  |  | start no earlier than 2026-07-29 08:00 | Бундин В | 1h | 1h |
| 2665 | 12.1.9.6 | вскрытие электородов, чистка (при остановке линии на мойку, если не остановилась, передать по смене Бундину) | 1h | 2026-09-23 09:00 A | 2026-09-23 10:00 A | 100% |  |  |  | start no earlier than 2026-09-23 09:00 | Некрасов А | 1h | 1h |
| 2666 | 12.1.9.7 | вскрытие электородов, чистка (при остановке линии на мойку, если не остановилась, передать по смене Дедову) | 1h | 2026-09-29 09:00 A | 2026-09-29 10:00 A | 100% |  |  |  | start no earlier than 2026-09-29 08:00 | Бундин В; Дедов В | 2h | 2h |
| 2667 | 12.1.9.8 | **шкаф управления экструдером** | 158.03d | 2026-03-11 09:00 A | 2026-10-07 09:15 | 88% | 19.75d |  | 110.56d |  |  | 2h | 1.75h |
| 2668 | 12.1.9.8.1 | протяжка контактов | 30min | 2026-03-11 09:00 A | 2026-03-11 09:30 A | 100% |  |  |  | start no earlier than 2026-03-11 09:00 | Некрасов А | 0.5h | 0.5h |
| 2669 | 12.1.9.8.2 | частотные привода экструдера, ножей, питателя - продувка | 30min | 2026-05-27 09:00 A | 2026-05-27 09:30 A | 100% |  |  |  | start no earlier than 2026-05-27 09:00 | Бундин В | 0.5h | 0.5h |
| 2670 | 12.1.9.8.3 | частотные привода экструдера, ножей, питателя - продувка | 15min | 2026-07-16 09:00 A | 2026-07-16 09:15 A | 100% |  |  |  | start no earlier than 2026-07-16 09:00 | Бобренок В | 0.25h | 0.25h |
| 2671 | 12.1.9.8.4 | частотные привода экструдера, ножей, питателя - продувка | 15min | 2026-07-29 09:00 A | 2026-07-29 09:15 A | 100% |  |  |  | start no earlier than 2026-07-29 08:00 | Труфанов А | 0.25h | 0.25h |
| 2672 | 12.1.9.8.5 | частотные привода экструдера, ножей, питателя - продувка | 15min | 2026-09-23 09:00 A | 2026-09-23 09:15 A | 100% |  |  |  | start no earlier than 2026-09-23 09:00 | Труфанов А | 0.25h | 0.25h |
| 2673 | 12.1.9.8.6 | частотные привода экструдера, ножей, питателя - продувка | 15min | 2026-10-07 09:00 | 2026-10-07 09:15 |  |  |  | 110.56d | start no earlier than 2026-10-07 09:00 | Дедов В | 0.25h |  |

| ID | WBS | Task | Duration | Start | Finish | Complete | Remaining | Total slack | Constraint | Resources | Work | Actual work |
| --- | --- | --- | --- | --- | --- | --- | --- | --- | --- | --- | --- | --- |
| 2674 | 12.1.9.9 | **редуктор экструдера и маслянная станция** | 108.06d | 2026-05-20 09:00 A | 2026-10-07 09:30 | 88% | 13.51d | 110.53d |  |  | 5h | 4.5h |
| 2675 | 12.1.9.9.1 | чистка фильтра | 30min | 2026-06-02 09:00 A | 2026-06-02 09:30 A | 100% |  |  | start no earlier than 2026-06-02 09:00 | Тимофеев В | 0.5h | 0.5h |
| 2676 | 12.1.9.9.2 | чистка фильтра | 30min | 2026-05-20 09:00 A | 2026-05-20 09:30 A | 100% |  |  | start no earlier than 2026-05-20 09:00 | Тимофеев В | 0.5h | 0.5h |
| 2677 | 12.1.9.9.3 | муфта редутор-мотор проверка состояния | 30min | 2026-05-27 09:00 A | 2026-05-27 09:30 A | 100% |  |  | start no earlier than 2026-05-27 09:00 | Тимофеев В | 0.5h | 0.5h |
| 2678 | 12.1.9.9.4 | чистка фильтра | 30min | 2026-07-16 09:00 A | 2026-07-16 09:30 A | 100% |  |  | start no earlier than 2026-07-16 09:00 | Бобренок В | 0.5h | 0.5h |
| 2679 | 12.1.9.9.5 | Чистка фильтра | 30min | 2026-07-29 08:00 A | 2026-07-29 09:30 A | 100% |  |  | start no earlier than 2026-07-29 08:00 | Тимофеев В | 0.5h | 0.5h |
| 2680 | 12.1.9.9.6 | Осмотр редуктор-двигатель, нехороший шум, проверить втулки МУВП/заменить | 1h | 2026-09-23 09:00 A | 2026-09-23 10:00 A | 100% |  |  | start no earlier than 2026-09-23 09:00 | Бундин В; Некрасов А | 2h | 2h |
| 2681 | 12.1.9.9.7 | Чистка фильтра/тэны и термопары шнеков - протяжка | 30min | 2026-10-07 09:00 | 2026-10-07 09:30 |  |  | 110.53d | start no earlier than 2026-10-07 09:00 | Дедов В | 0.5h |  |
| 2682 | 12.1.9.10 | **блок тэнов сушки - протяжка** | 108.04d? | 2026-05-20 09:00 A | 2026-10-07 09:20 | 65% | 37.96d? | 110.55d |  |  | 12.33h | 8h |
| 2683 | 12.1.9.10.1 | ревизия, замена отгоревших жил, проверка токов | 3h | 2026-05-20 09:00 A | 2026-05-20 12:00 A | 100% |  |  | start no earlier than 2026-05-20 09:00 | Бобренок В | 3h | 3h |
| 2684 | 12.1.9.10.2 | ревизия, замена отгоревших жил, проверка токов | 4h? | 2026-09-11 09:00 | 2026-09-11 13:00 |  |  | 135.09d | start no earlier than 2026-09-11 09:00 | Тимофеев В | 4h |  |
| 2685 | 12.1.9.10.3 | Полное ТО шкафа управления, замена всех отгоревших жил/клемм, протяжка контактов | 5h | 2026-09-23 09:00 A | 2026-09-23 15:00 A | 100% |  |  | start no earlier than 2026-09-23 09:00 | Труфанов А | 5h | 5h |
| 2686 | 12.1.9.10.4 | Ревизия, проверка жил, проверка токов | 20min | 2026-10-07 09:00 | 2026-10-07 09:20 |  |  | 110.55d | start no earlier than 2026-10-07 09:00 | Дедов В | 0.33h |  |
| 2687 | 12.1.9.11 | **шкаф управления тэнами сушки** | 65.03d | 2026-05-20 09:00 A | 2026-08-19 09:15 | 83% | 10.84d | 153.56d |  |  | 1.5h | 1.25h |
| 2688 | 12.1.9.11.1 | протяжка контактов | 15min | 2026-05-20 09:00 A | 2026-05-20 09:15 A | 100% |  |  | start no earlier than 2026-05-20 09:00 | Бобренок В | 0.25h | 0.25h |
| 2689 | 12.1.9.11.2 | замена неисправных жил | 1h | 2026-05-20 09:00 A | 2026-05-20 10:00 A | 100% |  |  | start no earlier than 2026-05-20 09:00 | Бобренок В | 1h | 1h |
| 2690 | 12.1.9.11.3 | ревизия/ проверка токов | 15min | 2026-08-19 09:00 | 2026-08-19 09:15 |  |  | 153.56d | start no earlier than 2026-08-19 09:00 | Некрасов А | 0.25h |  |
| 2691 | 12.1.9.12 | конвейер №1 с печи в дрожировщик прорверка подшипники, реуктор | 30min | 2024-10-04 09:00 A | 2024-10-04 09:30 A | 100% |  |  | start no earlier than 2024-10-04 09:00 | Тимофеев В | 0.5h | 0.5h |
| 2692 | 12.1.9.13 | барабан смесительный дрожировка - прорверка подшипнки , реуктор | 30min | 2024-10-04 09:00 A | 2024-10-04 09:30 A | 100% |  |  | start no earlier than 2024-10-04 09:00 | Тимофеев В | 0.5h | 0.5h |
| 2693 | 12.1.9.14 | конвейер №2 с дрожировки в охладитель - проверка подшипники , редуктор | 30min | 2024-10-04 09:00 A | 2024-10-04 09:30 A | 100% |  |  | start no earlier than 2024-10-04 09:00 | Тимофеев В | 0.5h | 0.5h |
| 2694 | 12.1.9.15 | охладитель сеточный - смазка, натяжка цепи. Проверка редуктор | 1h | 2026-09-23 09:00 A | 2026-09-23 10:00 A | 100% |  |  | start no earlier than 2026-09-23 09:00 | Бундин В; Некрасов А | 2h | 2h |
| 2695 | 12.1.9.16 | вентиляторы обдува сушки | 2h | 2024-06-14 09:00 A | 2024-06-14 11:00 A | 100% |  |  | start no earlier than 2024-06-14 09:00 | ТО_2 | 2h | 2h |
| 2696 | 12.1.9.17 | дозатор сухой гидролизат - разборка, чистка, замена подшипников | 2h | 2026-08-20 09:00 A | 2026-08-20 11:00 A | 100% |  |  | start no earlier than 2026-08-20 09:00 | Макаревич А | 2h | 2h |
| 2697 | 12.1.9.18 | ревизия/ проверка токов/протяжка контактов | 15min | 2026-10-07 09:00 | 2026-10-07 09:15 |  |  | 110.56d | start no earlier than 2026-10-07 09:00 | Дедов В | 0.25h |  |

| ID | WBS | Task | Duration | Start | Finish | Complete | Remaining | Total slack | Constraint | Resources | Work | Actual work |
| --- | --- | --- | --- | --- | --- | --- | --- | --- | --- | --- | --- | --- |
| 2698 | 12.1.9.19 | **Насос гидролизата** | 85.06d | 2026-04-01 09:00 A | 2026-07-29 09:30 A | 100% |  |  |  |  | 1h | 1h |
| 2699 | 12.1.9.19.1 | Дефектовка - проверить подачу, вибрации, посторонние шумы. | 30min | 2026-04-01 09:00 A | 2026-04-01 09:30 A | 100% |  |  | start no earlier than 2026-04-01 09:00 | Тимофеев В | 0.5h | 0.5h |
| 2700 | 12.1.9.19.2 | Дефектовка - проверить подачу, вибрации, посторонние шумы. | 30min | 2026-07-29 08:00 A | 2026-07-29 09:30 A | 100% |  |  | start no earlier than 2026-07-29 08:00 | Тимофеев В | 0.5h | 0.5h |
| 2701 | 12.1.10 | **Квадропак** | 122.12d | 2026-04-22 09:00 A | 2026-09-30 10:00 A | 100% |  |  |  |  | 13.25h | 13.25h |
| 2702 | 12.1.10.1 | Установить дополнительные пружины на дозатор | 1h | 2026-09-30 09:00 A | 2026-09-30 10:00 A | 100% |  |  | start no earlier than 2026-09-30 09:00 | Труфанов А; Некрасов А | 2h | 2h |
| 2703 | 12.1.10.2 | проверить резьбу крепления встряхивателя №1, закрепить | 1h | 2026-06-02 09:00 A | 2026-06-02 10:00 A | 100% |  |  | start no earlier than 2026-06-02 09:00 | Макаревич А | 1h | 1h |
| 2704 | 12.1.10.3 | Замена резинки на воздушном редукторе находящемся под мультиголовой (весы) | 1h | 2026-04-22 09:00 A | 2026-04-22 10:00 A | 100% |  |  | start no earlier than 2026-04-22 09:00 | Бундин В | 1h | 1h |
| 2705 | 12.1.10.4 | ТО узла пайки. Чистка тен/ревизия термоизолятора пневморедуктора | 1h | 2026-05-27 09:00 A | 2026-05-27 10:00 A | 100% |  |  | start no earlier than 2026-05-27 09:00 | Тимофеев В | 1h | 1h |
| 2706 | 12.1.10.5 | ревизия привод встряхивателя | 30min | 2026-05-27 09:00 A | 2026-05-27 09:30 A | 100% |  |  | start no earlier than 2026-05-27 09:00 | Тимофеев В | 0.5h | 0.5h |
| 2707 | 12.1.10.6 | ревизия протяжки кинематики низ / верх | 30min | 2026-05-27 09:00 A | 2026-05-27 09:30 A | 100% |  |  | start no earlier than 2026-05-27 09:00 | Тимофеев В | 0.5h | 0.5h |
| 2708 | 12.1.10.7 | ревизия вакуумный насос | 15min | 2026-05-27 09:00 A | 2026-05-27 09:15 A | 100% |  |  | start no earlier than 2026-05-27 09:00 | Тимофеев В | 0.25h | 0.25h |
| 2709 | 12.1.10.8 | замена вал выход | 4h | 2026-06-15 09:00 A | 2026-06-15 13:00 A | 100% |  |  | start no earlier than 2026-06-15 09:00 | Тимофеев В | 4h | 4h |
| 2710 | 12.1.10.9 | проверить пневмоцилиндр на встряхивателе, если нужно заменить | 1h | 2026-05-20 09:00 A | 2026-05-20 10:00 A | 100% |  |  | start no earlier than 2026-05-20 09:00 | Некрасов А | 1h | 1h |
| 2711 | 12.1.10.10 | Закрепить, подровнять, слесарные работы которые требуются | 1h | 2026-09-30 09:00 A | 2026-09-30 10:00 A | 100% |  |  | start no earlier than 2026-09-30 09:00 | Труфанов А; Некрасов А | 2h | 2h |
| 2712 | 12.1.11 | **Парогенератор** | 6.25d | 2026-06-02 09:00 A | 2026-06-10 11:00 A | 100% |  |  |  |  | 3h | 3h |
| 2713 | 12.1.11.1 | читска парогенератора, если нужно замена электродов | 2h | 2026-06-10 09:00 A | 2026-06-10 11:00 A | 100% |  |  | start no earlier than 2026-06-10 09:00 | Дедов В | 2h | 2h |
| 2714 | 12.1.11.2 | читска парогенератора, если нужно замена электродов | 1h | 2026-06-02 09:00 A | 2026-06-02 10:00 A | 100% |  |  | start no earlier than 2026-06-02 09:00 | Тимофеев В | 1h | 1h |
| 2715 | 12.1.12 | **Дражжировка** | 37.03d | 2026-08-27 09:00 | 2026-10-07 09:15 |  |  | 110.56d |  |  | 2.67h |  |
| 2716 | 12.1.12.1 | Проверка подшипников на барабанах | 15min | 2026-08-27 09:00 | 2026-08-27 09:15 |  |  | 147.56d | start no earlier than 2026-08-27 09:00 | Тимофеев В | 0.25h |  |
| 2717 | 12.1.12.2 | Проверка фильтров | 10min | 2026-08-27 09:00 | 2026-08-27 09:10 |  |  | 147.57d | start no earlier than 2026-08-27 09:00 | Тимофеев В | 0.17h |  |
| 2718 | 12.1.12.3 | Ревизия насоса гидролизата | 2h | 2026-08-27 09:00 | 2026-08-27 11:00 |  |  | 147.34d | start no earlier than 2026-08-27 09:00 | Тимофеев В | 2h |  |
| 2719 | 12.1.12.4 | Дефектовка - проверить подачу, вибрации, посторонние шумы/проверка фильтров/насосов/фитингов | 15min | 2026-10-07 09:00 | 2026-10-07 09:15 |  |  | 110.56d | start no earlier than 2026-10-07 09:00 | Дедов В | 0.25h |  |
| 2720 | 12.1.13 | **жиротопка и насос перекачки жира** | 600.03d | 2024-04-10 09:00 A | 2026-07-29 09:15 | 25% | 450.02d | 168.56d |  |  | 1h | 0.25h |
| 2721 | 12.1.13.1 | блок тэнов -протяжка | 30min | 2024-04-10 09:00 | 2024-04-10 09:30 |  |  | 768.53d | start no earlier than 2024-04-10 08:00 | Тимофеев В | 0.5h |  |
| 2722 | 12.1.13.2 | насос, фильтр - осмотр, чистка | 15min | 2024-04-25 09:00 | 2024-04-25 09:15 |  |  | 757.56d | start no earlier than 2024-04-25 09:00 | Тимофеев В | 0.25h |  |
| 2723 | 12.1.13.3 | насос, фильтр - осмотр, чистка | 15min | 2026-07-29 09:00 A | 2026-07-29 09:15 A | 100% |  |  | start no earlier than 2026-07-29 08:00 | Труфанов А | 0.25h | 0.25h |

| ID | WBS | Task | Duration | Start | Finish | Complete | Remaining | Total slack | Constraint | Resources | Work | Actual work |
| --- | --- | --- | --- | --- | --- | --- | --- | --- | --- | --- | --- | --- |
| 2724 | 12.1.14 | **упаковщкики** | 436.25d | 2025-02-14 09:00 A | 2026-10-07 11:00 | 14% | 373.93d | 110.34d |  |  | 30h | 4h |
| 2725 | 12.1.14.1 | упаковщик ТЕКО 0,4кг | 2h | 2025-02-16 09:00 A | 2025-02-17 11:00 A | 100% |  |  | start no earlier than 2025-02-16 09:00 | Дедов В | 2h | 2h |
| 2726 | 12.1.14.2 | упаковщик ТЕКО 0,4кг | 2h | 2026-08-26 09:00 | 2026-08-26 11:00 |  |  | 148.34d | start no earlier than 2026-08-26 09:00 | Тимофеев В | 2h |  |
| 2727 | 12.1.14.3 | упаковщик НОТИС | 2h | 2025-02-17 09:00 | 2025-02-17 11:00 |  |  | 545.34d | start no earlier than 2025-02-16 09:00 | Дедов В | 2h |  |
| 2728 | 12.1.14.4 | упаковщик ТЕКО 1.5кг | 2h | 2025-02-17 09:00 | 2025-02-17 11:00 |  |  | 545.34d | start no earlier than 2025-02-16 09:00 | Дедов В | 2h |  |
| 2729 | 12.1.14.5 | упаковщик КВАДРОПАК | 2h | 2025-02-17 09:00 | 2025-02-17 11:00 |  |  | 545.34d | start no earlier than 2025-02-16 09:00 | Дедов В | 2h |  |
| 2730 | 12.1.14.6 | нория и вибробункер КВАДРОПАК | 2h | 2025-02-17 09:00 | 2025-02-17 11:00 |  |  | 545.34d | start no earlier than 2025-02-16 09:00 | Дедов В | 2h |  |
| 2731 | 12.1.14.7 | запайщик 1 | 2h | 2025-02-17 09:00 | 2025-02-17 11:00 |  |  | 545.34d | start no earlier than 2025-02-17 09:00 | Дедов В | 2h |  |
| 2732 | 12.1.14.8 | запайщик 2 | 2h | 2025-02-17 09:00 | 2025-02-17 11:00 |  |  | 545.34d | start no earlier than 2025-02-17 09:00 | Дедов В | 2h |  |
| 2733 | 12.1.14.9 | конвейер гп ТЕКО 1,5 | 2h | 2025-02-14 09:00 | 2025-02-14 11:00 |  |  | 546.34d | start no earlier than 2025-02-14 09:00 | Макаревич А | 2h |  |
| 2734 | 12.1.14.10 | конвейер гп ТЕКО 0,4 | 2h | 2025-02-14 09:00 | 2025-02-14 11:00 |  |  | 546.34d | start no earlier than 2025-02-14 09:00 | Макаревич А | 2h |  |
| 2735 | 12.1.14.11 | накопительный стол 1,5 | 2h | 2025-02-17 09:00 | 2025-02-17 11:00 |  |  | 545.34d | start no earlier than 2025-02-15 09:00 | Макаревич А | 2h |  |
| 2736 | 12.1.14.12 | накопительный стол 0,4 | 2h | 2025-02-17 09:00 | 2025-02-17 11:00 |  |  | 545.34d | start no earlier than 2025-02-15 09:00 | Макаревич А | 2h |  |
| 2737 | 12.1.14.13 | Осмотр всех упаковщиков/транспортеров/накопительных столов/ всех щитков оборудования | 2h | 2026-07-29 09:00 A | 2026-07-29 11:00 A | 100% |  |  | start no earlier than 2026-07-29 08:00 | Бундин В | 2h | 2h |
| 2738 | 12.1.14.14 | Осмотр всех упаковщиков/транспортеров/накопительных столов/ всех щитков оборудования | 2h | 2026-10-07 09:00 | 2026-10-07 11:00 |  |  | 110.34d | start no earlier than 2026-10-07 09:00 | Тимофеев В; Дедов В | 4h |  |
| 2739 | 12.1.15 | **электрооборудование** | 662.12d? | 2024-04-04 09:00 A | 2026-10-07 10:00 | 11% | 587.57d? | 110.47d |  | ТО | 5769.83h | 676h |
| 2740 | 12.1.15.1 | ВРУ1 | 15min | 2026-05-20 09:00 | 2026-05-20 09:15 |  |  | 218.56d | start no earlier than 2026-05-20 09:00 | ТО; Тимофеев В | 0.5h |  |
| 2741 | 12.1.15.2 | ВРУ2 | 15min | 2026-05-20 09:00 | 2026-05-20 09:15 |  |  | 218.56d | start no earlier than 2026-05-20 09:00 | ТО; Тимофеев В | 0.5h |  |
| 2742 | 12.1.15.3 | ЩР1 экструдер | 15min | 2026-05-20 09:00 | 2026-05-20 09:15 |  |  | 218.56d | start no earlier than 2026-05-20 09:00 | ТО; Тимофеев В | 0.5h |  |
| 2743 | 12.1.15.4 | ЩР2 упаковка №1 | 15min | 2026-05-20 09:00 | 2026-05-20 09:15 |  |  | 218.56d | start no earlier than 2026-05-20 09:00 | ТО; Тимофеев В | 0.5h |  |
| 2744 | 12.1.15.5 | ЩР3 упаковка №2 | 15min | 2026-05-20 09:00 | 2026-05-20 09:15 |  |  | 218.56d | start no earlier than 2026-05-20 09:00 | ТО; Тимофеев В | 0.5h |  |
| 2745 | 12.1.15.6 | ЩР жиротопка и зона жиров | 1h | 2026-05-20 09:00 | 2026-05-20 10:00 |  |  | 218.47d | start no earlier than 2026-05-20 09:00 | ТО; Некрасов А | 2h |  |
| 2746 | 12.1.15.7 | **Компрессор 1 цех** | 95.12d? | 2026-06-07 09:00 A | 2026-10-07 10:00 | 18% | 77.83d? | 110.47d |  | ТО | 756h | 112.4h |
| 2747 | 12.1.15.7.1 | продувка радиаторов осушителя и компрессора, слив конденсата | 1h | 2026-06-07 09:00 A | 2026-06-08 10:00 A | 100% |  |  | start no earlier than 2026-06-07 09:00 | Дедов В | 1h | 1h |
| 2748 | 12.1.15.7.2 | продувка радиаторов осушителя и компрессора, слив конденсата | 1h | 2026-10-07 09:00 | 2026-10-07 10:00 |  |  | 110.47d | start no earlier than 2026-10-07 09:00 | Дедов В | 1h |  |
| 2749 | 12.1.15.7.3 | продувка радиаторов осушителя и компрессора, слив конденсата | 1h | 2026-08-29 09:00 A | 2026-08-31 10:00 A | 100% |  |  | start no earlier than 2026-08-29 09:00 | Дедов В | 1h | 1h |
| 2750 | 12.1.15.7.4 | <Новая задача> | 1d? | 2026-08-28 09:00 | 2026-08-28 18:00 |  |  | 145.59d | start no earlier than 2026-08-28 08:00 |  |  |  |
| 2751 | 12.1.15.8 | осушитель 1 цех | 2h | 2024-04-04 09:00 | 2024-04-04 11:00 |  |  | 772.34d | start no earlier than 2023-12-28 09:00 | ТО | 2h |  |
| 2752 | 12.1.15.9 | осушитель 1 цех/слить конденсат | 30min | 2026-07-29 09:00 | 2026-07-29 09:30 |  |  | 168.53d | start no earlier than 2026-07-29 08:00 | Бундин В | 0.5h |  |
| 2753 | 12.1.15.10 | осушитель 1 цех/слить конденсат | 20min | 2026-10-07 09:00 | 2026-10-07 09:20 |  |  | 110.55d | start no earlier than 2026-10-07 09:00 | Дедов В | 0.33h |  |
| 2754 | 12.1.15.11 | бойлер 1 1 цех раковина | 2h | 2024-04-04 09:00 | 2024-04-04 11:00 |  |  | 772.34d | start no earlier than 2023-12-28 09:00 | ТО | 2h |  |
| 2755 | 12.1.15.12 | бойлер 2 1 цех раковина | 2h | 2024-04-04 09:00 | 2024-04-04 11:00 |  |  | 772.34d | start no earlier than 2023-12-28 09:00 | ТО | 2h |  |
| 2756 | 12.1.15.13 | бойлер 3 1 цех душ | 2h | 2024-04-04 09:00 | 2024-04-04 11:00 |  |  | 772.34d | start no earlier than 2023-12-28 09:00 | ТО | 2h |  |
| 2757 | 12.1.15.14 | насосная станция 1 цех | 2h | 2024-04-04 09:00 | 2024-04-04 11:00 |  |  | 772.34d | start no earlier than 2023-12-28 09:00 | ТО | 2h |  |
| 2758 | 12.1.15.15 | фильтр приточной вентиляции | 2h | 2024-04-04 09:00 | 2024-04-04 11:00 |  |  | 772.34d |  |  |  |  |
| 2759 | 12.1.15.16 | пульт управления вентиляцией, частототные приводы | 2h | 2024-04-04 09:00 | 2024-04-04 11:00 |  |  | 772.34d | start no earlier than 2023-12-28 09:00 | ТО | 2h |  |
| 2760 | 12.1.15.17 | кондиционер 1 продувка фильтров внутр / очистка наруж блок | 30min | 2026-06-02 09:00 A | 2026-06-02 09:30 A | 100% |  |  | start no earlier than 2026-06-02 09:00 | Некрасов А | 0.5h | 0.5h |
| 2761 | 12.1.15.18 | кондиционер 2 продувка фильтров внутр / очистка наруж блок | 30min | 2026-06-02 09:00 A | 2026-06-02 09:30 A | 100% |  |  | start no earlier than 2026-06-02 09:00 | Некрасов А | 0.5h | 0.5h |
| 2762 | 12.1.15.19 | кондиционер 3 продувка фильтров внутр / очистка наруж блок | 30min | 2026-06-02 09:00 A | 2026-06-02 09:30 A | 100% |  |  | start no earlier than 2026-06-02 09:00 | Некрасов А | 0.5h | 0.5h |
| 2763 | 12.1.15.20 | кондиционер 1 продувка фильтров внутр / очистка наруж блок (керхер взять у Мейхера) | 30min | 2026-06-10 09:00 | 2026-06-10 09:30 |  |  | 203.53d | start no earlier than 2026-06-10 09:00 | Некрасов А; Дедов В | 1h |  |
| 2764 | 12.1.15.21 | кондиционер 2 продувка фильтров внутр / очистка наруж блок (керхер взять у Мейхера) | 30min | 2026-06-10 09:00 | 2026-06-10 09:30 |  |  | 203.53d | start no earlier than 2026-06-10 09:00 | Некрасов А; Дедов В | 1h |  |
| 2765 | 12.1.15.22 | кондиционер 3 продувка фильтров внутр / очистка наруж блок (керхер взять у Мейхера) | 30min | 2026-06-10 09:00 | 2026-06-10 09:30 |  |  | 203.53d | start no earlier than 2026-06-10 09:00 | Некрасов А; Дедов В | 1h |  |
| 2766 | 12.1.16 | электроштабелер упаковка | 2h | 2023-12-28 09:00 | 2023-12-28 11:00 |  |  | 842.34d | start no earlier than 2023-12-28 09:00 | ТО | 2h |  |
| 2767 | 12.1.17 | электроштабелер навески | 2h | 2023-12-28 09:00 | 2023-12-28 11:00 |  |  | 842.34d | start no earlier than 2023-12-28 09:00 | ТО | 2h |  |

| ID | WBS | Task | Duration | Start | Finish | Complete | Remaining | Total slack | Constraint | Resources | Work | Actual work |
| --- | --- | --- | --- | --- | --- | --- | --- | --- | --- | --- | --- | --- |
| 2768 | 12.1.18 | **Квадропак** | 0.12d | 2026-10-07 09:00 | 2026-10-07 10:00 |  |  | 110.47d |  |  | 1h |  |
| 2769 | 12.1.18.1 | Смазка качающихся шарниров подачи пакета и сброса | 1h | 2026-10-07 09:00 | 2026-10-07 10:00 |  |  | 110.47d | start no earlier than 2026-10-07 09:00 | Тимофеев В | 1h |  |
| 2770 | 12.2 | **2 цех** | 772.25d? | 2023-12-28 09:00 A | 2026-12-02 11:00 | 68% | 248.78d? | 70.34d |  |  | 18380.8h | 15466.9h |
| 2771 | 12.2.1 | обдув пыли с вентиляции и балки кровли зона жир + экструдер + упаковка | 3h | 2026-08-20 09:00 A | 2026-08-20 12:00 A | 100% |  |  | start no earlier than 2026-08-20 09:00 | Некрасов А; Тимофеев В | 6h | 6h |
| 2772 | 12.2.2 | **прекондицинер экструдера** | 653.5d? | 2024-04-18 09:00 A | 2026-10-08 13:00 | 85% | 98.64d? | 109.09d |  |  | 34.5h | 22.5h |
| 2773 | 12.2.2.1 | замена заднего подшипника ведомый вал | 8h | 2026-05-26 09:00 A | 2026-05-26 18:00 A | 100% |  |  | start no earlier than 2026-05-26 09:00 | Тимофеев В | 8h | 8h |
| 2774 | 12.2.2.2 | замена подшипников | 1h | 2024-04-18 09:00 A | 2024-04-18 10:00 A | 100% |  |  | start no earlier than 2024-04-18 08:00 | Тимофеев В | 1h | 1h |
| 2775 | 12.2.2.3 | Ревизия масла редуктора | 30min | 2024-04-18 09:00 A | 2024-04-18 09:30 A | 100% |  |  | start no earlier than 2024-04-18 08:00 | Тимофеев В | 0.5h | 0.5h |
| 2776 | 12.2.2.4 | контроль крепления лопаток | 30min | 2026-05-21 09:00 A | 2026-05-21 09:30 A | 100% |  |  | start no earlier than 2026-03-05 09:00 | Тимофеев В | 0.5h | 0.5h |
| 2777 | 12.2.2.5 | шприцевание подшипников | 1h | 2026-05-21 08:00 A | 2026-05-21 10:00 A | 100% |  |  | start no earlier than 2026-05-21 08:00 | Тимофеев В | 1h | 1h |
| 2778 | 12.2.2.6 | Ревизия масла редуктора | 15min | 2026-07-21 09:00 A | 2026-07-21 09:15 A | 100% |  |  | start no earlier than 2026-07-21 09:00 | Труфанов А | 0.25h | 0.25h |
| 2779 | 12.2.2.7 | шприцевание подшипников | 30min | 2026-07-21 09:00 A | 2026-07-21 09:30 A | 100% |  |  | start no earlier than 2026-07-21 09:00 | Труфанов А | 0.5h | 0.5h |
| 2780 | 12.2.2.8 | Осмотр подшипников | 15min | 2026-07-30 09:00 A | 2026-07-30 09:15 A | 100% |  |  | start no earlier than 2026-07-30 09:00 | Тимофеев В | 0.25h | 0.25h |
| 2781 | 12.2.2.9 | Осмотр подшипников | 1d? | 2026-08-06 09:00 A | 2026-08-06 18:00 A | 100% |  |  | start no earlier than 2026-08-06 09:00 | Бундин В | 8h | 8h |
| 2782 | 12.2.2.10 | Осмотр подшипников / смазка / по необходимости замена | 1h | 2026-08-13 09:00 A | 2026-08-13 10:00 A | 100% |  |  | start no earlier than 2026-08-13 09:00 | Некрасов А | 1h | 1h |
| 2783 | 12.2.2.11 | Осмотр подшипников / смазка | 15min | 2026-08-20 09:00 A | 2026-08-20 09:15 A | 100% |  |  | start no earlier than 2026-08-20 09:00 | Некрасов А | 0.25h | 0.25h |
| 2784 | 12.2.2.12 | Замена водяного фильтра на прекондиционере/парогенератор | 15min | 2026-09-03 09:00 A | 2026-09-03 09:15 A | 100% |  |  | start no earlier than 2026-09-03 09:00 | Труфанов А | 0.25h | 0.25h |
| 2785 | 12.2.2.13 | Осмотр подшипников / смазка | 15min | 2026-09-17 09:00 A | 2026-09-17 09:15 A | 100% |  |  | start no earlier than 2026-09-17 09:00 | Некрасов А | 0.25h | 0.25h |
| 2786 | 12.2.2.14 | Осмотр подшипников / смазка | 15min | 2026-09-24 09:00 A | 2026-09-24 09:15 A | 100% |  |  | start no earlier than 2026-09-24 09:00 | Некрасов А | 0.25h | 0.25h |
| 2787 | 12.2.2.15 | Ревизия масла редуктора | 15min | 2026-09-24 09:00 A | 2026-09-24 09:15 A | 100% |  |  | start no earlier than 2026-09-24 09:00 | Некрасов А | 0.25h | 0.25h |
| 2788 | 12.2.2.16 | Ревизия масла редуктора/осмотр подшипников/ смазка при необходимости | 15min | 2026-09-29 09:00 A | 2026-09-29 09:15 A | 100% |  |  | start no earlier than 2026-09-29 08:00 | Бундин В | 0.25h | 0.25h |
| 2789 | 12.2.2.17 | Замена редуктора прекондиционера | 4h | 2026-10-08 09:00 | 2026-10-08 13:00 |  |  | 109.09d | start no earlier than 2026-10-08 09:00 | Труфанов А; Тимофеев В; Некрасов А | 12h |  |
| 2790 | 12.2.3 | **парогенератор** | 645d | 2024-04-18 10:00 A | 2026-09-29 10:00 | 95% | 34.86d | 117.47d |  |  | 18.5h | 18.5h |
| 2791 | 12.2.3.1 | читска | 1h | 2024-04-18 10:00 A | 2024-04-18 11:00 A | 100% |  |  | start no earlier than 2024-04-18 08:00 | Тимофеев В | 1h | 1h |
| 2792 | 12.2.3.2 | замена гильзы | 1h | 2024-04-18 10:00 A | 2024-04-18 11:00 A | 100% |  |  | start no earlier than 2024-04-18 08:00 | Тимофеев В | 1h | 1h |
| 2793 | 12.2.3.3 | чистка | 2h | 2026-03-05 09:30 A | 2026-03-05 11:30 A | 100% |  |  | start no earlier than 2026-03-04 09:00 | Бундин В | 2h | 2h |
| 2794 | 12.2.3.4 | прорвеп срабатывания защитного клапана | 10min | 2026-03-05 09:30 A | 2026-03-05 09:40 A | 100% |  |  | start no earlier than 2024-10-03 09:00 | Бундин В | 0.17h | 0.17h |
| 2795 | 12.2.3.5 | читска | 1h | 2026-03-19 09:00 A | 2026-03-19 10:00 A | 100% |  |  | start no earlier than 2026-03-19 09:00 | Тимофеев В | 1h | 1h |
| 2796 | 12.2.3.6 | чистка | 1h | 2026-03-12 09:00 A | 2026-03-12 10:00 A | 100% |  |  | start no earlier than 2026-03-12 09:00 | Бундин В; Тимофеев В | 2h | 2h |
| 2797 | 12.2.3.7 | чистка | 1h | 2026-05-14 09:00 A | 2026-05-14 10:00 A | 100% |  |  | start no earlier than 2026-05-14 09:00 | Некрасов А | 1h | 1h |
| 2798 | 12.2.3.8 | чистка | 2h | 2026-07-14 09:00 A | 2026-07-14 11:00 A | 100% |  |  | start no earlier than 2026-07-14 09:00 | Некрасов А | 2h | 2h |
| 2799 | 12.2.3.9 | Чистка | 1h | 2026-07-30 09:00 A | 2026-07-30 10:00 A | 100% |  |  | start no earlier than 2026-07-30 09:00 | Бундин В | 1h | 1h |
| 2800 | 12.2.3.10 | Чистка | 1h | 2026-08-06 09:00 A | 2026-08-06 10:00 A | 100% |  |  | start no earlier than 2026-08-06 09:00 | Тимофеев В | 1h | 1h |
| 2801 | 12.2.3.11 | Чистка | 1h | 2026-08-13 09:00 A | 2026-08-13 10:00 A | 100% |  |  | start no earlier than 2026-08-13 09:00 | Некрасов А | 1h | 1h |
| 2802 | 12.2.3.12 | Чистка | 1h | 2026-08-19 09:00 A | 2026-08-19 10:00 A | 100% |  |  | start no earlier than 2026-08-19 09:00 | Некрасов А | 1h | 1h |
| 2803 | 12.2.3.13 | Чистка | 1h | 2026-09-02 08:00 A | 2026-09-02 10:00 A | 100% |  |  | start no earlier than 2026-09-02 08:00 | Бобренок В | 1h | 1h |
| 2804 | 12.2.3.14 | Убрать грязь с парогенератора, привести в порядок внешний вид, где что отлеплено, прилепить | 20min | 2026-09-03 09:00 A | 2026-09-03 09:20 A | 100% |  |  | start no earlier than 2026-09-03 09:00 | Тимофеев В | 0.33h | 0.33h |
| 2805 | 12.2.3.15 | Чистка | 1h | 2026-09-09 09:00 A | 2026-09-09 10:00 A | 100% |  |  | start no earlier than 2026-09-09 08:00 | Тимофеев В | 1h | 1h |
| 2806 | 12.2.3.16 | Чистка | 1h | 2026-09-17 09:00 A | 2026-09-17 10:00 A | 100% |  |  | start no earlier than 2026-09-17 09:00 | Тимофеев В | 1h | 1h |
| 2807 | 12.2.3.17 | Чистка | 1h | 2026-09-23 09:00 A | 2026-09-23 10:00 A | 100% |  |  | start no earlier than 2026-09-23 09:00 | Дедов В | 1h | 1h |
| 2808 | 12.2.3.18 | Чистка | 1h | 2026-09-29 09:00 | 2026-09-29 10:00 |  |  | 117.47d | start no earlier than 2026-09-29 08:00 |  |  |  |

| ID | WBS | Task | Duration | Start | Finish | Predecessors | Complete | Remaining | Total slack | Constraint | Resources | Work | Actual work |
| --- | --- | --- | --- | --- | --- | --- | --- | --- | --- | --- | --- | --- | --- |
| 2809 | 12.2.4 | **привод сетки ПЕЧИ сушки** | 692.25d | 2024-04-18 08:00 A | 2026-12-02 11:00 |  | 84% | 111.25d | 70.34d |  |  | 8.83h | 7.83h |
| 2810 | 12.2.4.1 | прорверка масла редуктор / натяжка цепи/ ремень | 30min | 2024-04-18 08:00 A | 2024-04-18 09:30 A |  | 100% |  |  | start no earlier than 2024-04-18 08:00 | Тимофеев В | 0.5h | 0.5h |
| 2811 | 12.2.4.2 | прорверка масла редуктор / натяжка цепи/ ремень | 30min | 2026-03-05 09:00 A | 2026-03-05 09:30 A |  | 100% |  |  | start no earlier than 2026-03-05 09:00 | Тимофеев В | 0.5h | 0.5h |
| 2812 | 12.2.4.3 | прорверка масла редуктор / натяжка цепи/ ремень | 30min | 2026-03-19 09:00 A | 2026-03-19 09:30 A |  | 100% |  |  | start no earlier than 2026-03-19 09:00 | Тимофеев В | 0.5h | 0.5h |
| 2813 | 12.2.4.4 | прорверка масла редуктор / натяжка цепи/ ремень/осмотр сетки | 30min | 2026-07-14 09:00 A | 2026-07-14 09:30 A |  | 100% |  |  | start no earlier than 2026-07-14 09:00 | Труфанов А | 0.5h | 0.5h |
| 2814 | 12.2.4.5 | прорверка масла редуктор / натяжка цепи/ ремень/осмотр сетки | 30min | 2026-07-30 09:00 A | 2026-07-30 09:30 A |  | 100% |  |  | start no earlier than 2026-07-30 09:00 | Труфанов А | 0.5h | 0.5h |
| 2815 | 12.2.4.6 | прорверка масла редуктор / натяжка цепи/ ремень/осмотр сетки | 20min | 2026-08-13 09:00 A | 2026-08-13 09:20 A |  | 100% |  |  | start no earlier than 2026-08-13 09:00 | Некрасов А | 0.33h | 0.33h |
| 2816 | 12.2.4.7 | прорверка масла редуктор / натяжка цепи/ ремень/осмотр сетки | 20min | 2026-08-20 09:00 A | 2026-08-20 09:20 A |  | 100% |  |  | start no earlier than 2026-08-20 09:00 | Некрасов А | 0.33h | 0.33h |
| 2817 | 12.2.4.8 | прорверка масла редуктор / натяжка цепи/ ремень/осмотр сетки | 20min | 2026-08-20 09:00 A | 2026-08-20 09:20 A |  | 100% |  |  | start no earlier than 2026-08-20 09:00 | Некрасов А | 0.33h | 0.33h |
| 2818 | 12.2.4.9 | прорверка масла редуктор / натяжка цепи/ ремень/осмотр сетки | 20min | 2026-09-09 09:00 A | 2026-09-09 09:20 A |  | 100% |  |  | start no earlier than 2026-09-09 08:00 | Бобренок В | 0.33h | 0.33h |
| 2819 | 12.2.4.10 | ремонт шестерни привода - наварить | 1h | 2026-09-16 09:00 A | 2026-09-16 10:00 A |  | 100% |  |  | start no earlier than 2026-09-16 09:00 | Бундин В | 1h | 1h |
| 2820 | 12.2.4.11 | смазка цепей пищ смазкой | 1h | 2026-09-16 09:00 A | 2026-09-16 10:00 A |  | 100% |  |  | start no earlier than 2026-09-16 09:00 | Бобренок В | 1h | 1h |
| 2821 | 12.2.4.12 | Снятие шестерен привода (отнести домоводову) | 2h | 2026-09-17 09:00 A | 2026-09-17 11:00 A |  | 100% |  |  | start no earlier than 2026-09-17 09:00 | Труфанов А | 2h | 2h |
| 2822 | 12.2.4.13 | смазка цепей пищ смазкой по графику 3 мес | 1h | 2026-12-02 10:00 | 2026-12-02 11:00 | 2820FS+3mo |  |  | 70.34d | start no earlier than 2026-09-16 09:00 | Бобренок В | 1h |  |
| 2823 | 12.2.4.14 | прорверка масла редуктор / натяжка цепи/ ремень/осмотр сетки | 30min | 2026-09-29 09:00 | 2026-09-29 09:30 |  |  |  | 117.53d | start no earlier than 2026-09-29 08:00 |  |  |  |
| 2824 | 12.2.5 | **блок тэнов сушки** | 645.12d | 2024-04-18 08:00 A | 2026-09-29 10:00 |  | 89% | 71.68d | 117.47d |  |  | 12h | 12h |
| 2825 | 12.2.5.1 | вскрыть все блоки | 1h | 2024-04-18 08:00 A | 2024-04-18 10:00 A |  | 100% |  |  | start no earlier than 2024-04-18 08:00 | Тимофеев В | 1h | 1h |
| 2826 | 12.2.5.2 | ревизия / замена критичных | 4h | 2024-04-18 09:00 A | 2024-04-18 13:00 A |  | 100% |  |  | start no earlier than 2024-04-18 08:00 | Некрасов А; Черепанов И | 8h | 8h |
| 2827 | 12.2.5.3 | ревизия | 1h | 2026-03-19 09:00 A | 2026-03-19 10:00 A |  | 100% |  |  | start no earlier than 2026-03-19 09:00 | Бундин В | 1h | 1h |
| 2828 | 12.2.5.4 | ревизия | 1h | 2026-05-14 09:00 A | 2026-05-14 10:00 A |  | 100% |  |  | start no earlier than 2026-05-14 09:00 | Труфанов А | 1h | 1h |
| 2829 | 12.2.5.5 | ревизия перемычек | 1h | 2026-08-13 09:00 A | 2026-08-13 10:00 A |  | 100% |  |  | start no earlier than 2026-08-13 09:00 | Некрасов А | 1h | 1h |
| 2830 | 12.2.5.6 | ревизия перемычек | 1h | 2026-09-29 09:00 | 2026-09-29 10:00 |  |  |  | 117.47d | start no earlier than 2026-09-29 08:00 |  |  |  |
| 2831 | 12.2.6 | **смеситель СМ-1500** | 155.02d | 2026-03-05 09:00 A | 2026-09-29 09:10 A |  | 100% |  |  |  |  | 7.33h | 7.33h |
| 2832 | 12.2.6.1 | контроль масла | 15min | 2026-03-05 09:00 A | 2026-03-05 09:15 A |  | 100% |  |  | start no earlier than 2026-03-05 09:00 | Тимофеев В | 0.25h | 0.25h |
| 2833 | 12.2.6.2 | контроль масла | 15min | 2026-03-05 09:00 A | 2026-03-05 09:15 A |  | 100% |  |  | start no earlier than 2026-03-05 09:00 | Некрасов А | 0.25h | 0.25h |
| 2834 | 12.2.6.3 | замена сальника | 4h | 2026-04-16 09:00 A | 2026-04-16 13:00 A |  | 100% |  |  | start no earlier than 2026-04-16 09:00 | Тимофеев В | 4h | 4h |
| 2835 | 12.2.6.4 | контроль масла | 15min | 2026-07-30 09:00 A | 2026-07-30 09:15 A |  | 100% |  |  | start no earlier than 2026-07-30 09:00 | Тимофеев В | 0.25h | 0.25h |
| 2836 | 12.2.6.5 | ревизия подшипникой красного смесителя, просыпается мука со стороны редуктора | 1h | 2026-08-13 09:00 A | 2026-08-13 10:00 A |  | 100% |  |  | start no earlier than 2026-08-13 09:00 | Тимофеев В | 1h | 1h |
| 2837 | 12.2.6.6 | ревизия подшипникой красного смесителя, просыпается мука со стороны редуктора | 1h | 2026-08-27 09:00 A | 2026-08-27 10:00 A |  | 100% |  |  | start no earlier than 2026-08-27 09:00 | Тимофеев В | 1h | 1h |
| 2838 | 12.2.6.7 | контроль масла | 15min | 2026-09-03 09:00 A | 2026-09-03 09:15 A |  | 100% |  |  | start no earlier than 2026-09-03 09:00 | Тимофеев В | 0.25h | 0.25h |
| 2839 | 12.2.6.8 | контроль масла | 10min | 2026-09-09 09:00 A | 2026-09-09 09:10 A |  | 100% |  |  | start no earlier than 2026-09-09 08:00 | Бобренок В | 0.17h | 0.17h |
| 2840 | 12.2.6.9 | Осмотр подшипников/контроль масла | 10min | 2026-09-29 09:00 A | 2026-09-29 09:10 A |  | 100% |  |  | start no earlier than 2026-09-29 09:00 | Бундин В | 0.17h | 0.17h |

| ID | WBS | Task | Duration | Start | Finish | Complete | Constraint | Resources | Work | Actual work |
| --- | --- | --- | --- | --- | --- | --- | --- | --- | --- | --- |
| 2841 | 12.2.7 | **нория 2 выгрузки смесителя** | 150.5d | 2026-03-05 09:00 A | 2026-09-24 13:00 A | 100% |  | ТО | 66.58h | 66.58h |
| 2842 | 12.2.7.1 | смазка подшипников | 30min | 2026-03-05 09:00 A | 2026-03-05 09:30 A | 100% | start no earlier than 2026-03-05 09:00 | Бундин В | 0.5h | 0.5h |
| 2843 | 12.2.7.2 | Осмотр подшипников/смазка по необходимости | 30min | 2026-07-30 09:00 A | 2026-07-30 09:30 A | 100% | start no earlier than 2026-07-30 09:00 | Бундин В | 0.5h | 0.5h |
| 2844 | 12.2.7.3 | ревизия крепления редуктора | 15min | 2026-03-05 09:00 A | 2026-03-05 09:15 A | 100% | start no earlier than 2026-03-05 09:00 | Бундин В | 0.25h | 0.25h |
| 2845 | 12.2.7.4 | ревизия ленты, обрезать нитки | 4h | 2026-03-26 09:00 A | 2026-03-26 13:00 A | 100% | start no earlier than 2026-03-26 09:00 | Тимофеев В | 4h | 4h |
| 2846 | 12.2.7.5 | вскрыть для чистки | 10min | 2026-05-19 09:00 A | 2026-05-19 09:10 A | 100% | start no earlier than 2026-05-21 09:00 | Труфанов А | 0.17h | 0.17h |
| 2847 | 12.2.7.6 | Вскрыть, осмотреть ленту (держится на одном ковше, закрепили на доп болты) | 30min | 2026-09-03 09:00 A | 2026-09-03 09:30 A | 100% | start no earlier than 2026-09-03 09:00 | Тимофеев В | 0.5h | 0.5h |
| 2848 | 12.2.7.7 | вскрыть для чистки, осмотреть ленту, закрыить после чистки | 10min | 2026-08-13 09:00 A | 2026-08-13 09:10 A | 100% | start no earlier than 2026-08-13 09:00 | Труфанов А | 0.17h | 0.17h |
| 2849 | 12.2.7.8 | Ревизия ленты, контроль соединения | 30min | 2026-09-17 09:00 A | 2026-09-17 09:30 A | 100% | start no earlier than 2026-09-17 09:00 | Тимофеев В | 0.5h | 0.5h |
| 2850 | 12.2.7.9 | ремонт стыка ленты - ревитзия, ремонт продлить | 4h | 2026-09-24 09:00 A | 2026-09-24 13:00 A | 100% | start no earlier than 2026-09-24 09:00 | Тимофеев В; Бундин В | 8h | 8h |
| 2851 | 12.2.8 | **бункер-накопитель с шнековой разкгрузкой синий** | 100.12d | 2026-05-14 09:00 A | 2026-09-24 10:00 A | 100% |  |  | 10.17h | 10.17h |
| 2852 | 12.2.8.1 | смазка подшипников, ревизия редуктора (нужно разбирать все для смазки). Задний | 4h | 2026-05-14 09:00 A | 2026-05-14 13:00 A | 100% | start no earlier than 2026-05-14 09:00 | Тимофеев В | 4h | 4h |
| 2853 | 12.2.8.2 | смазка подшипников, ревизия редуктора (нужно разбирать все для смазки). Передний | 4h | 2026-05-28 09:00 A | 2026-05-28 13:00 A | 100% | start no earlier than 2026-05-28 09:00 | Бундин В | 4h | 4h |
| 2854 | 12.2.8.3 | Осмотр редуктора со стороны мойки, скрипит | 1h | 2026-08-13 09:00 A | 2026-08-13 10:00 A | 100% | start no earlier than 2026-08-13 09:00 | Тимофеев В | 1h | 1h |
| 2855 | 12.2.8.4 | Осмотр | 5min | 2026-09-03 09:00 A | 2026-09-03 09:05 A | 100% | start no earlier than 2026-09-03 09:00 | Тимофеев В | 0.08h | 0.08h |
| 2856 | 12.2.8.5 | перенос датчика / доработать лопатки - что бы останавливался раньше, без спресовывания шнеком | 1h | 2026-09-24 09:00 A | 2026-09-24 10:00 A | 100% | start no earlier than 2026-09-24 09:00 | Труфанов А | 1h | 1h |
| 2857 | 12.2.8.6 | Осмотр | 5min | 2026-09-24 09:00 A | 2026-09-24 09:05 A | 100% | start no earlier than 2026-09-24 09:00 | Труфанов А | 0.08h | 0.08h |
| 2858 | 12.2.9 | **питатель экструдера** | 140.12d | 2026-03-26 09:00 A | 2026-09-29 10:00 A | 100% |  |  | 22h | 22h |
| 2859 | 12.2.9.1 | замена сальников питателя, сыпит муку | 4h | 2026-07-22 09:00 A | 2026-07-22 13:00 A | 100% | start no earlier than 2026-07-22 09:00 | Труфанов А | 4h | 4h |
| 2860 | 12.2.9.2 | ревизия подшипников, редутора, привода. Разборка/сборка (нужно разбирать) | 1h | 2026-03-26 09:00 A | 2026-03-26 10:00 A | 100% | start no earlier than 2026-03-26 09:00 | Тимофеев В | 1h | 1h |
| 2861 | 12.2.9.3 | ревизия подшипников, редутора, привода. Разборка/сборка (нужно разбирать) | 1h | 2026-08-19 09:00 A | 2026-08-19 10:00 A | 100% | start no earlier than 2026-08-19 09:00 | Тимофеев В | 1h | 1h |
| 2862 | 12.2.9.4 | замена шетсерен и подшипников узла. Поставили новый комплект | 4h | 2026-04-03 08:00 A | 2026-04-03 13:00 A | 100% | start no earlier than 2026-04-03 08:00 | Тимофеев В | 4h | 4h |
| 2863 | 12.2.9.5 | ревизия шестерни мал редуктора | 1h | 2026-04-16 09:00 A | 2026-04-16 10:00 A | 100% | start no earlier than 2026-04-16 09:00 | Тимофеев В | 1h | 1h |
| 2864 | 12.2.9.6 | ревизия шестерни мал редуктора | 2h | 2026-08-13 09:00 A | 2026-08-13 11:00 A | 100% | start no earlier than 2026-08-13 09:00 | Некрасов А; Зорькин В | 4h | 4h |
| 2865 | 12.2.9.7 | ревизия шестерни мал редуктора | 2h | 2026-08-27 09:00 A | 2026-08-27 11:00 A | 100% | start no earlier than 2026-08-27 09:00 | Некрасов А; Зорькин В | 4h | 4h |
| 2866 | 12.2.9.8 | ревизия шестерен питателя | 1h | 2026-09-03 09:00 A | 2026-09-03 10:00 A | 100% | start no earlier than 2026-09-03 09:00 | Некрасов А | 1h | 1h |
| 2867 | 12.2.9.9 | Ревизия шестерен и подшипников | 1h | 2026-09-17 09:00 A | 2026-09-17 10:00 A | 100% | start no earlier than 2026-09-17 09:00 | Тимофеев В | 1h | 1h |
| 2868 | 12.2.9.10 | Ревизия шестерен и подшипников | 1h | 2026-09-29 09:00 A | 2026-09-29 10:00 A | 100% | start no earlier than 2026-09-29 09:00 | Бундин В | 1h | 1h |

| ID | WBS | Task | Duration | Start | Finish | Predecessors | Complete | Remaining | Total slack | Constraint | Resources | Work | Actual work |
| --- | --- | --- | --- | --- | --- | --- | --- | --- | --- | --- | --- | --- | --- |
| 2869 | 12.2.10 | **привод прекондиционера** | 155.04d | 2026-03-05 09:00 A | 2026-09-29 09:20 A |  | 100% |  |  |  |  | 9.83h | 9.83h |
| 2870 | 12.2.10.1 | проверка масла | 5min | 2026-03-05 09:00 A | 2026-03-05 09:05 A |  | 100% |  |  | start no earlier than 2026-03-05 09:00 | Тимофеев В | 0.08h | 0.08h |
| 2871 | 12.2.10.2 | контроль крепления шестерен | 5min | 2026-03-05 09:00 A | 2026-03-05 09:05 A |  | 100% |  |  | start no earlier than 2026-03-05 09:00 | Тимофеев В | 0.08h | 0.08h |
| 2872 | 12.2.10.3 | ревизия подшипников и стопорных винтов | 30min | 2026-03-05 09:00 A | 2026-03-05 09:30 A |  | 100% |  |  | start no earlier than 2026-03-05 09:00 | Бундин В | 0.5h | 0.5h |
| 2873 | 12.2.10.4 | Осмотр шестерён(стоит звон), подшипников, сальников | 30min | 2026-09-03 09:00 A | 2026-09-03 09:30 A |  | 100% |  |  | start no earlier than 2026-09-03 09:00 | Тимофеев В | 0.5h | 0.5h |
| 2874 | 12.2.10.5 | Замена подшипников кореных и передних | 4h | 2026-09-09 09:00 A | 2026-09-09 13:00 A |  | 100% |  |  | start no earlier than 2026-09-09 08:00 | Труфанов А; Некрасов А | 8h | 8h |
| 2875 | 12.2.10.6 | Осмотр подшипников, муфты, шестерен | 20min | 2026-09-17 09:00 A | 2026-09-17 09:20 A |  | 100% |  |  | start no earlier than 2026-09-17 09:00 | Некрасов А | 0.33h | 0.33h |
| 2876 | 12.2.10.7 | Осмотр подшипников, муфты, шестерен | 20min | 2026-09-29 09:00 A | 2026-09-29 09:20 A |  | 100% |  |  | start no earlier than 2026-09-29 08:00 | Бундин В | 0.33h | 0.33h |
| 2877 | 12.2.11 | **мотор-редуктор привод шнеков** | 35.02d | 2026-08-20 09:00 A | 2026-09-29 09:10 |  | 29% | 24.72d | 117.57d |  |  | 2.83h | 0.83h |
| 2878 | 12.2.11.1 | замена масла | 2h | 2026-08-20 09:00 | 2026-08-20 11:00 |  |  |  | 152.34d | start no earlier than 2026-08-20 09:00 | Тимофеев В | 2h |  |
| 2879 | 12.2.11.2 | Проверка масла (долил уровень) | 10min | 2026-09-03 09:00 A | 2026-09-03 09:10 A |  | 100% |  |  | start no earlier than 2026-09-03 09:00 | Труфанов А | 0.17h | 0.17h |
| 2880 | 12.2.11.3 | Проверка масла | 10min | 2026-09-09 09:00 A | 2026-09-09 09:10 A |  | 100% |  |  | start no earlier than 2026-09-09 08:00 | Бобренок В | 0.17h | 0.17h |
| 2881 | 12.2.11.4 | Проверка масла | 10min | 2026-09-17 09:00 A | 2026-09-17 09:10 A |  | 100% |  |  | start no earlier than 2026-09-17 09:00 | Некрасов А | 0.17h | 0.17h |
| 2882 | 12.2.11.5 | Проверка масла | 10min | 2026-09-24 09:00 A | 2026-09-24 09:10 A |  | 100% |  |  | start no earlier than 2026-09-24 09:00 | Некрасов А | 0.17h | 0.17h |
| 2883 | 12.2.11.6 | Проверка масла | 10min | 2026-09-29 09:00 A | 2026-09-29 09:10 A |  | 100% |  |  | start no earlier than 2026-09-29 08:00 | Бундин В | 0.17h | 0.17h |
| 2884 | 12.2.12 | **редуктор шнеков экструдера - проверка масла** | 428.03d | 2025-02-17 09:00 A | 2026-09-29 09:15 A |  | 100% |  |  |  |  | 5.67h | 5.67h |
| 2885 | 12.2.12.1 | чистка фильтра редуктора | 15min | 2026-03-05 09:00 A | 2026-03-05 09:15 A |  | 100% |  |  | start no earlier than 2026-03-05 09:00 | Тимофеев В | 0.25h | 0.25h |
| 2886 | 12.2.12.2 | контоль цепи муфты привода | 5min | 2026-03-05 09:15 A | 2026-03-05 09:20 A | 2885, 2887, 2888, 2890, 2894, 2895 | 100% |  |  | start no earlier than 2026-03-04 08:00 | Тимофеев В | 0.08h | 0.08h |
| 2887 | 12.2.12.3 | чистка фильтра редуктора | 15min | 2026-03-19 09:00 A | 2026-03-19 09:15 A |  | 100% |  |  | start no earlier than 2026-03-19 09:00 | Тимофеев В | 0.25h | 0.25h |
| 2888 | 12.2.12.4 | чистка фильтра редуктора | 15min | 2026-06-18 09:00 A | 2026-06-18 09:15 A |  | 100% |  |  | start no earlier than 2026-06-18 09:00 | Тимофеев В | 0.25h | 0.25h |
| 2889 | 12.2.12.5 | чистка фильтра редуктора | 30min | 2026-08-06 08:00 A | 2026-08-06 09:30 A |  | 100% |  |  | start no earlier than 2026-08-06 08:00 | Тимофеев В | 0.5h | 0.5h |
| 2890 | 12.2.12.6 | чистка фильтра редуктора | 15min | 2026-07-14 09:00 A | 2026-07-14 09:15 A |  | 100% |  |  | start no earlier than 2026-07-14 09:00 | Бундин В | 0.25h | 0.25h |
| 2891 | 12.2.12.7 | тэны и термпоры шнеков | 2h | 2025-02-17 09:00 A | 2025-02-17 11:00 A |  | 100% |  |  | start no earlier than 2025-02-17 09:00 | Дедов В | 2h | 2h |
| 2892 | 12.2.12.8 | проверка масла | 5min | 2026-08-06 09:00 A | 2026-08-06 09:05 A |  | 100% |  |  | start no earlier than 2026-08-06 09:00 | Тимофеев В | 0.08h | 0.08h |
| 2893 | 12.2.12.9 | Проверка масла | 10min | 2026-07-30 09:00 A | 2026-07-30 09:10 A |  | 100% |  |  | start no earlier than 2026-07-30 09:00 | Бундин В | 0.17h | 0.17h |
| 2894 | 12.2.12.10 | чистка фильтра редуктора | 15min | 2026-08-13 09:00 A | 2026-08-13 09:15 A |  | 100% |  |  | start no earlier than 2026-08-13 09:00 | Тимофеев В | 0.25h | 0.25h |
| 2895 | 12.2.12.11 | чистка фильтра редуктора | 15min | 2026-08-20 09:00 A | 2026-08-20 09:15 A |  | 100% |  |  | start no earlier than 2026-08-20 09:00 | Тимофеев В | 0.25h | 0.25h |
| 2896 | 12.2.12.12 | Чистка фильтра | 15min | 2026-09-03 09:00 A | 2026-09-03 09:15 A |  | 100% |  |  | start no earlier than 2026-09-03 09:00 | Труфанов А | 0.25h | 0.25h |
| 2897 | 12.2.12.13 | Чистка фильтра | 15min | 2026-09-09 09:00 A | 2026-09-09 09:15 A |  | 100% |  |  | start no earlier than 2026-09-09 08:00 | Бобренок В | 0.25h | 0.25h |
| 2898 | 12.2.12.14 | Проверка масла | 5min | 2026-09-09 09:00 A | 2026-09-09 09:05 A |  | 100% |  |  | start no earlier than 2026-09-09 08:00 | Бобренок В | 0.08h | 0.08h |
| 2899 | 12.2.12.15 | Проверка масла/чистка фильтра | 15min | 2026-09-17 09:00 A | 2026-09-17 09:15 A |  | 100% |  |  | start no earlier than 2026-09-17 09:00 | Некрасов А | 0.25h | 0.25h |
| 2900 | 12.2.12.16 | Чистка фильтра | 15min | 2026-09-24 09:00 A | 2026-09-24 09:15 A |  | 100% |  |  | start no earlier than 2026-09-24 09:00 | Некрасов А | 0.25h | 0.25h |
| 2901 | 12.2.12.17 | Чистка фильтра | 15min | 2026-09-29 09:00 A | 2026-09-29 09:15 A |  | 100% |  |  | start no earlier than 2026-09-29 08:00 | Бундин В | 0.25h | 0.25h |

| ID | WBS | Task | Duration | Start | Finish | Predecessors | Complete | Remaining | Total slack | Constraint | Resources | Work | Actual work |
| --- | --- | --- | --- | --- | --- | --- | --- | --- | --- | --- | --- | --- | --- |
| 2902 | 12.2.13 | **шкаф управления экструдером** | 155.02d | 2026-03-05 09:00 A | 2026-09-29 09:10 A |  | 100% |  |  |  |  | 1.67h | 1.67h |
| 2903 | 12.2.13.1 | продувка частотного привода | 10min | 2026-03-05 09:00 A | 2026-03-05 09:10 A |  | 100% |  |  | start no earlier than 2026-03-05 09:00 | Труфанов А | 0.17h | 0.17h |
| 2904 | 12.2.13.2 | продувка частотного привода | 10min | 2026-08-06 09:00 A | 2026-08-06 09:10 A |  | 100% |  |  | start no earlier than 2026-08-06 09:00 | Бундин В | 0.17h | 0.17h |
| 2905 | 12.2.13.3 | уложить и закрепить провода | 5min | 2026-03-05 09:10 A | 2026-03-05 09:15 A | 2903, 2904, 2907, 2908, 2909, 2910 | 100% |  |  | start no earlier than 2026-03-04 08:00 | Труфанов А | 0.08h | 0.08h |
| 2906 | 12.2.13.4 | протяжка контактов | 5min | 2026-03-05 09:15 A | 2026-03-05 09:20 A | 2905 | 100% |  |  | start no earlier than 2026-03-04 08:00 | Труфанов А | 0.08h | 0.08h |
| 2907 | 12.2.13.5 | продувка частотного привода | 10min | 2026-03-19 09:00 A | 2026-03-19 09:10 A |  | 100% |  |  | start no earlier than 2026-03-19 09:00 | Дедов В | 0.17h | 0.17h |
| 2908 | 12.2.13.6 | продувка частотного привода | 10min | 2026-05-14 09:00 A | 2026-05-14 09:10 A |  | 100% |  |  | start no earlier than 2026-05-14 09:00 | Макаревич А | 0.17h | 0.17h |
| 2909 | 12.2.13.7 | продувка частотного привода | 10min | 2026-08-13 09:00 A | 2026-08-13 09:10 A |  | 100% |  |  | start no earlier than 2026-08-13 09:00 | Некрасов А | 0.17h | 0.17h |
| 2910 | 12.2.13.8 | продувка частотного привода | 10min | 2026-08-20 09:00 A | 2026-08-20 09:10 A |  | 100% |  |  | start no earlier than 2026-08-20 09:00 | Дедов В | 0.17h | 0.17h |
| 2911 | 12.2.13.9 | продувка частотного привода | 10min | 2026-09-03 09:00 A | 2026-09-03 09:10 A |  | 100% |  |  | start no earlier than 2026-09-03 09:00 | Труфанов А | 0.17h | 0.17h |
| 2912 | 12.2.13.10 | продувка частотного привода | 10min | 2026-09-17 09:00 A | 2026-09-17 09:10 A |  | 100% |  |  | start no earlier than 2026-09-17 09:00 | Некрасов А | 0.17h | 0.17h |
| 2913 | 12.2.13.11 | продувка частотного привода | 10min | 2026-09-29 09:00 A | 2026-09-29 09:10 A |  | 100% |  |  | start no earlier than 2026-09-29 09:00 | Бундин В | 0.17h | 0.17h |
| 2914 | 12.2.14 | **пневотранспорт роторный питатель** | 140.04d | 2026-03-19 09:00 A | 2026-09-24 09:20 |  | 52% | 67.22d | 122.55d |  |  | 6.17h | 2.17h |
| 2915 | 12.2.14.1 | замена на ЗИП / вывод на ремонт промывку | 2h | 2026-06-25 09:00 | 2026-06-25 11:00 |  |  |  | 192.34d | start no earlier than 2026-06-25 09:00 | Труфанов А; Некрасов А | 4h |  |
| 2916 | 12.2.14.2 | проверка масла - высок температурная смазка | 1h | 2026-03-19 09:00 A | 2026-03-19 10:00 A |  | 100% |  |  | start no earlier than 2026-03-19 09:00 | Труфанов А | 1h | 1h |
| 2917 | 12.2.14.3 | Ревизия узлов/масла | 30min | 2026-07-30 09:00 A | 2026-07-30 09:30 A |  | 100% |  |  | start no earlier than 2026-07-30 09:00 | Труфанов А | 0.5h | 0.5h |
| 2918 | 12.2.14.4 | Ревизия узлов/масла (смазку свежую набил) | 20min | 2026-09-03 09:00 A | 2026-09-03 09:20 A |  | 100% |  |  | start no earlier than 2026-09-03 09:00 | Труфанов А | 0.33h | 0.33h |
| 2919 | 12.2.14.5 | Ревизия узлов/масла. Очистка мотора от пыли | 20min | 2026-09-24 09:00 A | 2026-09-24 09:20 A |  | 100% |  |  | start no earlier than 2026-09-24 09:00 | Бундин В | 0.33h | 0.33h |
| 2920 | 12.2.15 | **печь - валы этажей, подшипники, цепи** | 147.12d | 2026-03-19 09:00 A | 2026-10-01 10:00 |  | 83% | 24.52d | 115.47d |  |  | 6h | 5h |
| 2921 | 12.2.15.1 | осмотр смазка | 30min | 2026-03-19 09:00 A | 2026-03-19 09:30 A |  | 100% |  |  | start no earlier than 2026-03-19 09:00 | Тимофеев В | 0.5h | 0.5h |
| 2922 | 12.2.15.2 | осмотр смазка сетки | 2h | 2026-05-14 09:00 A | 2026-05-14 11:00 A |  | 100% |  |  | start no earlier than 2026-05-14 09:00 | Макаревич А | 2h | 2h |
| 2923 | 12.2.15.3 | натяжка цепей | 30min | 2026-08-13 09:00 A | 2026-08-13 09:30 A |  | 100% |  |  | start no earlier than 2026-08-13 09:00 | Некрасов А | 0.5h | 0.5h |
| 2924 | 12.2.15.4 | натяжка цепей, контроль привода | 30min | 2026-09-03 09:00 A | 2026-09-03 09:30 A |  | 100% |  |  | start no earlier than 2026-09-03 09:00 | Труфанов А | 0.5h | 0.5h |
| 2925 | 12.2.15.5 | Контроль редуктора, осмотр, проверка масла | 30min | 2026-09-17 09:00 A | 2026-09-17 09:30 A |  | 100% |  |  | start no earlier than 2026-09-17 09:00 | Труфанов А | 0.5h | 0.5h |
| 2926 | 12.2.15.6 | Контроль редуктора, осмотр, проверка масла | 30min | 2026-09-24 09:00 A | 2026-09-24 09:30 A |  | 100% |  |  | start no earlier than 2026-09-24 09:00 | Некрасов А | 0.5h | 0.5h |
| 2927 | 12.2.15.7 | Смазка всех цепей (если не смазаны) | 1h | 2026-10-01 09:00 | 2026-10-01 10:00 |  |  |  | 115.47d | start no earlier than 2026-10-01 09:00 | Бобренок В | 1h |  |
| 2928 | 12.2.15.8 | Контроль редуктора, осмотр, проверка масла | 30min | 2026-09-29 09:00 A | 2026-09-29 09:30 A |  | 100% |  |  | start no earlier than 2026-09-29 08:00 | Бундин В | 0.5h | 0.5h |

| ID | WBS | Task | Duration | Start | Finish | Complete | Remaining | Total slack | Constraint | Resources | Work | Actual work |
| --- | --- | --- | --- | --- | --- | --- | --- | --- | --- | --- | --- | --- |
| 2929 | 12.2.16 | **вентиляторы обдува сушки** | 150.25d? | 2026-03-05 09:00 A | 2026-09-24 11:00 | 20% | 120.2d? | 122.34d |  | ТО | 1206h | 12h |
| 2930 | 12.2.16.1 | чистка крыльчатки | 1d? | 2026-03-05 09:00 | 2026-03-05 18:00 |  |  | 271.59d | start no earlier than 2026-03-05 09:00 |  |  |  |
| 2931 | 12.2.16.2 | замена подшипников | 1d? | 2026-03-05 09:00 | 2026-03-05 18:00 |  |  | 271.59d | start no earlier than 2026-03-05 09:00 |  |  |  |
| 2932 | 12.2.16.3 | Осмотр, чистка | 2h | 2026-09-17 09:00 A | 2026-09-17 11:00 A | 100% |  |  | start no earlier than 2026-09-17 09:00 | Бобренок В | 2h | 2h |
| 2933 | 12.2.16.4 | Осмотр, очистка от пыли | 2h | 2026-09-24 09:00 A | 2026-09-24 11:00 A | 100% |  |  | start no earlier than 2026-09-24 09:00 | Некрасов А | 2h | 2h |
| 2934 | 12.2.17 | **шкаф управления тэнами сушки главный** | 155.02d | 2026-03-05 09:00 A | 2026-09-29 09:10 | 90% | 15.12d | 117.57d |  |  | 6.67h | 6.17h |
| 2935 | 12.2.17.1 | протяжка контактов, продувка шкафа, частотного привода | 10min | 2026-03-05 09:00 A | 2026-03-05 09:10 A | 100% |  |  | start no earlier than 2026-03-05 09:00 | Труфанов А | 0.17h | 0.17h |
| 2936 | 12.2.17.2 | протяжка контактов, продувка шкафа, частотного привода | 10min | 2026-07-14 09:00 A | 2026-07-14 09:10 A | 100% |  |  | start no earlier than 2026-07-14 09:00 | Некрасов А | 0.17h | 0.17h |
| 2937 | 12.2.17.3 | осмотср замена подгоревших кабелей | 30min | 2026-05-21 09:00 A | 2026-05-21 09:30 A | 100% |  |  | start no earlier than 2026-05-21 09:00 | Тимофеев В | 0.5h | 0.5h |
| 2938 | 12.2.17.4 | протяжка контактов, продувка шкафа, частотного привода | 30min | 2026-08-06 09:00 | 2026-08-06 09:30 |  |  | 162.53d | start no earlier than 2026-08-06 08:00 | Бундин В | 0.5h |  |
| 2939 | 12.2.17.5 | осмотср замена подгоревших кабелей | 30min | 2026-05-21 09:00 A | 2026-05-21 09:30 A | 100% |  |  | start no earlier than 2026-05-21 09:00 | Некрасов А | 0.5h | 0.5h |
| 2940 | 12.2.17.6 | продуть, протяжка контактов | 1h | 2026-05-21 08:00 A | 2026-05-21 10:00 A | 100% |  |  | start no earlier than 2026-05-21 08:00 | Тимофеев В | 1h | 1h |
| 2941 | 12.2.17.7 | осмотср замена подгоревших кабелей | 30min | 2026-07-14 09:00 A | 2026-07-14 09:30 A | 100% |  |  | start no earlier than 2026-07-14 09:00 | Труфанов А | 0.5h | 0.5h |
| 2942 | 12.2.17.8 | осмотср замена подгоревших кабелей | 1h | 2026-08-13 09:00 A | 2026-08-13 10:00 A | 100% |  |  | start no earlier than 2026-08-13 09:00 | Труфанов А | 1h | 1h |
| 2943 | 12.2.17.9 | продувка | 10min | 2026-09-03 09:00 A | 2026-09-03 09:10 A | 100% |  |  | start no earlier than 2026-09-03 09:00 | Труфанов А | 0.17h | 0.17h |
| 2944 | 12.2.17.10 | Продувка | 10min | 2026-09-17 09:00 A | 2026-09-17 09:10 A | 100% |  |  | start no earlier than 2026-09-17 09:00 | Некрасов А | 0.17h | 0.17h |
| 2945 | 12.2.17.11 | Продувка. Замена подогретых жил | 2h | 2026-09-24 09:00 A | 2026-09-24 11:00 A | 100% |  |  | start no earlier than 2026-09-24 09:00 | Труфанов А | 2h | 2h |
| 2946 | 12.2.17.12 | протяжка контактов, продувка шкафа, частотного привода | 10min | 2026-09-29 09:00 | 2026-09-29 09:10 |  |  | 117.57d | start no earlier than 2026-09-29 08:00 |  |  |  |
| 2947 | 12.2.18 | **шкаф управления тэнами твердотельный** | 155.02d | 2026-03-05 09:00 A | 2026-09-29 09:10 A | 100% |  |  |  |  | 3.67h | 3.67h |
| 2948 | 12.2.18.1 | продувка, протяжка | 10min | 2026-03-05 09:00 A | 2026-03-05 09:10 A | 100% |  |  | start no earlier than 2026-03-05 09:00 | Труфанов А | 0.17h | 0.17h |
| 2949 | 12.2.18.2 | продувка, протяжка | 10min | 2026-07-14 09:00 A | 2026-07-14 09:10 A | 100% |  |  | start no earlier than 2026-07-14 09:00 | Труфанов А | 0.17h | 0.17h |
| 2950 | 12.2.18.3 | продувка, протяжка | 10min | 2026-08-06 09:00 A | 2026-08-06 09:10 A | 100% |  |  | start no earlier than 2026-08-06 08:00 | Бундин В | 0.17h | 0.17h |
| 2951 | 12.2.18.4 | замена подгоревших кабелей | 30min | 2026-08-13 09:00 A | 2026-08-13 09:30 A | 100% |  |  | start no earlier than 2026-08-13 09:00 | Труфанов А | 0.5h | 0.5h |
| 2952 | 12.2.18.5 | продувка, протяжка | 10min | 2026-08-06 09:00 A | 2026-08-06 09:10 A | 100% |  |  | start no earlier than 2026-08-06 08:00 | Труфанов А | 0.17h | 0.17h |
| 2953 | 12.2.18.6 | продувка, протяжка | 10min | 2026-09-03 09:00 A | 2026-09-03 09:10 A | 100% |  |  | start no earlier than 2026-09-03 09:00 | Труфанов А | 0.17h | 0.17h |
| 2954 | 12.2.18.7 | Продувка | 10min | 2026-09-17 09:00 A | 2026-09-17 09:10 A | 100% |  |  | start no earlier than 2026-09-17 09:00 | Некрасов А | 0.17h | 0.17h |
| 2955 | 12.2.18.8 | Продувка. Замена подогретых жил | 2h | 2026-09-24 09:00 A | 2026-09-24 11:00 A | 100% |  |  | start no earlier than 2026-09-24 09:00 | Труфанов А | 2h | 2h |
| 2956 | 12.2.18.9 | Продувка | 10min | 2026-09-29 09:00 A | 2026-09-29 09:10 A | 100% |  |  | start no earlier than 2026-09-29 08:00 | Бундин В | 0.17h | 0.17h |

| ID | WBS | Task | Duration | Start | Finish | Complete | Remaining | Total slack | Constraint | Resources | Work | Actual work |
| --- | --- | --- | --- | --- | --- | --- | --- | --- | --- | --- | --- | --- |
| 2957 | 12.2.19 | **конвейер №1 с печи в дрожировщик** | 150.06d | 2026-03-05 09:00 A | 2026-09-24 09:30 A | 100% |  |  |  |  | 3.08h | 3.08h |
| 2958 | 12.2.19.1 | ослабить ленту для чистки барабана / натяжка после чистки | 30min | 2026-03-05 09:00 A | 2026-03-05 09:30 A | 100% |  |  | start no earlier than 2026-03-05 09:00 | Тимофеев В | 0.5h | 0.5h |
| 2959 | 12.2.19.2 | ревизия люфтов, фиксации смазки подшипников | 30min | 2026-03-05 09:00 A | 2026-03-05 09:30 A | 100% |  |  | start no earlier than 2026-03-05 09:00 | Тимофеев В | 0.5h | 0.5h |
| 2960 | 12.2.19.3 | ослабить ленту для чистки барабана / натяжка после чистки | 10min | 2026-03-12 09:00 A | 2026-03-12 09:10 A | 100% |  |  | start no earlier than 2026-03-12 09:00 | Тимофеев В | 0.17h | 0.17h |
| 2961 | 12.2.19.4 | чистка ленты контроль операторов, если нужно ослаить | 15min | 2026-08-13 09:00 A | 2026-08-13 09:15 A | 100% |  |  | start no earlier than 2026-08-13 09:00 | Тимофеев В | 0.25h | 0.25h |
| 2962 | 12.2.19.5 | ревизия люфтов, фиксации смазки подшипников | 30min | 2026-09-03 09:00 A | 2026-09-03 09:30 A | 100% |  |  | start no earlier than 2026-09-03 09:00 | Тимофеев В | 0.5h | 0.5h |
| 2963 | 12.2.19.6 | ослабить ленту для чистки барабана / натяжка после чистки | 10min | 2026-09-03 09:00 A | 2026-09-03 09:10 A | 100% |  |  | start no earlier than 2026-09-03 09:00 | Тимофеев В | 0.17h | 0.17h |
| 2964 | 12.2.19.7 | ревизия люфтов, фиксации смазки подшипников | 30min | 2026-09-17 09:00 A | 2026-09-17 09:30 A | 100% |  |  | start no earlier than 2026-09-17 09:00 | Тимофеев В | 0.5h | 0.5h |
| 2965 | 12.2.19.8 | очистка валов и ленты / контроль крепления редуктора / состояния подшипника | 30min | 2026-09-24 09:00 A | 2026-09-24 09:30 A | 100% |  |  | start no earlier than 2026-09-24 09:00 | Тимофеев В | 0.5h | 0.5h |
| 2966 | 12.2.20 | **барабан смесительный дрожировка** | 733.03d | 2023-12-28 09:00 A | 2026-10-08 09:15 | 78% | 161.16d | 109.56d |  | ТО | 125.75h | 98.1h |
| 2967 | 12.2.20.1 | ревизия состяния валов, подшипников | 2h | 2026-02-25 09:00 A | 2026-02-25 11:00 A | 100% |  |  | start no earlier than 2026-02-25 09:00 | Тимофеев В | 2h | 2h |
| 2968 | 12.2.20.2 | ремонт вала временный. 11 час | 2h | 2026-02-25 09:00 A | 2026-02-25 11:00 A | 100% |  |  | start no earlier than 2026-02-25 09:00 | Тимофеев В | 2h | 2h |
| 2969 | 12.2.20.3 | замена подшипников мотора привода | 2h | 2026-02-25 09:00 A | 2026-02-25 11:00 A | 100% |  |  | start no earlier than 2026-02-25 09:00 | Тимофеев В | 2h | 2h |
| 2970 | 12.2.20.4 | заменаить вал дрожировки по стрелкам на 11час / после прихода с ремонта | 2h | 2026-04-30 09:00 A | 2026-04-30 11:00 A | 100% |  |  | start no earlier than 2026-04-30 09:00 | Тимофеев В | 2h | 2h |
| 2971 | 12.2.20.5 | насос подачи жира и смесительный узел, баки подогрева | 2h | 2023-12-28 09:00 | 2023-12-28 11:00 |  |  | 842.34d | start no earlier than 2023-12-28 09:00 | ТО | 2h |  |
| 2972 | 12.2.20.6 | Осмотр подшипников редукторов | 20min | 2026-07-30 09:00 A | 2026-07-30 09:20 A | 100% |  |  | start no earlier than 2026-07-30 09:00 | Труфанов А | 0.33h | 0.33h |
| 2973 | 12.2.20.7 | Осмотр подшипников редукторов | 15min | 2026-08-13 09:00 A | 2026-08-13 09:15 A | 100% |  |  | start no earlier than 2026-08-13 09:00 | Тимофеев В | 0.25h | 0.25h |
| 2974 | 12.2.20.8 | Осмотр подшипников редукторов | 15min | 2026-09-03 09:00 A | 2026-09-03 09:15 A | 100% |  |  | start no earlier than 2026-09-03 09:00 | Тимофеев В | 0.25h | 0.25h |
| 2975 | 12.2.20.9 | Осмотр соединений фитингов, трехходового крана бежит/не бежит | 10min | 2026-09-03 09:00 A | 2026-09-03 09:10 A | 100% |  |  | start no earlier than 2026-09-03 09:00 | Тимофеев В | 0.17h | 0.17h |
| 2976 | 12.2.20.10 | Осмотр соединений фитингов, трехходового крана бежит/не бежит | 10min | 2026-09-17 09:00 A | 2026-09-17 09:10 A | 100% |  |  | start no earlier than 2026-09-17 09:00 | Тимофеев В | 0.17h | 0.17h |
| 2977 | 12.2.20.11 | Осмотр соединений фитингов, трехходового крана бежит/не бежит | 10min | 2026-09-18 09:00 | 2026-09-18 09:10 |  |  | 128.57d | start no earlier than 2026-09-18 09:00 | Тимофеев В | 0.17h |  |
| 2978 | 12.2.20.12 | Осмотр подшипников редукторов | 15min | 2026-10-08 09:00 | 2026-10-08 09:15 |  |  | 109.56d | start no earlier than 2026-10-08 09:00 | Тимофеев В | 0.25h |  |
| 2979 | 12.2.20.13 | Осмотр соединений фитингов, трехходового крана бежит/не бежит | 10min | 2026-10-08 09:00 | 2026-10-08 09:10 |  |  | 109.57d | start no earlier than 2026-10-08 09:00 | Тимофеев В | 0.17h |  |
| 2980 | 12.2.21 | **Узел подачи гидролизата** | 70.02d | 2026-07-14 09:00 A | 2026-10-08 09:10 | 96% | 3.04d | 109.57d |  |  | 3.83h | 3.67h |
| 2981 | 12.2.21.1 | Дефектовка/ выяснить причу почему еле крутит/ устранить | 2h | 2026-07-14 09:00 A | 2026-07-14 11:00 A | 100% |  |  | start no earlier than 2026-07-14 09:00 | Бундин В | 2h | 2h |
| 2982 | 12.2.21.2 | осмотр цепи, редуктора, протяжка | 20min | 2026-08-13 09:00 A | 2026-08-13 09:20 A | 100% |  |  | start no earlier than 2026-08-13 09:00 | Тимофеев В | 0.33h | 0.33h |
| 2983 | 12.2.21.3 | Осмотр/ревизия насоса гидролизата, проверка всех соединений | 10min | 2026-09-03 09:00 A | 2026-09-03 09:10 A | 100% |  |  | start no earlier than 2026-09-03 09:00 | Тимофеев В | 0.17h | 0.17h |
| 2984 | 12.2.21.4 | Осмотр/ревизия насоса гидролизата, проверка всех соединений | 10min | 2026-09-17 09:00 A | 2026-09-17 09:10 A | 100% |  |  | start no earlier than 2026-09-17 09:00 | Тимофеев В | 0.17h | 0.17h |
| 2985 | 12.2.21.5 | перенос розеток со стола на раму | 1h | 2026-09-17 09:00 A | 2026-09-17 10:00 A | 100% |  |  | start no earlier than 2026-09-17 09:00 | Тимофеев В | 1h | 1h |
| 2986 | 12.2.21.6 | Осмотр/ревизия насоса гидролизата, проверка всех соединений | 10min | 2026-10-08 09:00 | 2026-10-08 09:10 |  |  | 109.57d | start no earlier than 2026-10-08 09:00 | Тимофеев В | 0.17h |  |

| ID | WBS | Task | Duration | Start | Finish | Complete | Remaining | Total slack | Constraint | Resources | Work | Actual work |
| --- | --- | --- | --- | --- | --- | --- | --- | --- | --- | --- | --- | --- |
| 2987 | 12.2.22 | **конвейер №2 с дрожировки в охладитель** | 150.06d | 2026-03-05 09:00 A | 2026-09-24 09:30 A | 100% |  |  |  |  | 3.17h | 3.17h |
| 2988 | 12.2.22.1 | ослабить ленту для чистки барабана / натяжка после чистки | 30min | 2026-03-05 09:00 A | 2026-03-05 09:30 A | 100% |  |  | start no earlier than 2026-03-05 09:00 | Тимофеев В | 0.5h | 0.5h |
| 2989 | 12.2.22.2 | ревизия люфтов, фиксации смазки подшипников | 30min | 2026-03-05 09:00 A | 2026-03-05 09:30 A | 100% |  |  | start no earlier than 2026-03-05 09:00 | Тимофеев В | 0.5h | 0.5h |
| 2990 | 12.2.22.3 | ослабить ленту для чистки барабана / натяжка после чистки | 10min | 2026-03-12 09:00 A | 2026-03-12 09:10 A | 100% |  |  | start no earlier than 2026-03-12 09:00 | Тимофеев В | 0.17h | 0.17h |
| 2991 | 12.2.22.4 | чистка ленты контроль операторов, если нужно ослаить | 15min | 2026-08-13 09:00 A | 2026-08-13 09:15 A | 100% |  |  | start no earlier than 2026-08-13 09:00 | Тимофеев В | 0.25h | 0.25h |
| 2992 | 12.2.22.5 | чистка ленты контроль операторов, если нужно ослаить | 15min | 2026-08-13 09:00 A | 2026-08-13 09:15 A | 100% |  |  | start no earlier than 2026-08-13 09:00 | Тимофеев В | 0.25h | 0.25h |
| 2993 | 12.2.22.6 | ослабить ленту для чистки барабана / натяжка после чистки | 30min | 2026-09-03 09:00 A | 2026-09-03 09:30 A | 100% |  |  | start no earlier than 2026-09-03 09:00 | Тимофеев В | 0.5h | 0.5h |
| 2994 | 12.2.22.7 | ревизия люфтов, фиксации смазки подшипников | 30min | 2026-09-17 09:00 A | 2026-09-17 09:30 A | 100% |  |  | start no earlier than 2026-09-17 09:00 | Тимофеев В | 0.5h | 0.5h |
| 2995 | 12.2.22.8 | ревизия люфтов, фиксации смазки подшипников | 30min | 2026-09-24 09:00 A | 2026-09-24 09:30 A | 100% |  |  | start no earlier than 2026-09-24 09:00 | Тимофеев В | 0.5h | 0.5h |
| 2996 | 12.2.23 | **охладитель сеточный** | 645.06d? | 2024-04-18 09:00 A | 2026-09-29 09:30 | 65% | 227.4d? | 117.53d |  |  | 18.17h | 18h |
| 2997 | 12.2.23.1 | ревизия осей сетки, замена шплинтов | 2h | 2024-04-18 09:00 A | 2024-04-18 11:00 A | 100% |  |  | start no earlier than 2024-04-18 08:00 | Некрасов А; Черепанов И | 4h | 4h |
| 2998 | 12.2.23.2 | ревизия привода - масло, ремень (не проверено масло) | 10min | 2026-03-19 09:00 A | 2026-03-19 09:10 A | 100% |  |  | start no earlier than 2026-03-05 09:00 | Тимофеев В | 0.17h | 0.17h |
| 2999 | 12.2.23.3 | ревизия привода - масло, ремень (не проверено масло) | 10min | 2026-07-14 09:00 | 2026-07-14 09:10 |  |  | 179.57d | start no earlier than 2026-07-14 09:00 | Некрасов А | 0.17h |  |
| 3000 | 12.2.23.4 | ревизия состояния сетки | 2h | 2026-07-14 09:00 A | 2026-07-14 11:00 A | 100% |  |  | start no earlier than 2026-07-14 08:00 | Некрасов А | 2h | 2h |
| 3001 | 12.2.23.5 | ревизия состояния сетки | 1h | 2026-07-30 09:00 A | 2026-07-30 10:00 A | 100% |  |  | start no earlier than 2026-07-30 09:00 | Бундин В | 1h | 1h |
| 3002 | 12.2.23.6 | ревизия состояния сетки | 1d? | 2026-08-20 09:00 | 2026-08-20 18:00 |  |  | 151.59d | start no earlier than 2026-08-20 09:00 |  |  |  |
| 3003 | 12.2.23.7 | контроль натяжки цепей | 20min | 2026-03-05 09:00 A | 2026-03-05 09:20 A | 100% |  |  | start no earlier than 2026-03-05 09:00 | Бундин В | 0.33h | 0.33h |
| 3004 | 12.2.23.8 | текущий ремонт силиконовых уплотнений | 30min | 2026-03-05 09:00 A | 2026-03-05 09:30 A | 100% |  |  | start no earlier than 2026-03-05 09:00 | Бундин В | 0.5h | 0.5h |
| 3005 | 12.2.23.9 | осмотр ремней, натяжка цепей, ремонт силиконовых отбортовок | 1h | 2026-05-14 09:00 A | 2026-05-14 10:00 A | 100% |  |  | start no earlier than 2026-05-14 09:00 | Макаревич А | 1h | 1h |
| 3006 | 12.2.23.10 | осмотр ремней, натяжка цепей, ремонт силиконовых отбортовок | 1h | 2026-07-14 09:00 A | 2026-07-14 10:00 A | 100% |  |  | start no earlier than 2026-07-14 09:00 | Некрасов А | 1h | 1h |
| 3007 | 12.2.23.11 | осмотр ремней, натяжка цепей, ремонт силиконовых отбортовок | 1h | 2026-07-30 09:00 A | 2026-07-30 10:00 A | 100% |  |  | start no earlier than 2026-07-30 09:00 | Бундин В | 1h | 1h |
| 3008 | 12.2.23.12 | осмотр ремней, натяжка цепей, ремонт силиконовых отбортовок | 1h | 2026-08-20 09:00 A | 2026-08-20 10:00 A | 100% |  |  | start no earlier than 2026-08-20 09:00 | Труфанов А; Некрасов А | 2h | 2h |
| 3009 | 12.2.23.13 | осмотр ремней, натяжка цепей, ремонт силиконовых отбортовок | 1h | 2026-08-20 09:00 A | 2026-08-20 10:00 A | 100% |  |  | start no earlier than 2026-08-20 09:00 | Дедов В | 1h | 1h |
| 3010 | 12.2.23.14 | Ревизия сетки, контроль роспуска, подогнуть, где что можно, что бы не зацепилось | 1h | 2026-09-24 09:00 A | 2026-09-24 10:00 A | 100% |  |  | start no earlier than 2026-09-24 09:00 | Труфанов А | 1h | 1h |
| 3011 | 12.2.23.15 | Смазка подшипников привод охладителя | 30min | 2026-09-24 09:00 A | 2026-09-24 09:30 A | 100% |  |  | start no earlier than 2026-09-24 09:00 | Труфанов А | 0.5h | 0.5h |
| 3012 | 12.2.23.16 | Смазка всех цепей | 2h | 2026-09-24 09:00 A | 2026-09-24 11:00 A | 100% |  |  | start no earlier than 2026-09-24 09:00 | Труфанов А | 2h | 2h |
| 3013 | 12.2.23.17 | Ремонт уголка на охладителе, позвонить мне, перешлю видео | 30min | 2026-09-29 09:00 A | 2026-09-29 09:30 A | 100% |  |  | start no earlier than 2026-09-29 08:00 | Бундин В | 0.5h | 0.5h |

| ID | WBS | Task | Duration | Start | Finish | Predecessors | Complete | Remaining | Total slack | Free slack | Constraint | Resources | Work | Actual work |
| --- | --- | --- | --- | --- | --- | --- | --- | --- | --- | --- | --- | --- | --- | --- |
| 3014 | 12.2.24 | **конвейер 3 с охладителя в упаковку** | 43.03d | 2026-08-12 09:00 A | 2026-10-01 09:15 |  | 80% | 8.61d | 115.56d |  |  | ТО | 337.5h | 97.19h |
| 3015 | 12.2.24.1 | ослабить ленту для чистки барабана / натяжка после чистки | 15min | 2026-08-12 09:00 A | 2026-08-12 09:15 A |  | 100% |  |  |  | start no earlier than 2026-08-12 09:00 | Тимофеев В | 0.25h | 0.25h |
| 3016 | 12.2.24.2 | ревизия люфтов, фиксации, смазки подшипников | 15min | 2026-08-12 09:00 A | 2026-08-12 09:15 A |  | 100% |  |  |  | start no earlier than 2026-08-12 09:00 | Тимофеев В | 0.25h | 0.25h |
| 3017 | 12.2.24.3 | ослабить ленту для чистки барабана / натяжка после чистки | 15min | 2026-09-03 09:00 A | 2026-09-03 09:15 A |  | 100% |  |  |  | start no earlier than 2026-09-03 09:00 | Макаревич А | 0.25h | 0.25h |
| 3018 | 12.2.24.4 | ревизия люфтов, фиксации, смазки подшипников | 15min | 2026-09-17 09:00 A | 2026-09-17 09:15 A |  | 100% |  |  |  | start no earlier than 2026-09-17 09:00 | Некрасов А | 0.25h | 0.25h |
| 3019 | 12.2.24.5 | ревизия люфтов, фиксации, смазки подшипников | 15min | 2026-10-01 09:00 | 2026-10-01 09:15 |  |  |  | 115.56d |  | start no earlier than 2026-10-01 09:00 | Некрасов А | 0.25h |  |
| 3020 | 12.2.25 | **упаковка** | 720.12d | 2023-12-28 09:00 A | 2026-09-24 10:00 A |  | 100% |  |  |  |  | ТО | 5101h | 5101h |
| 3021 | 12.2.25.1 | НОТИС 1 | 2h | 2023-12-28 09:00 A | 2023-12-28 11:00 A |  | 100% |  |  |  | start no earlier than 2023-12-28 09:00 | ТО | 2h | 2h |
| 3022 | 12.2.25.2 | НОТИС 2 | 2h | 2023-12-28 09:00 A | 2023-12-28 11:00 A |  | 100% |  |  |  | start no earlier than 2023-12-28 09:00 | ТО | 2h | 2h |
| 3023 | 12.2.25.3 | запайщик 1 | 2h | 2026-06-18 09:00 A | 2026-06-18 11:00 A |  | 100% |  |  |  | start no earlier than 2026-06-18 09:00 | Труфанов А | 2h | 2h |
| 3024 | 12.2.25.4 | запайщик 2 | 2h | 2026-06-18 09:00 A | 2026-06-18 11:00 A |  | 100% |  |  |  | start no earlier than 2026-06-18 09:00 | Труфанов А | 2h | 2h |
| 3025 | 12.2.25.5 | запайщик 1 проверка перемычек/тефлона замена при необходимости | 2h | 2026-09-03 09:00 A | 2026-09-03 11:00 A |  | 100% |  |  |  | start no earlier than 2026-09-03 09:00 | Макаревич А | 2h | 2h |
| 3026 | 12.2.25.6 | запайщик 1 проверка перемычек/тефлона замена при необходимости | 2h | 2026-09-03 09:00 A | 2026-09-03 11:00 A |  | 100% |  |  |  | start no earlier than 2026-09-03 09:00 | Макаревич А | 2h | 2h |
| 3027 | 12.2.25.7 | запайщик 1 и 2 проверка перемычек/тефлона замена при необходимости | 1h | 2026-09-24 09:00 A | 2026-09-24 10:00 A |  | 100% |  |  |  | start no earlier than 2026-09-24 09:00 | Некрасов А | 1h | 1h |
| 3028 | 12.2.26 | **квадропак** | 43.19d | 2026-08-12 09:00 A | 2026-10-01 10:30 |  | 55% | 19.63d | 115.41d |  |  |  | 5.5h | 3h |
| 3029 | 12.2.26.1 | смазка вращающиющихся механизмов | 30min | 2026-10-01 09:00 | 2026-10-01 09:30 |  |  |  | 115.41d | 0d | start no earlier than 2026-10-01 09:00 | Бундин В | 0.5h |  |
| 3030 | 12.2.26.2 | протяжка креплений поворотных лап захвата | 30min | 2026-10-01 09:30 | 2026-10-01 10:00 | 3029 |  |  | 115.41d | 0d | start no earlier than 2026-03-05 09:00 | Бундин В | 0.5h |  |
| 3031 | 12.2.26.3 | чистка вала ленты выгрзного транспортера | 30min | 2026-10-01 10:00 | 2026-10-01 10:30 | 3030 |  |  | 115.41d |  | start no earlier than 2026-03-31 08:00 | Бундин В | 0.5h |  |
| 3032 | 12.2.26.4 | осмотр приводной системы нории / смазка | 30min | 2026-08-12 09:00 | 2026-08-12 09:30 |  |  |  | 158.53d |  | start no earlier than 2026-08-12 09:00 | Тимофеев В | 0.5h |  |
| 3033 | 12.2.26.5 | осмотр приводной системы нории / смазка | 30min | 2026-08-20 09:00 | 2026-08-20 09:30 |  |  |  | 152.53d |  | start no earlier than 2026-08-20 09:00 | Бобренок В | 0.5h |  |
| 3034 | 12.2.26.6 | осмотр приводной системы нории / смазка | 30min | 2026-09-03 09:00 A | 2026-09-03 09:30 A |  | 100% |  |  |  | start no earlier than 2026-09-03 09:00 | Макаревич А | 0.5h | 0.5h |
| 3035 | 12.2.26.7 | протяжка креплений поворотных лап захвата | 30min | 2026-09-03 09:00 A | 2026-09-03 09:30 A |  | 100% |  |  |  | start no earlier than 2026-09-03 09:00 | Макаревич А | 0.5h | 0.5h |
| 3036 | 12.2.26.8 | снимать ковши для доступка к подшинику, нуждающего в смазке( сообщил Некрасов) | 2h | 2026-09-24 09:00 A | 2026-09-24 11:00 A |  | 100% |  |  |  | start no earlier than 2026-09-24 09:00 | Бундин В | 2h | 2h |
| 3037 | 12.2.27 | **БЕСТРОМ** | 720.25d | 2023-12-28 09:00 A | 2026-09-24 11:00 |  | 80% | 147.59d | 122.34d |  |  | ТО | 1100.83h | 72.33h |
| 3038 | 12.2.27.1 | чистка тен с демантожем | 2.5h | 2026-03-05 09:00 A | 2026-03-05 11:30 A |  | 100% |  |  |  | start no earlier than 2026-03-05 09:00 | Бундин В | 2.5h | 2.5h |
| 3039 | 12.2.27.2 | ослабить ленту для чистки барабана / натяжка после чистки | 10min | 2026-03-12 09:00 A | 2026-03-12 09:10 A |  | 100% |  |  |  | start no earlier than 2026-03-12 09:00 | Бундин В | 0.17h | 0.17h |
| 3040 | 12.2.27.3 | чистка тенов | 1h | 2026-05-14 09:00 A | 2026-05-14 10:00 A |  | 100% |  |  |  | start no earlier than 2026-05-14 09:00 | Макаревич А | 1h | 1h |
| 3041 | 12.2.27.4 | чистка тенов | 2h | 2026-07-14 09:00 | 2026-07-14 11:00 |  |  |  | 179.34d |  | start no earlier than 2026-07-14 09:00 | Бундин В | 2h |  |
| 3042 | 12.2.27.5 | конвейер и вибробункер БЕСТРОМ | 2h | 2023-12-28 09:00 | 2023-12-28 11:00 |  |  |  | 842.34d |  | start no earlier than 2023-12-28 09:00 | ТО | 2h |  |
| 3043 | 12.2.27.6 | бестром чистка тен, проверка тефлона, роликов (согласовать с мастером) | 2h | 2026-07-08 09:00 A | 2026-07-08 11:00 A |  | 100% |  |  |  | start no earlier than 2026-07-08 09:00 | Бобренок В | 2h | 2h |
| 3044 | 12.2.27.7 | бестром чистка тен, проверка тефлона, роликов (согласовать с мастером) | 1h | 2026-07-30 09:00 A | 2026-07-30 10:00 A |  | 100% |  |  |  | start no earlier than 2026-07-30 09:00 | Тимофеев В | 1h | 1h |
| 3045 | 12.2.27.8 | бестром чистка тен, проверка тефлона, роликов (согласовать с мастером) | 1h | 2026-08-13 09:00 A | 2026-08-13 10:00 A |  | 100% |  |  |  | start no earlier than 2026-08-13 09:00 | Тимофеев В | 1h | 1h |
| 3046 | 12.2.27.9 | бестром чистка тен, проверка тефлона, роликов (согласовать с мастером) | 1h | 2026-08-20 09:00 A | 2026-08-20 10:00 A |  | 100% |  |  |  | start no earlier than 2026-08-20 09:00 | Дедов В | 1h | 1h |
| 3047 | 12.2.27.10 | бестром чистка тен, проверка тефлона, роликов (согласовать с мастером) | 1h | 2026-09-03 09:00 A | 2026-09-03 10:00 A |  | 100% |  |  |  | start no earlier than 2026-09-03 09:00 | Макаревич А | 1h | 1h |
| 3048 | 12.2.27.11 | Замена линейного подшипника ISKRA KH2030-PP (согласование с Домоводовым) не делали, все норм там) | 2h | 2026-09-03 09:00 A | 2026-09-03 11:00 A |  | 100% |  |  |  | start no earlier than 2026-09-03 09:00 | Макаревич А | 2h | 2h |
| 3049 | 12.2.27.12 | ослабить ленту для чистки барабана / натяжка после чистки | 10min | 2026-09-10 09:00 | 2026-09-10 09:10 |  |  |  | 136.57d |  | start no earlier than 2026-09-10 09:00 | Макаревич А | 0.17h |  |
| 3050 | 12.2.27.13 | Замена поролоновой губки на горизонтальных тенах запайки пакетов | 30min | 2026-09-17 09:00 A | 2026-09-17 09:30 A |  | 100% |  |  |  | start no earlier than 2026-09-17 09:00 | Бобренок В | 0.5h | 0.5h |
| 3051 | 12.2.27.14 | Чистка ТЭНов | 2h | 2026-09-16 09:00 A | 2026-09-16 11:00 A |  | 100% |  |  |  | start no earlier than 2026-09-16 08:00 | Бундин В | 2h | 2h |
| 3052 | 12.2.27.15 | Чистка ТЭНов | 2h | 2026-09-24 09:00 A | 2026-09-24 11:00 A |  | 100% |  |  |  | start no earlier than 2026-09-24 09:00 | Бундин В | 2h | 2h |

| ID | WBS | Task | Duration | Start | Finish | Complete | Remaining | Total slack | Constraint | Resources | Work | Actual work |
| --- | --- | --- | --- | --- | --- | --- | --- | --- | --- | --- | --- | --- |
| 3053 | 12.2.28 | **электрооборудование** | 700.02d? | 2023-12-28 09:00 A | 2026-09-03 09:10 |  | 696.66d? | 142.57d |  |  | 69.33h | 0.33h |
| 3054 | 12.2.28.1 | ВРУ3 | 30min | 2024-10-03 09:00 | 2024-10-03 09:30 |  |  | 642.53d | start no earlier than 2024-10-03 09:00 | Тимофеев В | 0.5h |  |
| 3055 | 12.2.28.2 | ВРУ4 | 2h | 2023-12-28 09:00 | 2023-12-28 11:00 |  |  | 842.34d | start no earlier than 2023-12-28 09:00 | ТО | 2h |  |
| 3056 | 12.2.28.3 | ВРУ5 | 2h | 2023-12-28 09:00 | 2023-12-28 11:00 |  |  | 842.34d | start no earlier than 2023-12-28 09:00 | ТО | 2h |  |
| 3057 | 12.2.28.4 | ВРУ6 | 2h | 2023-12-28 09:00 | 2023-12-28 11:00 |  |  | 842.34d | start no earlier than 2023-12-28 09:00 | ТО | 2h |  |
| 3058 | 12.2.28.5 | ЩР4 у печи | 2h | 2023-12-28 09:00 | 2023-12-28 11:00 |  |  | 842.34d | start no earlier than 2023-12-28 09:00 | ТО | 2h |  |
| 3059 | 12.2.28.6 | ЩО1 у печи | 30min | 2024-10-03 09:00 | 2024-10-03 09:30 |  |  | 642.53d | start no earlier than 2024-10-03 09:00 | Тимофеев В | 0.5h |  |
| 3060 | 12.2.28.7 | ЩР5 у жиротопки | 2h | 2023-12-28 09:00 | 2023-12-28 11:00 |  |  | 842.34d | start no earlier than 2023-12-28 09:00 | ТО | 2h |  |
| 3061 | 12.2.28.8 | ЩР6 упаковка стна жир | 2h | 2023-12-28 09:00 | 2023-12-28 11:00 |  |  | 842.34d | start no earlier than 2023-12-28 09:00 | ТО | 2h |  |
| 3062 | 12.2.28.9 | ЩР7 упаковка колонна | 2h | 2023-12-28 09:00 | 2023-12-28 11:00 |  |  | 842.34d | start no earlier than 2023-12-28 09:00 | ТО | 2h |  |
| 3063 | 12.2.28.10 | ЩР8 склад навесок | 2h | 2023-12-28 09:00 | 2023-12-28 11:00 |  |  | 842.34d | start no earlier than 2023-12-28 09:00 | ТО | 2h |  |
| 3064 | 12.2.28.11 | ЩР9 2 этаж | 2h | 2023-12-28 09:00 | 2023-12-28 11:00 |  |  | 842.34d | start no earlier than 2023-12-28 09:00 | ТО | 2h |  |
| 3065 | 12.2.28.12 | электрокотел 1 - 2 цех | 2h | 2023-12-28 09:00 | 2023-12-28 11:00 |  |  | 842.34d | start no earlier than 2023-12-28 09:00 | ТО | 2h |  |
| 3066 | 12.2.28.13 | электрокотел 2 - 2 цех | 1d? | 2023-12-28 09:00 | 2023-12-28 18:00 |  |  | 841.59d | start no earlier than 2023-12-28 09:00 | ТО | 8h |  |
| 3067 | 12.2.28.14 | электрокотел 3 - 2 цех | 1d? | 2023-12-28 09:00 | 2023-12-28 18:00 |  |  | 841.59d | start no earlier than 2023-12-28 09:00 | ТО | 8h |  |
| 3068 | 12.2.28.15 | бойлер 4 2 цех раковина | 1d? | 2023-12-28 09:00 | 2023-12-28 18:00 |  |  | 841.59d | start no earlier than 2023-12-28 09:00 | ТО | 8h |  |
| 3069 | 12.2.28.16 | бойлер 5 2 цех душ М | 1d? | 2023-12-28 09:00 | 2023-12-28 18:00 |  |  | 841.59d | start no earlier than 2023-12-28 09:00 | ТО | 8h |  |
| 3070 | 12.2.28.17 | бойлер 6 2 цех душ Ж | 1d? | 2023-12-28 09:00 | 2023-12-28 18:00 |  |  | 841.59d | start no earlier than 2023-12-28 09:00 | ТО | 8h |  |
| 3071 | 12.2.28.18 | насос санитарный | 1d? | 2023-12-28 09:00 | 2023-12-28 18:00 |  |  | 841.59d | start no earlier than 2023-12-28 09:00 | ТО | 8h |  |
| 3072 | 12.2.28.19 | ЩР4 у печи продувка | 10min | 2026-09-03 09:00 A | 2026-09-03 09:10 A | 100% |  |  | start no earlier than 2026-09-03 09:00 | Труфанов А | 0.17h | 0.17h |
| 3073 | 12.2.28.20 | ЩО1 у печи продувка | 10min | 2026-09-03 09:00 A | 2026-09-03 09:10 A | 100% |  |  | start no earlier than 2026-09-03 09:00 | Труфанов А | 0.17h | 0.17h |
| 3074 | 12.2.29 | **Компрессор 2 цех** | 33.06d | 2026-08-06 09:00 A | 2026-09-17 09:30 | 99% | 0d | 0d |  | ТО | 4h | 4h |
| 3075 | 12.2.29.1 | продувка фильтров | 30min | 2026-08-06 09:00 A | 2026-08-06 09:30 A | 100% |  |  | start no earlier than 2026-08-06 09:00 | Тимофеев В | 0.5h | 0.5h |
| 3076 | 12.2.29.2 | слив конденсат с осушителя | 30min | 2026-08-06 09:00 A | 2026-08-06 09:30 A | 100% |  |  | start no earlier than 2026-08-06 09:00 | Тимофеев В | 0.5h | 0.5h |
| 3077 | 12.2.29.3 | слив конденсат с осушителя | 30min | 2026-08-20 09:00 A | 2026-08-20 09:30 A | 100% |  |  | start no earlier than 2026-08-20 09:00 | Дедов В | 0.5h | 0.5h |
| 3078 | 12.2.29.4 | продувка фильтров | 30min | 2026-08-29 09:00 A | 2026-08-31 09:30 A | 100% |  |  | start no earlier than 2026-08-29 09:00 | Макаревич А | 0.5h | 0.5h |
| 3079 | 12.2.29.5 | слив конденсат с осушителя | 30min | 2026-08-29 09:00 A | 2026-08-31 09:30 A | 100% |  |  | start no earlier than 2026-08-29 09:00 | Макаревич А | 0.5h | 0.5h |
| 3080 | 12.2.29.6 | слив конденсат с осушителя | 30min | 2026-08-29 09:00 A | 2026-08-31 09:30 A | 100% |  |  | start no earlier than 2026-08-29 09:00 | Макаревич А | 0.5h | 0.5h |
| 3081 | 12.2.29.7 | слив конденсат с осушителя | 30min | 2026-09-03 09:00 A | 2026-09-03 09:30 A | 100% |  |  | start no earlier than 2026-09-03 09:00 | Макаревич А | 0.5h | 0.5h |
| 3082 | 12.2.29.8 | продувка фильтров (дать размеры фильтра) | 30min | 2026-09-17 09:00 A | 2026-09-17 09:30 A | 100% |  |  | start no earlier than 2026-09-17 09:00 | Труфанов А | 0.5h | 0.5h |

| ID | WBS | Task | Duration | Start | Finish | Complete | Remaining | Total slack | Constraint | Resources | Work | Actual work |
| --- | --- | --- | --- | --- | --- | --- | --- | --- | --- | --- | --- | --- |
| 3083 | 12.2.30 | **насосная станция 2 цех** | 130.06d | 2026-03-05 09:00 A | 2026-09-03 09:30 A | 100% |  |  |  |  | 1h | 1h |
| 3084 | 12.2.30.1 | замена фильтров | 30min | 2026-03-05 09:00 A | 2026-03-05 09:30 A | 100% |  |  | start no earlier than 2026-03-05 09:00 | Тимофеев В | 0.5h | 0.5h |
| 3085 | 12.2.30.2 | замена фильтров | 30min | 2026-09-03 09:00 A | 2026-09-03 09:30 A | 100% |  |  | start no earlier than 2026-09-03 09:00 | Труфанов А | 0.5h | 0.5h |
| 3086 | 12.2.31 | **приточнго-вытяжная венгтиляция и смесительный узел** | 127.06d | 2026-04-16 09:00 A | 2026-10-01 09:30 A | 100% |  |  |  |  | 2.5h | 2.5h |
| 3087 | 12.2.31.1 | замена фильтра | 1h | 2026-04-16 09:00 A | 2026-04-16 10:00 A | 100% |  |  | start no earlier than 2026-04-16 09:00 | Труфанов А; Некрасов А | 2h | 2h |
| 3088 | 12.2.31.2 | Осмотр состояния фильтра приточки/замена | 30min | 2026-10-01 09:00 A | 2026-10-01 09:30 A | 100% |  |  | start no earlier than 2026-10-01 09:00 | Труфанов А | 0.5h | 0.5h |
| 3089 | 12.2.32 | **кондиционер 1** | 640.04d? | 2024-04-18 09:00 A | 2026-09-24 09:20 | 99% | 0d? | 0d |  | ТО | 5070.33h | 4827.32h |
| 3090 | 12.2.32.1 | чистка фильтра | 1h | 2024-04-18 09:00 A | 2024-04-18 10:00 A | 100% |  |  | start no earlier than 2024-04-18 08:00 | Черепанов И; Некрасов А | 2h | 2h |
| 3091 | 12.2.32.2 | чистка фильтра | 20min | 2026-03-05 09:00 A | 2026-03-05 09:20 A | 100% |  |  | start no earlier than 2026-03-05 09:00 | Некрасов А; Бундин В | 0.67h | 0.67h |
| 3092 | 12.2.32.3 | чистка фильтров | 1d? | 2026-06-25 09:00 A | 2026-06-25 18:00 A | 100% |  |  | start no earlier than 2026-06-25 09:00 | Тимофеев В; Дедов В | 16h | 16h |
| 3093 | 12.2.32.4 | чистка фильтров | 20min | 2026-07-14 09:00 A | 2026-07-14 09:20 A | 100% |  |  | start no earlier than 2026-07-14 09:00 | Некрасов А; Бундин В | 0.67h | 0.67h |
| 3094 | 12.2.32.5 | чистка фильтров | 20min | 2026-08-13 09:00 A | 2026-08-13 09:20 A | 100% |  |  | start no earlier than 2026-08-13 09:00 | Некрасов А; Труфанов А | 0.67h | 0.67h |
| 3095 | 12.2.32.6 | чистка фильтров | 20min | 2026-09-03 09:00 A | 2026-09-03 09:20 A | 100% |  |  | start no earlier than 2026-09-03 09:00 | Некрасов А; Тимофеев В | 0.67h | 0.67h |
| 3096 | 12.2.32.7 | чистка фильтров | 20min | 2026-09-17 09:00 A | 2026-09-17 09:20 A | 100% |  |  | start no earlier than 2026-09-17 09:00 | Тимофеев В; Бобренок В | 0.67h | 0.67h |
| 3097 | 12.2.32.8 | чистка фильтров | 20min | 2026-09-24 09:00 A | 2026-09-24 09:20 A | 100% |  |  | start no earlier than 2026-09-24 09:00 | Тимофеев В; Бундин В | 0.67h | 0.67h |
| 3098 | 12.2.33 | **кондиционер 2** | 640.04d? | 2024-04-18 09:00 A | 2026-09-24 09:20 | 99% | 0d? | 0d |  | ТО | 5071.5h | 4983.33h |
| 3099 | 12.2.33.1 | чистка фильтров | 1d? | 2026-06-25 09:00 A | 2026-06-25 18:00 A | 100% |  |  | start no earlier than 2026-06-25 09:00 | Тимофеев В; Дедов В | 16h | 16h |
| 3100 | 12.2.33.2 | чистка фильтра | 1h | 2024-04-18 09:00 A | 2024-04-18 10:00 A | 100% |  |  | start no earlier than 2024-04-18 08:00 | Черепанов И; Некрасов А | 2h | 2h |
| 3101 | 12.2.33.3 | чистка фильтра | 20min | 2026-03-05 09:00 A | 2026-03-05 09:20 A | 100% |  |  | start no earlier than 2026-03-05 09:00 | Некрасов А; Бундин В | 0.67h | 0.67h |
| 3102 | 12.2.33.4 | чистка фильтров | 20min | 2026-07-14 09:00 A | 2026-07-14 09:20 A | 100% |  |  | start no earlier than 2026-07-14 09:00 | Некрасов А; Бундин В | 0.67h | 0.67h |
| 3103 | 12.2.33.5 | чистка фильтров | 20min | 2026-08-13 09:00 A | 2026-08-13 09:20 A | 100% |  |  | start no earlier than 2026-08-13 09:00 | Некрасов А; Труфанов А | 0.67h | 0.67h |
| 3104 | 12.2.33.6 | чистка фильтров | 20min | 2026-08-13 09:00 A | 2026-08-13 09:20 A | 100% |  |  | start no earlier than 2026-08-13 09:00 | Некрасов А; Труфанов А | 0.67h | 0.67h |
| 3105 | 12.2.33.7 | чистка фильтров | 20min | 2026-09-03 09:00 A | 2026-09-03 09:20 A | 100% |  |  | start no earlier than 2026-09-03 09:00 | Некрасов А; Тимофеев В | 0.67h | 0.67h |
| 3106 | 12.2.33.8 | чистка фильтров | 30min | 2026-09-17 09:00 A | 2026-09-17 09:30 A | 100% |  |  | start no earlier than 2026-09-17 09:00 | Тимофеев В; Бобренок В | 1h | 1h |
| 3107 | 12.2.33.9 | чистка фильтров | 20min | 2026-09-24 09:00 A | 2026-09-24 09:20 A | 100% |  |  | start no earlier than 2026-09-24 09:00 | Тимофеев В; Бундин В | 0.67h | 0.67h |

| ID | WBS | Task | Type | Duration | Start | Finish | Complete | Total slack | Constraint | Resources | Work | Actual work |
| --- | --- | --- | --- | --- | --- | --- | --- | --- | --- | --- | --- | --- |
| 3108 | 12.2.34 | **кондиционер 3** |  | 150.04d | 2026-03-05 09:00 A | 2026-09-24 09:20 A | 100% |  |  |  | 4.67h | 4.67h |
| 3109 | 12.2.34.1 | чистка фильтра |  | 20min | 2026-03-05 09:00 A | 2026-03-05 09:20 A | 100% |  | start no earlier than 2026-03-05 09:00 | Некрасов А; Бундин В | 0.67h | 0.67h |
| 3110 | 12.2.34.2 | чистка фильтров |  | 20min | 2026-07-14 09:00 A | 2026-07-14 09:20 A | 100% |  | start no earlier than 2026-07-14 09:00 | Некрасов А; Бундин В | 0.67h | 0.67h |
| 3111 | 12.2.34.3 | чистка фильтров |  | 20min | 2026-08-13 09:00 A | 2026-08-13 09:20 A | 100% |  | start no earlier than 2026-08-13 09:00 | Некрасов А; Труфанов А | 0.67h | 0.67h |
| 3112 | 12.2.34.4 | чистка фильтров |  | 20min | 2026-08-13 09:00 A | 2026-08-13 09:20 A | 100% |  | start no earlier than 2026-08-13 09:00 | Некрасов А; Труфанов А | 0.67h | 0.67h |
| 3113 | 12.2.34.5 | чистка фильтров |  | 20min | 2026-09-03 09:00 A | 2026-09-03 09:20 A | 100% |  | start no earlier than 2026-09-03 09:00 | Некрасов А; Тимофеев В | 0.67h | 0.67h |
| 3114 | 12.2.34.6 | чистка фильтров |  | 20min | 2026-09-17 09:00 A | 2026-09-17 09:20 A | 100% |  | start no earlier than 2026-09-17 09:00 | Тимофеев В; Бобренок В | 0.67h | 0.67h |
| 3115 | 12.2.34.7 | чистка фильтров |  | 20min | 2026-09-24 09:00 A | 2026-09-24 09:20 A | 100% |  | start no earlier than 2026-09-24 09:00 | Тимофеев В; Бундин В | 0.67h | 0.67h |
| 3116 | 12.2.35 | **электроштабелер** |  | 2.38d | 2026-08-11 09:00 A | 2026-08-13 12:00 A | 100% |  |  | ТО | 22.25h | 22.25h |
| 3117 | 12.2.35.1 | **хруст в колесе устранить** |  | 2.38d | 2026-08-11 09:00 A | 2026-08-13 12:00 A | 100% |  |  |  | 3.25h | 3.25h |
| 3118 | 12.2.35.1.1 | хруст с правой стороны штабелера- ревизия, скорее всего подшипник (экструдер). Осмотр, доложить | manual | 15min | 2026-08-11 09:00 A | 2026-08-11 09:15 A | 100% |  | start no earlier than 2026-08-11 09:00 | Тимофеев В | 0.25h | 0.25h |
| 3119 | 12.2.35.1.2 | ремонт замена подшипник колесо штабелер |  | 3h | 2026-08-13 09:00 A | 2026-08-13 12:00 A | 100% |  | start no earlier than 2026-08-13 09:00 | Тимофеев В | 3h | 3h |
| 3120 | 12.2.36 | **Лаборатория** |  | 0.25d | 2026-09-18 09:00 A | 2026-09-18 11:00 A | 100% |  |  |  | 2h | 2h |
| 3121 | 12.2.36.1 | Прочистка дистилятора/ТО, очистка накипи, инструкция смотреть в лаборатории |  | 2h | 2026-09-18 09:00 A | 2026-09-18 11:00 A | 100% |  | start no earlier than 2026-09-18 09:00 | Бобренок В | 2h | 2h |
| 3122 | 12.3 | **3 цех** |  | 1d? | 2023-12-28 09:00 | 2023-12-28 18:00 |  | 841.59d |  | ТО | 88h |  |
| 3123 | 12.3.1 | **электрооборудование** |  | 1d? | 2023-12-28 09:00 | 2023-12-28 18:00 |  | 841.59d |  | ТО | 48h |  |
| 3124 | 12.3.1.1 | ВРУ7 |  | 1d? | 2023-12-28 09:00 | 2023-12-28 18:00 |  | 841.59d | start no earlier than 2023-12-28 09:00 | ТО | 8h |  |
| 3125 | 12.3.1.2 | ОЩР |  | 1d? | 2023-12-28 09:00 | 2023-12-28 18:00 |  | 841.59d | start no earlier than 2023-12-28 09:00 | ТО | 8h |  |
| 3126 | 12.3.1.3 | электрокотел 4 - 3 цех |  | 1d? | 2023-12-28 09:00 | 2023-12-28 18:00 |  | 841.59d | start no earlier than 2023-12-28 09:00 | ТО | 8h |  |
| 3127 | 12.3.1.4 | электрокотел 5 - 3 цех |  | 1d? | 2023-12-28 09:00 | 2023-12-28 18:00 |  | 841.59d | start no earlier than 2023-12-28 09:00 | ТО | 8h |  |
| 3128 | 12.3.1.5 | электрокотел 6 - 3 цех |  | 1d? | 2023-12-28 09:00 | 2023-12-28 18:00 |  | 841.59d | start no earlier than 2023-12-28 09:00 | ТО | 8h |  |
| 3129 | 12.3.2 | электроштабелер 1 |  | 1d? | 2023-12-28 09:00 | 2023-12-28 18:00 |  | 841.59d | start no earlier than 2023-12-28 09:00 | ТО | 8h |  |
| 3130 | 12.3.3 | электроштабелер 2 |  | 1d? | 2023-12-28 09:00 | 2023-12-28 18:00 |  | 841.59d | start no earlier than 2023-12-28 09:00 | ТО | 8h |  |
| 3131 | 12.3.4 | вилочный погрузчик 1 |  | 1d? | 2023-12-28 09:00 | 2023-12-28 18:00 |  | 841.59d | start no earlier than 2023-12-28 09:00 | ТО | 8h |  |
| 3132 | 12.3.5 | вилочный погрузчик 2 |  | 1d? | 2023-12-28 09:00 | 2023-12-28 18:00 |  | 841.59d | start no earlier than 2023-12-28 09:00 | ТО | 8h |  |

| ID | WBS | Task | Type | Duration | Start | Finish | Complete | Remaining | Total slack | Constraint | Resources | Work | Actual work |
| --- | --- | --- | --- | --- | --- | --- | --- | --- | --- | --- | --- | --- | --- |
| 3133 | 12.4 | **5 цех** |  | 656.25d? | 2023-12-28 09:00 A | 2026-07-03 11:00 | 10% | 593.75d? | 186.34d |  | ТО | 6302h | 906.67h |
| 3134 | 12.4.1 | насосная станция 5 цех |  | 1d? | 2023-12-28 09:00 | 2023-12-28 18:00 |  |  | 841.59d | start no earlier than 2023-12-28 09:00 | ТО | 8h |  |
| 3135 | 12.4.2 | растариватель |  | 1d? | 2023-12-28 09:00 | 2023-12-28 18:00 |  |  | 841.59d | start no earlier than 2023-12-28 09:00 | ТО | 8h |  |
| 3136 | 12.4.3 | **шнек 1 растариватель-смеситель** |  | 65.25d | 2026-04-03 09:00 A | 2026-07-03 11:00 | 67% | 21.75d | 0d |  | ТО | 492h | 342.67h |
| 3137 | 12.4.3.1 | замена подшипник нижний | manual | 2h | 2026-04-03 09:00 A | 2026-04-03 11:00 A | 100% |  |  |  | Некрасов А; Труфанов А | 4h | 4h |
| 3138 | 12.4.3.2 | ревизия подшипник верхний - не снимается.ревизия - все ок, мазка | manual | 2h | 2026-04-03 09:00 A | 2026-04-03 11:00 A | 100% |  |  |  | Некрасов А; Труфанов А | 4h | 4h |
| 3139 | 12.4.3.3 | осмотр износа, смазка | manual | 2h | 2026-07-03 09:00 | 2026-07-03 11:00 |  |  |  |  | Тимофеев В | 2h |  |
| 3140 | 12.4.4 | смеситель СМ1500 |  | 1d? | 2023-12-28 09:00 | 2023-12-28 18:00 |  |  | 841.59d | start no earlier than 2023-12-28 09:00 | ТО | 8h |  |
| 3141 | 12.4.5 | **шнек 2 смеситель -дробилка** |  | 68.5d? | 2026-03-24 09:00 A | 2026-06-26 13:00 | 67% | 22.83d? | 191.09d |  | ТО | 440h | 64h |
| 3142 | 12.4.5.1 | ремонт вала, т.к съело посадку на верх подшипник |  | 1d? | 2026-03-24 09:00 A | 2026-03-24 18:00 A | 100% |  |  | start no earlier than 2026-03-24 09:00 | Труфанов А; Некрасов А | 16h | 16h |
| 3143 | 12.4.5.2 | осмотр износа |  | 4h | 2026-06-26 09:00 | 2026-06-26 13:00 |  |  | 191.09d | start no earlier than 2026-06-26 09:00 | Тимофеев В | 4h |  |
| 3144 | 12.4.6 | **дробилка ДМС3** |  | 0.5d | 2026-05-11 09:00 | 2026-05-11 13:00 |  |  | 225.09d |  | ТО | 8h |  |
| 3145 | 12.4.6.1 | замена подшипник буксы сторона мотора |  | 4h | 2026-05-11 09:00 | 2026-05-11 13:00 |  |  | 225.09d | start no earlier than 2026-05-10 09:00 | Бундин В | 4h |  |
| 3146 | 12.4.7 | шнек 3 дробилка-накопитель |  | 1d? | 2023-12-28 09:00 | 2023-12-28 18:00 |  |  | 841.59d | start no earlier than 2023-12-28 09:00 | ТО | 8h |  |
| 3147 | 12.4.8 | дробилка 11квт |  | 1d? | 2023-12-28 09:00 | 2023-12-28 18:00 |  |  | 841.59d | start no earlier than 2023-12-28 09:00 | ТО | 8h |  |
| 3148 | 12.4.9 | дробилка 7,5квт |  | 1d? | 2023-12-28 09:00 | 2023-12-28 18:00 |  |  | 841.59d | start no earlier than 2023-12-28 09:00 | ТО | 8h |  |
| 3149 | 12.4.10 | вибросито А |  | 1d? | 2023-12-28 09:00 | 2023-12-28 18:00 |  |  | 841.59d | start no earlier than 2023-12-28 09:00 | ТО | 8h |  |
| 3150 | 12.4.11 | вибросито Б |  | 1d? | 2023-12-28 09:00 | 2023-12-28 18:00 |  |  | 841.59d | start no earlier than 2023-12-28 09:00 | ТО | 8h |  |
| 3151 | 12.4.12 | **электрооборудование** |  | 1d? | 2023-12-28 09:00 | 2023-12-28 18:00 |  |  | 841.59d |  | ТО | 48h |  |
| 3152 | 12.4.12.1 | ВРУ7 |  | 1d? | 2023-12-28 09:00 | 2023-12-28 18:00 |  |  | 841.59d | start no earlier than 2023-12-28 09:00 | ТО | 8h |  |
| 3153 | 12.4.12.2 | ЩР2 |  | 1d? | 2023-12-28 09:00 | 2023-12-28 18:00 |  |  | 841.59d | start no earlier than 2023-12-28 09:00 | ТО | 8h |  |
| 3154 | 12.4.12.3 | котельная газовая 5 цех |  | 1d? | 2023-12-28 09:00 | 2023-12-28 18:00 |  |  | 841.59d | start no earlier than 2023-12-28 09:00 | ТО | 8h |  |
| 3155 | 12.4.12.4 | бойлеры душ |  | 1d? | 2023-12-28 09:00 | 2023-12-28 18:00 |  |  | 841.59d | start no earlier than 2023-12-28 09:00 | ТО | 8h |  |
| 3156 | 12.4.12.5 | вентилятор вытяжной в дробилке |  | 1d? | 2023-12-28 09:00 | 2023-12-28 18:00 |  |  | 841.59d | start no earlier than 2023-12-28 09:00 | ТО | 8h |  |

| ID | WBS | Task | Type | Duration | Start | Finish | Complete | Remaining | Total slack | Constraint | Resources | Work | Actual work |
| --- | --- | --- | --- | --- | --- | --- | --- | --- | --- | --- | --- | --- | --- |
| 3157 | 12.5 | **адм корпус** |  | 1d? | 2023-12-28 09:00 | 2023-12-28 18:00 |  |  | 841.59d |  | ТО | 24h |  |
| 3158 | 12.5.1 | бойлер туалет |  | 1d? | 2023-12-28 09:00 | 2023-12-28 18:00 |  |  | 841.59d | start no earlier than 2023-12-28 09:00 | ТО | 8h |  |
| 3159 | 12.5.2 | ОЩР |  | 1d? | 2023-12-28 09:00 | 2023-12-28 18:00 |  |  | 841.59d | start no earlier than 2023-12-28 09:00 | ТО | 8h |  |
| 3160 | 12.6 | **склад упаковки** |  | 1d? | 2023-12-28 09:00 | 2023-12-28 18:00 |  |  | 841.59d |  | ТО | 32h |  |
| 3161 | 12.6.1 | **электрооборудование** |  | 1d? | 2023-12-28 09:00 | 2023-12-28 18:00 |  |  | 841.59d |  | ТО | 24h |  |
| 3162 | 12.6.1.1 | ЩО и ЩР |  | 1d? | 2023-12-28 09:00 | 2023-12-28 18:00 |  |  | 841.59d | start no earlier than 2023-12-28 09:00 | ТО | 8h |  |
| 3163 | 12.6.1.2 | санитарный насос |  | 1d? | 2023-12-28 09:00 | 2023-12-28 18:00 |  |  | 841.59d | start no earlier than 2023-12-28 09:00 | ТО | 8h |  |
| 3164 | 12.7 | **цех наполнителей** |  | 1d? | 2023-12-28 09:00 | 2023-12-28 18:00 |  |  | 841.59d |  | ТО | 56h |  |
| 3165 | 12.7.1 | ЩО и ЩР |  | 1d? | 2023-12-28 09:00 | 2023-12-28 18:00 |  |  | 841.59d | start no earlier than 2023-12-28 09:00 | ТО | 8h |  |
| 3166 | 12.7.2 | комппрессор |  | 1d? | 2023-12-28 09:00 | 2023-12-28 18:00 |  |  | 841.59d | start no earlier than 2023-12-28 09:00 | ТО | 8h |  |
| 3167 | 12.7.3 | конвейер загрузки |  | 1d? | 2023-12-28 09:00 | 2023-12-28 18:00 |  |  | 841.59d | start no earlier than 2023-12-28 09:00 | ТО | 8h |  |
| 3168 | 12.7.4 | дозатор НОТИС |  | 1d? | 2023-12-28 09:00 | 2023-12-28 18:00 |  |  | 841.59d | start no earlier than 2023-12-28 09:00 | ТО | 8h |  |
| 3169 | 12.7.5 | запайщик |  | 1d? | 2023-12-28 09:00 | 2023-12-28 18:00 |  |  | 841.59d | start no earlier than 2023-12-28 09:00 | ТО | 8h |  |
| 3170 | 12.7.6 | вилочный погрузчик тойота |  | 1d? | 2023-12-28 09:00 | 2023-12-28 18:00 |  |  | 841.59d | start no earlier than 2023-12-28 09:00 | ТО | 8h |  |
| 3171 | 12.8 | Установка розетки под литийионный аккумклятор 3-х фазный, установить рядом с существующей ВРУ |  | 2h | 2026-07-08 09:00 | 2026-07-08 11:00 |  |  | 183.34d | start no earlier than 2026-07-08 08:00 | Бундин В | 2h |  |
| 3172 | 13 | **синий склад** |  | 111.38d | 2026-05-07 09:00 A | 2026-09-30 12:00 | 52% | 53.27d | 116.22d |  |  | 23h | 12h |
| 3173 | 13.1 | установить на место крышки вентиляторов |  | 1h | 2026-08-17 09:00 A | 2026-08-17 10:00 A | 100% |  |  | start no earlier than 2026-08-17 09:00 | Бобренок В | 1h | 1h |
| 3174 | 13.2 | Монтаж доп освещения |  | 2h | 2026-09-26 09:00 A | 2026-09-26 11:00 A | 100% |  |  | start no earlier than 2026-09-26 09:00 | Бобренок В | 2h | 2h |
| 3175 | 13.3 | монтаж включателя света с улицы, возле вход. Двери |  | 3h | 2026-09-30 09:00 | 2026-09-30 12:00 |  |  | 116.22d | start no earlier than 2026-09-30 09:00 | Бобренок В | 3h |  |
| 3176 | 13.4 | расширить проем вверху для проезда погрузчиков, врезаются | manual | 1d | 2026-09-21 09:00 | 2026-09-21 18:00 |  |  |  | start no earlier than 2026-09-21 09:00 | Олег | 8h |  |
| 3177 | 13.5 | замерить диаметр крыльчатки двигателя экструдера, инфу передать мне |  | 1h | 2026-06-13 09:00 A | 2026-06-15 10:00 A | 100% |  |  | start no earlier than 2026-06-13 09:00 | Бобренок В | 1h | 1h |
| 3178 | 13.6 | найти амперметры 30А и 150А (сказать кол-во) |  | 2h | 2026-06-10 09:00 A | 2026-06-10 11:00 A | 100% |  |  | start no earlier than 2026-06-10 09:00 | Труфанов А | 2h | 2h |
| 3179 | 13.7 | Навести порядок на входе в синий склад |  | 2h | 2026-07-23 09:00 A | 2026-07-23 11:00 A | 100% |  |  | start no earlier than 2026-07-24 09:00 | Бундин В | 2h | 2h |
| 3180 | 13.8 | проверить и подписать все материалы в синем складе с Алексеем |  | 4h | 2026-05-07 09:00 A | 2026-05-07 13:00 A | 100% |  |  | start no earlier than 2026-05-07 09:00 | Шуранов Ю | 4h | 4h |

| ID | WBS | Task | Duration | Start | Finish | Predecessors | Complete | Constraint | Resources | Work | Actual work |
| --- | --- | --- | --- | --- | --- | --- | --- | --- | --- | --- | --- |
| 3181 | 14 | **хим лаб** | 652.25d? | 2024-01-11 08:00 A | 2026-07-13 11:00 A |  | 100% |  |  | 71.75h | 71.75h |
| 3182 | 14.1 | замена кран РР | 2h | 2026-07-13 09:00 A | 2026-07-13 11:00 A |  | 100% | start no earlier than 2026-07-13 09:00 | Тимофеев В | 2h | 2h |
| 3183 | 14.2 | ремонт термоконтроллера - замена реле / перепаять с сзоны ALARM | 1h | 2026-06-09 09:00 A | 2026-06-09 10:00 A |  | 100% | start no earlier than 2026-06-09 09:00 | Дедов В | 1h | 1h |
| 3184 | 14.3 | **усилить питание хим лаб, что бы не отключался автомат при вкл быт приборов** | 0.12d | 2026-05-29 09:00 A | 2026-05-29 10:00 A |  | 100% |  |  | 2h | 2h |
| 3185 | 14.3.1 | переключение питания хим лаб на отдельный ШУ | 1h | 2026-05-29 09:00 A | 2026-05-29 10:00 A |  | 100% | start no earlier than 2026-05-29 09:00 | Некрасов А; Бобренок В | 2h | 2h |
| 3186 | 14.4 | **ремонт бойлер вода - ПУН** | 10.25d | 2026-05-14 08:00 A | 2026-05-28 11:00 A |  | 100% |  |  | 4.75h | 4.75h |
| 3187 | 14.4.1 | замена из ЗИП | 1h | 2026-05-14 08:00 A | 2026-05-14 10:00 A |  | 100% | start no earlier than 2026-05-14 08:00 | Тимофеев В | 1h | 1h |
| 3188 | 14.4.2 | диагностика неисправности. Бойлер в слесарне | 1h | 2026-05-14 08:00 A | 2026-05-14 10:00 A |  | 100% | start no earlier than 2026-05-14 08:00 | Бобренок В | 1h | 1h |
| 3189 | 14.4.3 | заявка предохарнитель | 30min | 2026-05-15 09:00 A | 2026-05-15 09:30 A | 3188 | 100% | start no earlier than 2026-05-15 08:00 | Шуранов Ю | 0.5h | 0.5h |
| 3190 | 14.4.4 | контроль поставки | 15min | 2026-05-22 09:30 A | 2026-05-22 09:45 A | 3189FS+7d | 100% | start no earlier than 2026-05-15 08:00 | Шуранов Ю | 0.25h | 0.25h |
| 3191 | 14.4.5 | заменить на бойлере в слесарке термостата WY-S37A | 2h | 2026-05-28 09:00 A | 2026-05-28 11:00 A |  | 100% | start no earlier than 2026-05-28 09:00 | Тимофеев В | 2h | 2h |
| 3192 | 14.5 | **ремонт дистилятор** | 31d? | 2026-04-27 09:00 A | 2026-06-08 18:00 A |  | 100% |  |  | 17h | 17h |
| 3193 | 14.5.1 | заявка тен | 1h | 2026-04-27 09:00 A | 2026-04-27 10:00 A |  | 100% | start no earlier than 2026-04-27 09:00 | Шуранов Ю | 1h | 1h |
| 3194 | 14.5.2 | доставка | 1d? | 2026-06-05 09:00 A | 2026-06-05 18:00 A | 3193 | 100% | finish no earlier than 2026-06-05 18:00 | Карабанов | 8h | 8h |
| 3195 | 14.5.3 | замена. Больше не выбиывает | 1d? | 2026-06-05 18:00 A | 2026-06-08 18:00 A | 3194 | 100% | start no earlier than 2026-05-13 09:00 | Тимофеев В | 8h | 8h |
| 3196 | 14.6 | **ремонт АКВ_шесть** | 30d? | 2026-04-27 09:00 A | 2026-06-05 18:00 A |  | 100% |  |  | 11h | 11h |
| 3197 | 14.6.1 | заявка тен | 1h | 2026-04-27 09:00 A | 2026-04-27 10:00 A |  | 100% | start no earlier than 2026-04-27 09:00 | Шуранов Ю | 1h | 1h |
| 3198 | 14.6.2 | доставка | 1d? | 2026-06-05 09:00 A | 2026-06-05 18:00 A | 3197 | 100% | finish no earlier than 2026-06-05 18:00 | Карабанов | 8h | 8h |
| 3199 | 14.6.3 | замена | 2h | 2026-05-24 09:00 A | 2026-05-25 11:00 A |  | 100% | start no earlier than 2026-05-24 09:00 | Дедов В | 2h | 2h |
| 3200 | 14.7 | проверить прибор | 1d? | 2026-05-06 09:00 A | 2026-05-06 18:00 A |  | 100% | start no earlier than 2026-05-06 08:00 | Шуранов Ю | 8h | 8h |
| 3201 | 14.8 | датчик температуры ?? Заявка | 1d? | 2026-04-27 09:00 A | 2026-04-27 18:00 A |  | 100% | start no earlier than 2026-04-27 08:00 | Шуранов Ю | 8h | 8h |
| 3202 | 14.9 | дистилятор отключается ?? Заявка | 1d? | 2026-04-27 09:00 A | 2026-04-27 18:00 A |  | 100% | start no earlier than 2026-04-27 08:00 | Шуранов Ю | 8h | 8h |
| 3203 | 14.10 | перенос старый прибор в архив 5ц | 30min | 2026-04-20 09:00 A | 2026-04-20 09:30 A |  | 100% | start no earlier than 2026-04-20 08:00 | Кладовщики | 0.5h | 0.5h |
| 3204 | 14.11 | замена 2 вентилятора | 4h | 2024-01-16 08:00 A | 2024-01-16 13:00 A |  | 100% | start no earlier than 2024-01-16 08:00 | Бобренок В | 4h | 4h |
| 3205 | 14.12 | ремонт соленоид | 2h | 2024-01-16 08:00 A | 2024-01-16 11:00 A |  | 100% | start no earlier than 2024-01-16 08:00 | Тимофеев В | 2h | 2h |
| 3206 | 14.13 | ремонт вытяжка №2 диагностика вентилятор | 30min | 2024-01-11 08:00 A | 2024-01-11 09:30 A |  | 100% | start no earlier than 2024-01-11 08:00 | Дедов В | 0.5h | 0.5h |
| 3207 | 14.14 | замена насос " агрегат | 1h | 2024-01-11 08:00 A | 2024-01-11 10:00 A |  | 100% | start no earlier than 2024-01-11 08:00 | Дедов В | 1h | 1h |
| 3208 | 14.15 | замена тен по доставке | 2h | 2026-03-17 09:00 A | 2026-03-17 11:00 A |  | 100% | start no earlier than 2026-03-17 09:00 | Макаревич А | 2h | 2h |

| ID | WBS | Task | Duration | Start | Finish | Predecessors | Complete | Remaining | Total slack | Constraint | Resources | Work | Actual work |
| --- | --- | --- | --- | --- | --- | --- | --- | --- | --- | --- | --- | --- | --- |
| 3209 | 15 | **цех наполнителей** | 194.12d | 2025-07-14 09:00 A | 2026-04-10 10:00 A |  | 100% |  |  |  |  | 10h | 10h |
| 3210 | 15.1 | взять со склада АКБ и клеммы заменить на погрузчике, старый АКБ отдать на 2 этаж склад | 1h | 2026-04-10 09:00 A | 2026-04-10 10:00 A |  | 100% |  |  | start no earlier than 2026-04-10 09:00 | Тимофеев В | 1h | 1h |
| 3211 | 15.2 | поменять пневмоцилиндр на нотис | 1h | 2026-04-09 09:00 A | 2026-04-09 10:00 A |  | 100% |  |  | start no earlier than 2026-04-10 09:00 | Тимофеев В | 1h | 1h |
| 3212 | 15.3 | проверить дист. Воду в АКБ погрузчика | 1h | 2026-04-01 09:00 A | 2026-04-01 10:00 A |  | 100% |  |  | start no earlier than 2026-04-01 09:00 | Тимофеев В | 1h | 1h |
| 3213 | 15.4 | просверлить больше, нарезать резьбу для крепления стола запайщика, резьба сорвана | 1h | 2026-03-20 09:00 A | 2026-03-20 10:00 A |  | 100% |  |  | start no earlier than 2026-03-20 09:00 | Бундин В | 1h | 1h |
| 3214 | 15.5 | ремонт компрессор. Проверка конденсаторов/не запускается мотор. Ключь у кладовщиков | 4h | 2025-07-14 09:00 A | 2025-07-14 13:00 A |  | 100% |  |  | start no earlier than 2025-07-14 09:00 | Бобренок В | 4h | 4h |
| 3215 | 15.6 | ТО компрессор / конвейер / запайщик | 2h | 2026-03-09 09:00 A | 2026-03-09 11:00 A |  | 100% |  |  | start no earlier than 2026-03-09 09:00 | Тимофеев В | 2h | 2h |
| 3216 | 16 | **офис** | 941.25d? | 2023-03-10 09:00 A | 2026-10-07 11:00 |  | 97% | 26.18d? | 110.34d |  |  | 223.67h | 217.17h |
| 3218 | 16.1 | Кинуть времянку в серверную | 1h | 2026-10-02 09:00 A | 2026-10-02 10:00 A |  | 100% |  |  | start no earlier than 2026-10-02 09:00 | Некрасов А; Труфанов А | 2h | 2h |
| 3219 | 16.2 | монтаж полочка Курдюмова продожить | 1h | 2026-09-22 09:00 A | 2026-09-22 10:00 A |  | 100% |  |  | start no earlier than 2026-09-22 09:00 | Тимофеев В | 1h | 1h |
| 3220 | 16.3 | **Ремонт бойлера** | 13.25d? | 2026-09-08 09:00 A | 2026-09-21 11:00 A |  | 100% |  |  |  |  | 7h | 7h |
| 3221 | 16.3.1 | Заявка тэна | 1d? | 2026-09-08 09:00 A | 2026-09-08 18:00 A |  | 100% |  |  | start no earlier than 2026-09-08 09:00 |  |  |  |
| 3222 | 16.3.2 | контроль доставка | 1d? | 2026-09-14 09:00 A | 2026-09-14 18:00 A |  | 100% |  |  | start no earlier than 2026-09-14 09:00 |  |  |  |
| 3223 | 16.3.3 | Повесить отремонтированный бойлер обратно в офис - проверить работу | 1h | 2026-09-18 09:00 A | 2026-09-18 10:00 A |  | 100% |  |  | start no earlier than 2026-09-18 09:00 | Тимофеев В | 1h | 1h |
| 3224 | 16.3.4 | устранить утечку / монтаж | 2h | 2026-09-21 09:00 A | 2026-09-21 11:00 A |  | 100% |  |  | start no earlier than 2026-09-21 09:00 | Некрасов А; Труфанов А | 4h | 4h |
| 3225 | 16.3.5 | Замена ТЭНа на бойлере, который в слесарке, получить на складе упаковки | 1h | 2026-09-16 09:00 A | 2026-09-16 10:00 A |  | 100% |  |  | start no earlier than 2026-09-16 08:00 | Бундин В | 1h | 1h |
| 3226 | 16.3.6 | Дефектовка бойлера, лежит в слесарке, проверка ТЭНов и анода, показывал кз по тэнам | 1h | 2026-09-14 09:00 A | 2026-09-14 10:00 A |  | 100% |  |  | start no earlier than 2026-09-14 08:00 | Макаревич А | 1h | 1h |
| 3227 | 16.4 | демонтаж шурупы с наличиников | 10min | 2026-07-10 09:00 A | 2026-07-10 09:10 A |  | 100% |  |  | start no earlier than 2026-07-10 09:00 | Тимофеев В | 0.17h | 0.17h |
| 3228 | 16.5 | взять на складе ламочку Е27 малого размера и поменять в муж. Туалете и закрыть плафоном | 1h | 2026-06-29 09:00 A | 2026-06-29 10:00 A |  | 100% |  |  | start no earlier than 2026-06-29 09:00 | Тимофеев В | 1h | 1h |
| 3229 | 16.6 | собрать аккуратно стеллаж для Буслаева (стеллаж на складе у Веры, подписан буквами ГД, мечковская) | 3h | 2026-06-13 09:00 A | 2026-06-15 12:00 A |  | 100% |  |  | start no earlier than 2026-06-13 09:00 | Бобренок В | 3h | 3h |
| 3230 | 16.7 | посмотреть что с розеткой у Ширяевой в кабинете | 1h | 2026-06-22 09:00 A | 2026-06-22 10:00 A |  | 100% |  |  | start no earlier than 2026-06-22 09:00 | Тимофеев В | 1h | 1h |
| 3231 | 16.8 | бухгалтерия настройка язычка двери, что бы дверь закрывалась без усилия | 1h | 2026-05-28 09:00 A | 2026-05-28 10:00 A |  | 100% |  |  | start no earlier than 2026-05-28 09:00 | Тимофеев В | 1h | 1h |
| 3232 | 16.9 | **полка мебельная** | 25.12d | 2026-05-18 09:00 A | 2026-06-22 10:00 A |  | 100% |  |  |  |  | 1.5h | 1.5h |
| 3233 | 16.9.1 | заявка крепеж | 15min | 2026-05-18 09:00 A | 2026-05-18 09:15 A |  | 100% |  |  | start no earlier than 2026-05-18 09:00 | Шуранов Ю | 0.25h | 0.25h |
| 3234 | 16.9.2 | контроль доставка | 15min | 2026-05-27 09:15 A | 2026-05-27 09:30 A | 3233FS+7d | 100% |  |  | start no earlier than 2026-05-15 08:00 | Шуранов Ю | 0.25h | 0.25h |
| 3235 | 16.9.3 | крепеж полки у Юли в кабинете (уголки на складе) | 1h | 2026-06-22 09:00 A | 2026-06-22 10:00 A | 3234 | 100% |  |  | start no earlier than 2026-06-22 09:00 | Тимофеев В | 1h | 1h |
| 3236 | 16.10 | монтаж диплом на стену нач хим лаб | 30min | 2026-05-15 09:00 A | 2026-05-15 09:30 A |  | 100% |  |  | start no earlier than 2026-05-15 09:00 | Тимофеев В | 0.5h | 0.5h |
| 3237 | 16.11 | монтаж розеток в серверной продолжить | 2h | 2026-04-23 09:00 A | 2026-04-23 11:00 A |  | 100% |  |  | start no earlier than 2026-04-23 09:00 | Тимофеев В; Бобренок В | 4h | 4h |
| 3238 | 16.12 | ремонт стул в столовая, спинка | 1h | 2026-04-21 09:00 A | 2026-04-21 10:00 A |  | 100% |  |  | start no earlier than 2026-04-21 09:00 | Тимофеев В | 1h | 1h |

| ID | WBS | Task | Duration | Start | Finish | Complete | Remaining | Total slack | Constraint | Resources | Work | Actual work |
| --- | --- | --- | --- | --- | --- | --- | --- | --- | --- | --- | --- | --- |
| 3239 | 16.13 | **полочка под пк** | 0.12d | 2026-06-26 09:00 A | 2026-06-26 10:00 A | 100% |  |  |  | Тимофеев В | 2h | 2h |
| 3240 | 16.13.1 | замер | 1h | 2026-06-26 09:00 A | 2026-06-26 10:00 A | 100% |  |  | start no earlier than 2026-06-26 09:00 | Тимофеев В | 1h | 1h |
| 3241 | 16.14 | прикрутить декоративную пластину на ручке в столовой | 1h | 2026-04-15 09:00 A | 2026-04-15 10:00 A | 100% |  |  | start no earlier than 2026-04-17 08:00 | Макаревич А | 1h | 1h |
| 3242 | 16.15 | монтаж розеток 4 шт. в серверной | 2h | 2026-04-15 09:00 A | 2026-04-15 11:00 A | 100% |  |  | start no earlier than 2026-04-17 08:00 | Макаревич А | 2h | 2h |
| 3243 | 16.16 | протянуть кабель UTP от кабинета Курдюмовой до переговорки | 2h | 2026-04-17 08:00 A | 2026-04-17 11:00 A | 100% |  |  | start no earlier than 2026-04-17 08:00 | Тимофеев В; Некрасов А | 4h | 4h |
| 3244 | 16.17 | убрать шнурок у Курдюмовой в кабинете | 1h | 2026-04-17 08:00 A | 2026-04-17 10:00 A | 100% |  |  | start no earlier than 2026-04-17 08:00 | Тимофеев В | 1h | 1h |
| 3245 | 16.18 | ремонт кровля над каб Курдюмовой | 20d | 2026-06-15 09:00 A | 2026-07-10 18:00 A | 100% |  |  | start no earlier than 2026-06-15 09:00 | Олег | 160h | 160h |
| 3246 | 16.19 | ремонт крепеж пано каб продаж | 1h | 2026-03-24 08:00 A | 2026-03-24 10:00 A | 100% |  |  | start no earlier than 2026-03-24 08:00 | Тимофеев В | 1h | 1h |
| 3247 | 16.20 | крепить розетку для проектора | 2h | 2025-04-09 09:00 A | 2025-04-09 11:00 A | 100% |  |  | start no earlier than 2025-04-09 09:00 | Тимофеев В | 2h | 2h |
| 3248 | 16.21 | упорядочить кабеля под тв | 2h | 2025-04-09 09:00 A | 2025-04-09 11:00 A | 100% |  |  | start no earlier than 2025-04-09 09:00 | Некрасов А | 2h | 2h |
| 3249 | 16.22 | выбивает автомат у Монича, нет селективности, замена автоматов. Ремонт освещения корридор | 4h | 2026-09-29 09:00 | 2026-09-29 13:00 |  |  | 117.09d | start no earlier than 2026-09-29 09:00 | Дедов В | 4h |  |
| 3250 | 16.23 | монтаж ключница для пожарной двери 2 и 3 этаж | 1h | 2026-03-16 09:00 A | 2026-03-16 10:00 A | 100% |  |  | start no earlier than 2026-03-16 09:00 | Тимофеев В | 1h | 1h |
| 3251 | 16.24 | замена регистр отопления нач снабжения | 2h | 2026-10-07 09:00 | 2026-10-07 11:00 |  |  | 110.34d | start no earlier than 2026-10-07 09:00 | Некрасов А | 2h |  |
| 3252 | 16.25 | сделать заглушки в комнату пищи | 30min | 2026-09-01 09:00 | 2026-09-01 09:30 |  |  | 144.53d | start no earlier than 2026-09-01 09:00 | Домоводов К | 0.5h |  |
| 3253 | 16.26 | **вентиляция в переговорке и к приема пищи** | 812d? | 2023-03-10 09:00 A | 2026-04-20 18:00 A | 100% |  |  |  |  | 17h | 17h |
| 3254 | 16.26.1 | взять на желтом складе (наша половина) вентилятор канальный и проверить работает или нет | 1h | 2023-03-10 09:00 A | 2023-03-10 10:00 A | 100% |  |  |  | Бундин В | 1h | 1h |
| 3255 | 16.26.2 | заявка на КП = 300к | 4h | 2026-03-13 09:00 A | 2026-03-13 13:00 A | 100% |  |  | start no earlier than 2026-03-13 09:00 | Домоводов К | 4h | 4h |
| 3256 | 16.26.3 | монтаж ВК200 + кабель | 6h | 2026-04-20 09:00 A | 2026-04-20 16:00 A | 100% |  |  | start no earlier than 2026-04-20 08:00 | Некрасов А; Труфанов А | 12h | 12h |
| 3257 | 16.26.4 | установка на крыше офиса, приточка в переговорку | 1d? | 2026-04-20 09:00 A | 2026-04-20 18:00 A | 100% |  |  | start no earlier than 2026-04-20 09:00 |  |  |  |
| 3258 | 16.27 | **подсветка продукции в пепреговорке вращающийся лаезерный круг с эмблемой** | 0.12d | 2026-03-13 09:00 A | 2026-03-13 10:00 A | 100% |  |  |  |  | 1h | 1h |
| 3259 | 16.27.1 | найти поставщика / узнать стоимость | 1h | 2026-03-13 09:00 A | 2026-03-13 10:00 A | 100% |  |  | start no earlier than 2026-03-13 09:00 | Зорькин В | 1h | 1h |
| 3260 | 17 | **склад упаковки** | 141.5d? | 2026-04-02 09:00 A | 2026-10-06 13:00 | 98% | 3.04d? | 111.09d |  |  | 390.75h | 379.75h |
| 3261 | 17.1 | Повесить доп светильники 3 шт (спросить у Лехи, где нужны) | 3h | 2026-10-02 09:00 A | 2026-10-02 12:00 A | 100% |  |  | start no earlier than 2026-10-02 09:00 | Труфанов А; Некрасов А | 6h | 6h |
| 3262 | 17.2 | переделать крепление рамы наруж блока - к МК задния, анкера убрать | 4h | 2026-10-06 09:00 | 2026-10-06 13:00 |  |  | 111.09d | start no earlier than 2026-10-06 09:00 | Некрасов А | 4h |  |
| 3263 | 17.3 | установить светильники над столом Веры и перенести светильник над стеллажами | 3h | 2026-08-25 09:00 | 2026-08-25 12:00 |  |  | 149.22d | start no earlier than 2026-08-25 09:00 | Тимофеев В; Некрасов А | 6h |  |
| 3264 | 17.4 | втягиваем кабель 5х4 от реф, для подключения кондиционера, место установки щитка покажу- подключаем кондиционер | 1d? | 2026-07-31 08:00 A | 2026-07-31 18:00 A | 100% |  |  | start no earlier than 2026-07-31 08:00 | Труфанов А; Бобренок В | 16h | 16h |
| 3265 | 17.5 | сделать акты списания по результатам инвентаризации | 1d? | 2026-06-22 09:00 A | 2026-06-22 18:00 A | 100% |  |  | start no earlier than 2026-06-22 09:00 | Шуранов Ю | 8h | 8h |

| ID | WBS | Task | Type | Duration | Start | Finish | Predecessors | Complete | Remaining | Total slack | Free slack | Constraint | Resources | Work | Actual work |
| --- | --- | --- | --- | --- | --- | --- | --- | --- | --- | --- | --- | --- | --- | --- | --- |
| 3266 | 17.6 | **установить бойлер** |  | 92.12d | 2026-06-01 09:00 A | 2026-09-28 10:00 |  | 89% | 10.24d | 118.47d |  |  |  | 13h | 12h |
| 3267 | 17.6.1 | Замена тэна на бойлере |  | 1h | 2026-09-28 09:00 | 2026-09-28 10:00 |  |  |  | 118.47d |  | start no earlier than 2026-09-28 08:00 | Бобренок В | 1h |  |
| 3268 | 17.6.2 | монтаж кабель + розетка с щитка 1 этажа на 2 этаж |  | 4h | 2026-06-03 09:00 A | 2026-06-03 13:00 A |  | 100% |  |  |  | start no earlier than 2026-06-03 09:00 | Некрасов А; Бундин В | 8h | 8h |
| 3269 | 17.6.3 | монтаж бойлер на стену |  | 2h | 2026-06-01 09:00 A | 2026-06-01 11:00 A | 3268 | 100% |  |  |  | start no earlier than 2026-06-01 09:00 | Тимофеев В | 2h | 2h |
| 3270 | 17.6.4 | подключение сантехника |  | 2h | 2026-06-16 09:00 A | 2026-06-16 11:00 A | 3269 | 100% |  |  |  | start no earlier than 2026-06-16 09:00 | Тимофеев В | 2h | 2h |
| 3271 | 17.7 | отремонтировать ручку на входной двери |  | 1h | 2026-05-16 09:00 A | 2026-05-18 10:00 A |  | 100% |  |  |  | start no earlier than 2026-05-16 09:00 |  |  |  |
| 3272 | 17.8 | **анкерить стеллажи** |  | 26d | 2026-05-15 09:00 A | 2026-06-21 13:00 A |  | 100% |  |  |  |  |  | 4.75h | 4.75h |
| 3273 | 17.8.1 | заявка анкеры |  | 30min | 2026-05-15 09:00 A | 2026-05-15 09:30 A |  | 100% |  |  |  | start no earlier than 2026-05-15 09:00 | Шуранов Ю | 0.5h | 0.5h |
| 3274 | 17.8.2 | контроль доставка |  | 15min | 2026-05-27 09:30 A | 2026-05-27 09:45 A | 3273FS+10d | 100% |  |  |  | start no earlier than 2026-05-14 08:00 | Шуранов Ю | 0.25h | 0.25h |
| 3275 | 17.8.3 | монтаж / указать доделать оставшиеся анкера | manual | 4h | 2026-06-21 09:00 A | 2026-06-21 13:00 A | 3274 | 100% |  |  |  | start no earlier than 2026-06-21 09:00 | Бундин В | 4h | 4h |
| 3276 | 17.9 | заменить тросик на воротах |  | 2h | 2026-04-29 09:00 A | 2026-04-29 11:00 A |  | 100% |  |  |  | start no earlier than 2026-04-29 09:00 | Тимофеев В; Бундин В | 4h | 4h |
| 3277 | 17.10 | **замена двери** |  | 40.12d? | 2026-04-02 09:00 A | 2026-05-28 10:00 A |  | 100% |  |  |  |  |  | 329h | 329h |
| 3278 | 17.10.1 | заказ замерщика / получить счет |  | 1h | 2026-04-02 09:00 A | 2026-04-02 10:00 A |  | 100% |  |  |  | start no earlier than 2026-04-02 08:00 | Домоводов К | 1h | 1h |
| 3279 | 17.10.2 | изготовление |  | 40d | 2026-04-02 10:00 A | 2026-05-28 10:00 A | 3278 | 100% |  |  |  | start no earlier than 2026-04-02 08:00 | Подрядчик | 320h | 320h |
| 3280 | 17.10.3 | замена |  | 1d? | 2026-05-19 10:00 A | 2026-05-20 10:00 A | 3279 | 100% |  |  |  | start no earlier than 2026-04-02 08:00 | Подрядчик | 8h | 8h |
| 3281 | 18 | **РЭФ контейнеры** |  | 212.59d? | 2026-05-28 09:00 A | 2027-03-10 14:45 |  | 15% | 181.57d? | 0d |  |  |  | 66.25h | 13.5h |
| 3282 | 18.1 | уложить палеты в проходе к площадке / вырубить кусты с дворником |  | 1h | 2026-05-28 09:00 A | 2026-05-28 10:00 A |  | 100% |  |  |  | start no earlier than 2026-05-28 09:00 | Некрасов А; Бобренок В | 1h | 1h |
| 3283 | 18.2 | монтаж площадка обслуживания внешнего блока. 4 стойки труба 100 + лист 5 |  | 7h | 2026-05-28 09:00 A | 2026-05-28 17:00 A |  | 100% |  |  |  | start no earlier than 2026-05-28 09:00 | Некрасов А; Бобренок В | 12h | 12h |
| 3284 | 18.3 | **ремонт сплит система холодильная камера №1** |  | 27.12d | 2026-08-12 09:00 A | 2026-09-15 10:00 |  | 40% | 16.27d | 131.47d |  |  |  | 1.25h | 0.5h |
| 3285 | 18.3.1 | отправить фото участка |  | 15min | 2026-08-12 09:00 A | 2026-08-12 09:15 A |  | 100% |  |  |  | start no earlier than 2026-08-12 09:00 | Домоводов К | 0.25h | 0.25h |
| 3286 | 18.3.2 | получить счет на ремонт |  | 15min | 2026-09-08 09:00 A | 2026-09-08 09:15 A |  | 100% |  |  |  | start no earlier than 2026-09-08 09:00 | Домоводов К | 0.25h | 0.25h |
| 3287 | 18.3.3 | оплата |  | 15min | 2026-09-09 09:15 | 2026-09-09 09:30 | 3286FS+1d |  |  | 131.47d | 0d | start no earlier than 2026-09-09 09:00 | Домоводов К | 0.25h |  |
| 3288 | 18.3.4 | контроль даты ремонта |  | 15min | 2026-09-14 09:30 | 2026-09-14 09:45 | 3287FS+5d |  |  | 131.47d | 0d | start no earlier than 2026-08-10 08:00 | Зорькин В | 0.25h |  |
| 3289 | 18.3.5 | приемка работ |  | 15min | 2026-09-15 09:45 | 2026-09-15 10:00 | 3288FS+1d |  |  | 131.47d |  | start no earlier than 2026-08-10 08:00 | Зорькин В | 0.25h |  |

| ID | WBS | Task | Type | Duration | Start | Finish | Predecessors | Complete | Remaining | Total slack | Free slack | Constraint | Resources | Work | Actual work |
| --- | --- | --- | --- | --- | --- | --- | --- | --- | --- | --- | --- | --- | --- | --- | --- |
| 3290 | 18.4 | **монтаж холодильной машины №2** |  | 6.59d? | 2027-03-02 09:00 | 2027-03-10 14:45 |  |  |  | 0d |  |  |  | 45h |  |
| 3291 | 18.4.1 | решение какую ставить машину - на весну |  | 30min | 2027-03-02 09:00 | 2027-03-02 09:30 |  |  |  | 0d |  | start no earlier than 2027-03-02 09:00 | Домоводов К | 0.5h |  |
| 3292 | 18.4.2 | заключение договор |  | 3d | 2027-03-02 09:30 | 2027-03-05 09:30 | 3291 |  |  | 0d |  | start no earlier than 2026-08-12 09:00 | Домоводов К | 24h |  |
| 3293 | 18.4.3 | оплата |  | 15min | 2027-03-08 09:30 | 2027-03-08 09:45 | 3292FS+1d |  |  | 0d |  | start no earlier than 2026-08-18 09:00 | Домоводов К | 0.25h |  |
| 3294 | 18.4.4 | контроль доставки , начала работ |  | 1d? | 2027-03-08 09:45 | 2027-03-09 09:45 | 3293 |  |  | 0d |  | start no earlier than 2026-08-10 08:00 | Зорькин В | 8h |  |
| 3295 | 18.4.5 | **монтаж кабель силовой** |  | 0.5d | 2027-03-09 09:45 | 2027-03-09 14:45 | 3294 |  |  | 0d |  |  |  | 4.25h |  |
| 3296 | 18.4.5.1 | проверка поставки |  | 15min | 2027-03-09 09:45 | 2027-03-09 10:00 |  |  |  | 0.47d |  | start no earlier than 2026-08-10 08:00 | Зорькин В | 0.25h |  |
| 3297 | 18.4.5.2 | монтаж |  | 4h | 2027-03-09 09:45 | 2027-03-09 14:45 |  |  |  | 0d |  | start no earlier than 2026-08-10 08:00 | Некрасов А | 4h |  |
| 3298 | 18.4.6 | монтаж |  | 1d? | 2027-03-09 14:45 | 2027-03-10 14:45 | 3295 |  |  | 0d |  | start no earlier than 2026-08-10 08:00 | Подрядчик | 8h |  |
| 3299 | 18.5 | **утепление контейнера №2 под рефрежератор** |  | 0.5d | 2026-08-21 09:00 | 2026-08-21 13:00 |  |  |  | 0d |  |  |  | 7h |  |
| 3300 | 18.5.1 | продолжить выравнивание пены по периметру ножовкой для будующей установки профлиста (задание, если нечем заняться) | manual | 2h | 2026-08-21 09:00 | 2026-08-21 11:00 |  |  |  |  |  | start no earlier than 2026-08-21 09:00 | Некрасов А; Дедов В | 4h |  |
| 3301 | 18.5.2 | установка профлиста |  | 2h | 2026-08-21 11:00 | 2026-08-21 13:00 | 3300 |  |  | 151.09d |  | start no earlier than 2026-08-11 09:00 | Некрасов А; Дедов В | 3h |  |
| 3302 | 19 | **обучение** |  | 608.5d? | 2024-05-14 09:00 A | 2026-09-10 13:00 |  | 42% | 350.5d? | 136.09d |  |  |  | 130h | 58h |
| 3303 | 19.1 | **инструкция управлления дозаций жира** |  | 1.5d | 2026-09-09 09:00 | 2026-09-10 13:00 |  |  |  | 136.09d |  |  |  | 12h |  |
| 3304 | 19.1.1 | подготовка гидравлической и функциональной схем системы |  | 4h | 2026-09-09 09:00 | 2026-09-09 13:00 |  |  |  | 136.09d | 0d | start no earlier than 2026-09-09 09:00 | Зорькин В | 4h |  |
| 3305 | 19.1.2 | описание принципов регулирования |  | 4h | 2026-09-09 14:00 | 2026-09-09 18:00 | 3304 |  |  | 136.09d | 0d | start no earlier than 2026-08-31 09:00 | Зорькин В | 4h |  |
| 3306 | 19.1.3 | пошаговый алогритм действий по операциям замена фильтров, остановка пуск, настройка режимов |  | 4h | 2026-09-10 09:00 | 2026-09-10 13:00 | 3305 |  |  | 136.09d |  | start no earlier than 2026-08-31 09:00 | Зорькин В | 4h |  |
| 3307 | 19.2 | настройка и ремонты упаковщиков |  | 1h | 2026-02-27 09:00 A | 2026-02-27 10:00 A |  | 100% |  |  |  | start no earlier than 2026-02-27 08:00 | Труфанов А; Бундин В | 2h | 2h |
| 3308 | 19.3 | подготовить памятку по чистке ножа для бестром |  | 4h | 2026-09-04 09:00 A | 2026-09-04 13:00 A |  | 100% |  |  |  | start no earlier than 2026-09-04 09:00 | Зорькин В | 4h | 4h |
| 3309 | 19.4 | бестром |  | 2h | 2025-09-02 09:00 A | 2025-09-02 11:00 A |  | 100% |  |  |  | start no earlier than 2025-09-02 09:00 | Труфанов А; Зорькин В | 4h | 4h |
| 3310 | 19.5 | квадропак |  | 2h | 2025-09-02 11:00 A | 2025-09-02 13:00 A | 3309 | 100% |  |  |  | start no earlier than 2025-09-02 09:00 | Труфанов А; Зорькин В | 4h | 4h |
| 3311 | 19.6 | инструкция парогенератор управление по датчику давления |  | 4h | 2025-01-16 09:00 A | 2025-01-16 13:00 A |  | 100% |  |  |  | start no earlier than 2025-01-16 09:00 | Зорькин В | 4h | 4h |
| 3312 | 19.7 | инструкция по работе на теко 1.5 новый |  | 2d | 2025-01-17 09:00 A | 2025-01-20 18:00 A | 3311 | 100% |  |  |  | start no earlier than 2025-01-17 09:00 | Зорькин В | 16h | 16h |
| 3313 | 19.8 | инструкция ремонт запайщика |  | 1d? | 2025-01-17 09:00 A | 2025-01-17 18:00 A |  | 100% |  |  |  | start no earlier than 2025-01-17 09:00 | Зорькин В | 8h | 8h |
| 3314 | 19.9 | Составить список ЗИП - ежедневно вносить приход / расход |  | 1h | 2024-05-14 09:00 | 2024-05-14 10:00 |  |  |  | 744.47d |  | start no earlier than 2024-05-14 09:00 | Шуранов Ю | 1h |  |
| 3315 | 19.10 | составить инструкцию по затягиванию фильеры и соосности муфты |  | 4h | 2024-05-14 09:00 | 2024-05-14 13:00 |  |  |  | 744.09d |  | start no earlier than 2024-05-14 09:00 | Шуранов Ю | 4h |  |
| 3316 | 19.11 | составитьт инструкцию настройка бестром - формирование шва |  | 4h | 2024-05-14 09:00 | 2024-05-14 13:00 |  |  |  | 744.09d |  | start no earlier than 2024-05-14 09:00 | Шуранов Ю | 4h |  |
| 3317 | 19.12 | составитьт инструкцию настройка бестром - заправка ленты зип лок |  | 4h | 2024-05-14 09:00 | 2024-05-14 13:00 |  |  |  | 744.09d |  | start no earlier than 2024-05-14 09:00 | Шуранов Ю | 4h |  |

| ID | WBS | Task | Duration | Start | Finish | Predecessors | Complete | Remaining | Total slack | Free slack | Constraint | Resources | Work | Actual work |
| --- | --- | --- | --- | --- | --- | --- | --- | --- | --- | --- | --- | --- | --- | --- |
| 3318 | 19.13 | **формирование шаблона настройки оборудования** | 4d | 2024-09-06 09:00 A | 2024-09-11 18:00 |  | 67% | 1.33d | 657.59d |  |  |  | 21h | 14h |
| 3319 | 19.13.1 | **БЕСТРОМ** | 2.25d | 2024-09-06 09:00 A | 2024-09-10 11:00 A |  | 100% |  |  |  |  |  | 7h | 7h |
| 3320 | 19.13.1.1 | определить базовые точки относительно которых будет проводится замер в 3х плоскостях - флажки верх, флажки низ, смыкание ножа, центр трубы | 1h | 2024-09-06 09:00 A | 2024-09-06 10:00 A |  | 100% |  |  |  | start no earlier than 2024-09-06 08:00 | Зорькин В | 1h | 1h |
| 3321 | 19.13.1.2 | обвести в PAINT фото методику измерений, присвоить \имя каждому размеру | 2h | 2024-09-06 10:00 A | 2024-09-06 12:00 A | 3320 | 100% |  |  |  | start no earlier than 2024-09-06 09:00 | Зорькин В | 2h | 2h |
| 3322 | 19.13.1.3 | создать карту / таблицу настройки. Размер-дата-фио | 2h | 2024-09-09 09:00 A | 2024-09-09 11:00 A | 3321 | 100% |  |  |  | start no earlier than 2024-09-09 09:00 | Зорькин В | 2h | 2h |
| 3323 | 19.13.1.4 | оформить ведение карты в журнал | 2h | 2024-09-10 09:00 A | 2024-09-10 11:00 A | 3322 | 100% |  |  |  | start no earlier than 2024-09-10 09:00 | Зорькин В | 2h | 2h |
| 3324 | 19.13.2 | **ТЕКО 1.5** | 0.88d | 2024-09-10 11:00 A | 2024-09-11 10:00 A | 3319 | 100% |  |  |  |  |  | 7h | 7h |
| 3325 | 19.13.2.1 | определить базовые точки относительно которых будет проводится замер в 3х плоскостях - флажки верх, флажки низ, смыкание ножа, центр трубы | 1h | 2024-09-10 11:00 A | 2024-09-10 12:00 A |  | 100% |  |  |  | start no earlier than 2024-09-10 09:00 | Зорькин В | 1h | 1h |
| 3326 | 19.13.2.2 | обвести в PAINT фото методику измерений, присвоить \имя каждому размеру | 2h | 2024-09-10 12:00 A | 2024-09-10 15:00 A | 3325 | 100% |  |  |  | start no earlier than 2024-09-06 08:00 | Зорькин В | 2h | 2h |
| 3327 | 19.13.2.3 | создать карту / таблицу настройки. Размер-дата-фио | 2h | 2024-09-10 15:00 A | 2024-09-10 17:00 A | 3326 | 100% |  |  |  | start no earlier than 2024-09-06 08:00 | Зорькин В | 2h | 2h |
| 3328 | 19.13.2.4 | оформить ведение карты в журнал | 2h | 2024-09-10 17:00 A | 2024-09-11 10:00 A | 3327 | 100% |  |  |  | start no earlier than 2024-09-06 08:00 | Зорькин В | 2h | 2h |
| 3329 | 19.13.3 | **ТЕКО 0,4** | 0.88d | 2024-09-11 10:00 | 2024-09-11 18:00 | 3324 |  |  | 657.59d |  |  |  | 7h |  |
| 3330 | 19.13.3.1 | определить базовые точки относительно которых будет проводится замер в 3х плоскостях - флажки верх, флажки низ, смыкание ножа, центр трубы | 1h | 2024-09-11 10:00 | 2024-09-11 11:00 |  |  |  | 657.59d | 0d | start no earlier than 2024-09-06 08:00 | Зорькин В | 1h |  |
| 3331 | 19.13.3.2 | обвести в PAINT фото методику измерений, присвоить \имя каждому размеру | 2h | 2024-09-11 11:00 | 2024-09-11 13:00 | 3330 |  |  | 657.59d | 0d | start no earlier than 2024-09-06 08:00 | Зорькин В | 2h |  |
| 3332 | 19.13.3.3 | создать карту / таблицу настройки. Размер-дата-фио | 2h | 2024-09-11 14:00 | 2024-09-11 16:00 | 3331 |  |  | 657.59d | 0d | start no earlier than 2024-09-06 08:00 | Зорькин В | 2h |  |
| 3333 | 19.13.3.4 | оформить ведение карты в журнал | 2h | 2024-09-11 16:00 | 2024-09-11 18:00 | 3332 |  |  | 657.59d |  | start no earlier than 2024-09-06 08:00 | Зорькин В | 2h |  |
| 3334 | 19.14 | **наполнение базы данных по занятиям, запись видео уроки** | 5.12d | 2024-09-09 09:00 A | 2024-09-16 10:00 |  | 5% | 4.88d | 655.47d |  |  |  | 42h | 2h |
| 3335 | 19.14.1 | заяавка фотокамера, штатив | 1h | 2024-09-09 09:00 A | 2024-09-09 10:00 A |  | 100% |  |  |  | start no earlier than 2024-09-09 09:00 | Зорькин В | 1h | 1h |
| 3336 | 19.14.2 | доставка | 5d | 2024-09-09 10:00 | 2024-09-16 10:00 | 3335 |  |  | 655.47d |  | start no earlier than 2024-09-06 08:00 | Мультан | 40h |  |
| 3337 | 19.14.3 | **Бестром** | 0.12d | 2024-09-16 09:00 A | 2024-09-16 10:00 A |  | 100% |  |  |  |  |  | 1h | 1h |
| 3338 | 19.14.3.1 | урок 1 | 1h | 2024-09-16 09:00 A | 2024-09-16 10:00 A | 3336 | 100% |  |  |  | start no earlier than 2024-09-16 09:00 | Зорькин В | 1h | 1h |
| 3339 | 20 | **администрантивные** | 131.25d | 2026-03-19 09:00 A | 2026-09-15 11:00 |  | 89% | 14.45d | 131.34d |  |  |  | 99.92h | 88.92h |
| 3340 | 20.1 | спсиание материалов | 6h | 2026-09-01 09:00 | 2026-09-01 16:00 |  |  |  | 143.84d |  | start no earlier than 2026-09-01 09:00 | Шуранов Ю | 6h |  |
| 3341 | 20.2 | составить список остатков шнеков в таблицу зип | 2h | 2026-09-01 09:00 | 2026-09-01 11:00 |  |  |  | 144.34d |  | start no earlier than 2026-09-01 09:00 | Шуранов Ю | 2h |  |
| 3342 | 20.3 | подготовить спсток перчаток | 3h | 2026-03-19 09:00 A | 2026-03-19 12:00 A |  | 100% |  |  |  | start no earlier than 2026-03-19 08:00 | Зорькин В | 3h | 3h |
| 3343 | 20.4 | подготовка данных дебеторская задолжность | 3h | 2026-03-19 09:00 A | 2026-03-19 12:00 A |  | 100% |  |  |  | start no earlier than 2026-03-19 08:00 | Зорькин В | 3h | 3h |
| 3344 | 20.5 | договор по ремонту стиральных машинок. Переговоры | 1h | 2026-09-01 09:00 | 2026-09-01 10:00 |  |  |  | 144.47d |  | start no earlier than 2026-09-01 09:00 | Шуранов Ю | 1h |  |
| 3345 | 20.6 | Составить список на год ППР (планово-предупредительные работы) на оборудовании Цеха №1, Цеха №2, Цеха навесок. | 2h | 2026-09-01 09:00 | 2026-09-01 11:00 |  |  |  | 144.34d |  | start no earlier than 2026-09-01 09:00 | Шуранов Ю | 2h |  |

| ID | WBS | Task | Type | Duration | Start | Finish | Predecessors | Complete | Remaining | Total slack | Free slack | Constraint | Resources | Work | Actual work |
| --- | --- | --- | --- | --- | --- | --- | --- | --- | --- | --- | --- | --- | --- | --- | --- |
| 3346 | 20.7 | **Ключи на шкафы** |  | 111.25d | 2026-04-16 09:00 A | 2026-09-15 11:00 A |  | 100% |  |  |  |  |  | 82.75h | 82.75h |
| 3347 | 20.7.1 | Заказать |  | 30min | 2026-04-16 09:00 A | 2026-04-16 09:30 A |  | 100% |  |  |  | start no earlier than 2026-04-16 09:00 | Зорькин В | 0.5h | 0.5h |
| 3348 | 20.7.2 | доставить |  | 10d | 2026-04-16 09:30 A | 2026-04-30 09:30 A | 3347 | 100% |  |  |  | start no earlier than 2026-04-14 09:00 | Карабанов | 80h | 80h |
| 3349 | 20.7.3 | контроль доставка |  | 15min | 2026-05-15 09:00 A | 2026-05-15 09:15 A |  | 100% |  |  |  | start no earlier than 2026-05-15 09:00 | Зорькин В | 0.25h | 0.25h |
| 3350 | 20.7.4 | Повешать на веревочку ключи на все шкафы ВРУ и электрощитки (ключи на складе, веревочки взять на производстве, нитки) |  | 2h | 2026-09-15 09:00 A | 2026-09-15 11:00 A | 3348 | 100% |  |  |  | start no earlier than 2026-09-15 09:00 | Бобренок В | 2h | 2h |
| 3351 | 20.8 | Расписаться в нашем кабинете |  | 10min | 2026-07-28 09:00 A | 2026-07-28 09:10 A |  | 100% |  |  |  | start no earlier than 2026-07-28 09:00 | Макаревич А | 0.17h | 0.17h |
| 3352 | 21 | **ТБ** |  | 928.25d? | 2023-06-06 09:00 A | 2026-12-15 11:00 |  | 39% | 566.31d? | 61.34d |  |  |  | 249.92h | 96.67h |
| 3353 | 21.1 | инструктаж по ТБ оформить |  | 1h | 2026-08-31 09:00 | 2026-08-31 10:00 |  |  |  | 145.47d |  | start no earlier than 2026-08-31 09:00 | Шуранов Ю | 1h |  |
| 3354 | 21.2 | выполнить перелкаду похарных шлангов офис, 1ц |  | 2h | 2026-12-15 09:00 | 2026-12-15 11:00 |  |  |  | 61.34d |  | start no earlier than 2026-12-15 09:00 | Некрасов А; Труфанов А | 4h |  |
| 3355 | 21.3 | маркировка лестниц / оформление журналов |  | 2h | 2026-08-31 09:00 | 2026-08-31 11:00 |  |  |  | 145.34d |  | start no earlier than 2026-08-31 09:00 | Шуранов Ю | 2h |  |
| 3356 | 21.4 | внеплановый инструктаж персонала при аварии на проризводстве |  | 2h | 2025-03-26 09:00 A | 2025-03-26 11:00 A |  | 100% |  |  |  | start no earlier than 2025-03-26 08:00 | Шуранов Ю | 2h | 2h |
| 3357 | 21.5 | заявка на табличики НЕ ВКЛЮЧАТЬ |  | 10min | 2025-03-26 09:00 A | 2025-03-26 09:10 A |  | 100% |  |  |  | start no earlier than 2025-03-26 08:00 | Шуранов Ю | 0.17h | 0.17h |
| 3358 | 21.6 | офорить наряд допуск на монтаж кабеля КПП |  | 30min | 2024-08-05 09:00 A | 2024-08-05 09:30 A |  | 100% |  |  |  | start no earlier than 2024-08-05 09:00 | Шуранов Ю | 0.5h | 0.5h |
| 3359 | 21.7 | составить схемы кабельных линий по производству |  | 5d | 2026-09-01 09:00 | 2026-09-05 18:00 |  |  |  | 139.59d |  | start no earlier than 2026-09-01 09:00 | Шуранов Ю | 40h |  |
| 3360 | 21.8 | организация аттестации электроперсонала |  | 10d | 2024-05-14 09:00 A | 2024-05-27 18:00 A |  | 100% |  |  |  | start no earlier than 2024-05-14 09:00 | Шуранов Ю | 80h | 80h |
| 3361 | 21.9 | расклеить таблички на стремянки |  | 1h | 2023-10-18 09:00 A | 2023-10-18 10:00 A |  | 100% |  |  |  | start no earlier than 2023-10-18 09:00 | Тимофеев В | 1h | 1h |
| 3362 | 21.10 | вести журнал учета такелажных средств, механизмов и приспособлений |  | 1h | 2026-09-01 09:00 | 2026-09-01 10:00 |  |  |  | 144.47d |  | start no earlier than 2026-09-01 09:00 | Шуранов Ю | 1h |  |
| 3363 | 21.11 | комплект сиз для высотных работ |  | 1h | 2023-06-09 09:00 A | 2023-06-09 10:00 A |  | 100% |  |  |  | start no earlier than 2023-06-09 09:00 | Лобанов И | 1h | 1h |
| 3364 | 21.12 | тестер индикторная отвертка |  | 1h | 2024-05-14 09:00 A | 2024-05-14 10:00 A |  | 100% |  |  |  | start no earlier than 2024-05-14 09:00 | Шуранов Ю | 1h | 1h |
| 3365 | 21.13 | заявка на диэл коврик, галоши, перчатки, маска, таблички |  | 1h | 2026-09-01 09:00 | 2026-09-01 10:00 |  |  |  | 144.47d |  | start no earlier than 2026-09-01 09:00 | Шуранов Ю | 1h |  |
| 3366 | 21.14 | заявка спецодежда наладчикам |  | 1d? | 2024-05-14 09:00 A | 2024-05-14 18:00 A |  | 100% |  |  |  | start no earlier than 2024-05-14 09:00 | Шуранов Ю | 8h | 8h |
| 3367 | 21.15 | аттестация охрана труда |  | 10d | 2024-05-14 09:00 | 2024-05-27 18:00 |  |  |  | 734.59d |  | start no earlier than 2024-05-14 09:00 | Шуранов Ю | 80h |  |
| 3368 | 21.16 | **испытание стеллажей** |  | 847d? | 2023-06-06 09:00 A | 2026-09-02 18:00 |  | 11% | 753.75d? | 142.59d |  |  |  | 27.25h | 3h |
| 3369 | 21.16.1 | оплата испытания стеллажей контроль | milestone | 0d | 2023-06-06 09:00 A | 2023-06-06 09:00 A |  | 100% |  |  |  | start no earlier than 2023-06-06 09:00 | Домоводов К |  |  |
| 3370 | 21.16.2 | орг испытание стеллажей |  | 1h | 2023-07-11 09:00 A | 2023-07-11 10:00 A |  | 100% |  |  |  | start no earlier than 2023-07-11 09:00 | Домоводов К | 1h | 1h |
| 3371 | 21.16.3 | график осмотров стеллажей |  | 1d? | 2026-08-31 09:00 | 2026-08-31 18:00 | 3369 |  |  | 142.59d | 0d | start no earlier than 2026-08-31 09:00 | Домоводов К | 8h |  |
| 3372 | 21.16.4 | табличка КП |  | 1d? | 2026-09-01 09:00 | 2026-09-01 18:00 | 3371 |  |  | 142.59d | 0d | start no earlier than 2023-04-27 08:00 | Домоводов К | 8h |  |
| 3373 | 21.16.5 | журнал технического освидетельствования стеллажей |  | 1d? | 2026-09-02 09:00 | 2026-09-02 18:00 | 3372 |  |  | 142.59d |  | start no earlier than 2023-04-27 08:00 | Домоводов К | 8h |  |
| 3374 | 21.16.6 | запрос стоимости ремонта стеллажей в 5ц |  | 2h | 2026-08-18 09:00 A | 2026-08-18 11:00 A |  | 100% |  |  |  | start no earlier than 2026-08-18 09:00 | Шуранов Ю | 2h | 2h |
| 3375 | 21.16.7 | контрольизг |  | 15min | 2026-08-27 09:00 | 2026-08-27 09:15 |  |  |  | 147.56d |  | start no earlier than 2026-08-27 09:00 | Шуранов Ю | 0.25h |  |

| ID | WBS | Task | Type | Duration | Start | Finish | Predecessors | Complete | Remaining | Total slack | Constraint | Resources | Work | Actual work |
| --- | --- | --- | --- | --- | --- | --- | --- | --- | --- | --- | --- | --- | --- | --- |
| 3376 | 22 | **офис** |  | 325.03d | 2025-06-11 09:00 A | 2026-09-08 09:15 |  | 80% | 65.01d | 138.56d |  |  | 2.25h | 2h |
| 3377 | 22.1 | дует подконник офис - передать Олегу задачу |  | 15min | 2026-09-08 09:00 | 2026-09-08 09:15 |  |  |  | 138.56d | start no earlier than 2026-09-08 08:00 | Зорькин В | 0.25h |  |
| 3378 | 22.2 | ремонт светильник моргает , бухгалтерия |  | 1h | 2025-06-11 09:00 A | 2025-06-11 10:00 A |  | 100% |  |  | start no earlier than 2025-06-11 09:00 | Тимофеев В; Дедов В | 2h | 2h |
| 3379 | 23 | **территория** |  | 431.5d? | 2025-02-20 09:00 A | 2026-10-06 13:00 |  | 71% | 123.59d? | 111.09d |  |  | 368.75h | 260.5h |
| 3380 | 23.1 | Накачать котлы на всех узлах отопления |  | 4h | 2026-09-28 09:00 | 2026-09-28 13:00 |  |  |  | 118.09d | start no earlier than 2026-09-28 08:00 | Бобренок В | 4h |  |
| 3381 | 23.2 | Обход по воде протянутой до 5 цеха, проверка протечек во всех узлах по возможности устранить, если нет возможности, перекрыть в 3-ем цехе |  | 30min | 2026-09-21 09:00 A | 2026-09-21 09:30 A |  | 100% |  |  | start no earlier than 2026-09-21 08:00 | Макаревич А | 0.5h | 0.5h |
| 3382 | 23.3 | отсыпать спуск для парковки между цех 2 и 3 |  | 1d? | 2026-08-26 09:00 A | 2026-08-26 18:00 A |  | 100% |  |  | start no earlier than 2026-08-26 08:00 | Дворник | 8h | 8h |
| 3383 | 23.4 | отсыпать тропинку до КТПН |  | 1d? | 2026-08-27 09:00 | 2026-08-27 18:00 |  |  |  | 146.59d | start no earlier than 2026-08-27 09:00 | Дворник | 8h |  |
| 3384 | 23.5 | **орг водосток КПП - 5ц** |  | 0.03d | 2026-08-31 09:00 A | 2026-08-31 09:15 A |  | 100% |  |  |  |  | 0.25h | 0.25h |
| 3385 | 23.5.1 | получить КП от Вугара |  | 15min | 2026-08-31 09:00 A | 2026-08-31 09:15 A |  | 100% |  |  | start no earlier than 2026-08-31 09:00 | Домоводов К | 0.25h | 0.25h |
| 3386 | 23.6 | **орг водосток между 4 и5А** |  | 0.03d | 2026-08-31 09:00 A | 2026-08-31 09:15 A |  | 100% |  |  |  |  | 0.25h | 0.25h |
| 3387 | 23.6.1 | получить КП от Вугара |  | 15min | 2026-08-31 09:00 A | 2026-08-31 09:15 A |  | 100% |  |  | start no earlier than 2026-08-31 09:00 | Домоводов К | 0.25h | 0.25h |
| 3388 | 23.7 | **Белявский выравнивание стены** |  | 14.16d | 2026-08-13 09:00 A | 2026-09-02 10:15 A |  | 100% |  |  |  |  | 2.58h | 2.58h |
| 3389 | 23.7.1 | оформить план работ, эскиз предложенный ГИП Глуходед |  | 1h | 2026-09-01 09:00 A | 2026-09-01 10:00 A |  | 100% |  |  | start no earlier than 2026-09-01 09:00 | Домоводов К | 1h | 1h |
| 3390 | 23.7.2 | поиск подрядчика на перекладку панели |  | 1h | 2026-09-01 09:00 A | 2026-09-01 10:00 A |  | 100% |  |  | start no earlier than 2026-09-01 09:00 | Домоводов К | 1h | 1h |
| 3391 | 23.7.3 | звонок по решению от варианта ремонта Белявского |  | 20min | 2026-08-13 09:00 A | 2026-08-13 09:20 A |  | 100% |  |  | start no earlier than 2026-08-13 09:00 | Домоводов К | 0.33h | 0.33h |
| 3392 | 23.7.4 | ожидание КП от бригады Белявского | milestone | 0d | 2026-08-20 09:00 A | 2026-08-20 09:00 A | 3391FS+1d | 100% |  |  | start no earlier than 2026-08-20 09:00 | Домоводов К |  |  |
| 3393 | 23.7.5 | согл работы с ГД | milestone | 0d | 2026-09-01 10:00 A | 2026-09-01 10:00 A | 3389, 3392FS+1d | 100% |  |  | start no earlier than 2026-08-31 09:00 | Домоводов К |  |  |
| 3394 | 23.7.6 | заказ кран |  | 15min | 2026-09-02 10:00 A | 2026-09-02 10:15 A | 3393FS+1d | 100% |  |  | start no earlier than 2026-08-13 09:00 | Зорькин В | 0.25h | 0.25h |
| 3395 | 23.8 | замена тусклых или не рабочих ламп на мухоловках 1,2,5 цех.Схемы расположения предоставлю (количество ламп, которые поменял указать в отчете) |  | 4h | 2026-08-06 09:00 A | 2026-08-06 13:00 A |  | 100% |  |  | start no earlier than 2026-08-06 08:00 | Труфанов А | 4h | 4h |
| 3396 | 23.9 | **КПП ревизия прожектор, не горит** |  | 1.12d | 2026-07-08 09:00 A | 2026-07-09 10:00 A |  | 100% |  |  |  |  | 1.33h | 1.33h |
| 3397 | 23.9.1 | Сфотать шильдик от прожектора кпп |  | 20min | 2026-07-08 09:00 A | 2026-07-08 09:20 A |  | 100% |  |  | start no earlier than 2026-07-08 08:00 | Бундин В | 0.33h | 0.33h |
| 3398 | 23.9.2 | монтаж прожетора |  | 1h | 2026-07-09 09:00 A | 2026-07-09 10:00 A |  | 100% |  |  | start no earlier than 2026-07-09 09:00 | Бобренок В | 1h | 1h |
| 3399 | 23.10 | **установить люки колодцев возле на территории** |  | 1d? | 2026-09-25 09:00 A | 2026-09-25 18:00 |  | 50% | 0.5d? |  |  |  | 12h | 4h |
| 3400 | 23.10.1 | разложить по местам |  | 4h | 2026-09-25 09:00 A | 2026-09-25 13:00 A |  | 100% |  |  | start no earlier than 2026-09-25 08:00 | Бобренок В | 4h | 4h |
| 3401 | 23.10.2 | врезать в асфальт |  | 4h | 2026-10-06 09:00 | 2026-10-06 13:00 |  |  |  | 111.09d | start no earlier than 2026-10-06 09:00 | Тимофеев В; Олег | 8h |  |

| ID | WBS | Task | Type | Duration | Start | Finish | Predecessors | Complete | Remaining | Total slack | Free slack | Constraint | Resources | Work | Actual work |
| --- | --- | --- | --- | --- | --- | --- | --- | --- | --- | --- | --- | --- | --- | --- | --- |
| 3402 | 23.11 | **установить пост для зарядки эл мобиль директору** |  | 1d? | 2026-06-03 09:00 | 2026-06-03 18:00 |  |  |  | 207.59d |  |  |  |  |  |
| 3403 | 23.11.1 | заявка на щиток / кабель |  | 1d? | 2026-06-03 09:00 | 2026-06-03 18:00 |  |  |  | 207.59d |  | start no earlier than 2026-06-03 08:00 |  |  |  |
| 3404 | 23.12 | уборка строительный мусор задний двор 5А склад |  | 2h | 2026-05-27 09:00 | 2026-05-27 11:00 |  |  |  | 213.34d |  | start no earlier than 2026-05-27 09:00 | оператор2 | 2h |  |
| 3405 | 23.13 | поправить бетонную крышку колодца. Дренаж вдоль забора колодец №2 |  | 2h | 2026-05-27 09:00 | 2026-05-27 11:00 |  |  |  | 213.34d |  | start no earlier than 2026-05-27 09:00 | оператор2 | 2h |  |
| 3406 | 23.14 | расчистить камни, для доступа к люку. Дренаж вдоль забора колодец №2 |  | 2h | 2026-05-27 09:00 | 2026-05-27 11:00 |  |  |  | 213.34d |  | start no earlier than 2026-05-27 09:00 | оператор2 | 2h |  |
| 3407 | 23.15 | проверка всех стемянок по цехам, приклеить бумажки о проверке |  | 1d? | 2026-06-26 09:00 A | 2026-06-26 18:00 A |  | 100% |  |  |  | start no earlier than 2026-06-26 09:00 | Шуранов Ю | 8h | 8h |
| 3408 | 23.16 | в 1,2,3 цехе ближе к утру выключить все оборудование, кроме камер охраны КПП- подготовка к фогации |  | 2h | 2026-04-30 08:00 A | 2026-04-30 11:00 A |  | 100% |  |  |  | start no earlier than 2026-04-30 08:00 | Дедов В | 2h | 2h |
| 3409 | 23.17 | заизолировать гофру в местах разрыва (гофра с кабелем для рефрежераторов возле нашего склада) | manual | 1h | 2026-04-26 09:00 A | 2026-04-26 10:00 A |  | 100% |  |  |  | start no earlier than 2026-04-26 09:00 | Макаревич А | 1h | 1h |
| 3410 | 23.18 | ремонт стен сосед Белявский |  | 5d | 2026-04-16 09:00 | 2026-04-22 18:00 |  |  |  | 237.59d |  | start no earlier than 2026-04-16 08:00 | Олег; Некрасов А | 80h |  |
| 3411 | 23.19 | **выезд ул.Писемского** |  | 15.03d | 2026-08-11 09:00 A | 2026-09-01 09:15 |  | 89% | 1.67d | 144.56d |  |  |  | 2.25h | 2h |
| 3412 | 23.19.1 | **топосъемка** |  | 15.03d | 2026-08-11 09:00 A | 2026-09-01 09:15 |  | 67% | 5.01d | 144.56d |  |  |  | 0.75h | 0.5h |
| 3413 | 23.19.1.1 | получить старт от ГД | milestone | 0d | 2026-08-31 09:00 | 2026-08-31 09:00 |  |  |  | 144.56d | 0d | start no earlier than 2026-08-31 09:00 | Домоводов К |  |  |
| 3414 | 23.19.1.2 | поск исполнителя / запрос счет |  | 30min | 2026-08-11 09:00 A | 2026-08-11 09:30 A |  | 100% |  |  |  | start no earlier than 2026-08-11 09:00 | Домоводов К | 0.5h | 0.5h |
| 3415 | 23.19.1.3 | контроль оплата |  | 15min | 2026-09-01 09:00 | 2026-09-01 09:15 | 3413FS+1d, 3414FS+5d |  |  | 144.56d | 0d | start no earlier than 2026-08-24 09:00 | Домоводов К | 0.25h |  |
| 3416 | 23.19.2 | **геология** |  | 15.03d | 2026-08-11 09:00 A | 2026-09-01 09:15 |  | 99% | 0d | 144.56d |  |  |  | 0.5h | 0.5h |
| 3417 | 23.19.2.1 | поск исполнителя / запрос счет |  | 30min | 2026-08-11 09:00 A | 2026-08-11 09:30 A |  | 100% |  |  |  | start no earlier than 2026-08-11 09:00 | Домоводов К | 0.5h | 0.5h |
| 3418 | 23.19.2.2 | контроль оплата | milestone | 0min | 2026-09-01 09:15 | 2026-09-01 09:15 | 3415, 3417FS+5d |  |  | 144.56d | 0d | start no earlier than 2026-08-10 08:00 | Домоводов К |  |  |
| 3419 | 23.19.3 | **проект дорога** |  | 15.03d | 2026-08-11 09:00 A | 2026-09-01 09:15 |  | 99% | 0d | 144.56d |  |  |  | 0.5h | 0.5h |
| 3420 | 23.19.3.1 | поск исполнителя / запрос счет |  | 30min | 2026-08-11 09:00 A | 2026-08-11 09:30 A |  | 100% |  |  |  | start no earlier than 2026-08-11 09:00 | Домоводов К | 0.5h | 0.5h |
| 3421 | 23.19.3.2 | получить счет / договор | milestone | 0d | 2026-08-13 09:00 A | 2026-08-13 09:00 A |  | 100% |  |  |  | start no earlier than 2026-08-13 09:00 | Домоводов К |  |  |
| 3422 | 23.19.3.3 | контроль оплата | milestone | 0min | 2026-09-01 09:15 | 2026-09-01 09:15 | 3418, 3420FS+5d |  |  | 144.56d | 0d | start no earlier than 2026-08-10 08:00 | Домоводов К |  |  |
| 3423 | 23.19.4 | **проект бетонная подушка** |  | 15.03d | 2026-08-11 09:00 A | 2026-09-01 09:15 |  | 99% | 0d | 144.56d |  |  |  | 0.5h | 0.5h |
| 3424 | 23.19.4.1 | поск исполнителя / запрос счет |  | 30min | 2026-08-11 09:00 A | 2026-08-11 09:30 A |  | 100% |  |  |  | start no earlier than 2026-08-11 09:00 | Домоводов К | 0.5h | 0.5h |
| 3425 | 23.19.4.2 | получить счет / договор | milestone | 0d | 2026-08-13 09:00 A | 2026-08-13 09:00 A |  | 100% |  |  |  | start no earlier than 2026-08-13 09:00 | Домоводов К |  |  |
| 3426 | 23.19.4.3 | контроль оплата | milestone | 0min | 2026-09-01 09:15 | 2026-09-01 09:15 | 3422, 3424FS+5d |  |  | 144.56d |  | start no earlier than 2026-08-10 08:00 | Домоводов К |  |  |
| 3427 | 23.20 | Сборка рамы и навеса для мусорки 2 ц возле 1 КПП |  | 4h | 2026-09-04 09:00 A | 2026-09-04 13:00 A |  | 100% |  |  |  | start no earlier than 2026-09-04 09:00 | Некрасов А; Макаревич А | 8h | 8h |
| 3428 | 23.21 | Покраска рамы новой мусорки, стоит у ворот навесок 2 цех |  | 1h | 2026-09-04 09:00 A | 2026-09-04 10:00 A |  | 100% |  |  |  | start no earlier than 2026-09-04 09:00 | Некрасов А; Макаревич А | 2h | 2h |
| 3429 | 23.22 | Монтаж дверей на мусорку собираем раму (петли привезем после обеда) |  | 3h | 2026-09-04 09:00 A | 2026-09-04 12:00 A |  | 100% |  |  |  | start no earlier than 2026-09-04 09:00 | Некрасов А; Макаревич А | 6h | 6h |

| ID | WBS | Task | Type | Duration | Start | Finish | Predecessors | Complete | Remaining | Total slack | Constraint | Resources | Work | Actual work |
| --- | --- | --- | --- | --- | --- | --- | --- | --- | --- | --- | --- | --- | --- | --- |
| 3430 | 23.23 | **асфальтирование дороги до 5ц** |  | 11.25d? | 2026-08-11 09:00 A | 2026-08-26 11:00 A |  | 100% |  |  |  |  | 36.5h | 36.5h |
| 3431 | 23.23.1 | составить схему площади дороги / 3 корректировки |  | 2h | 2026-08-11 09:00 A | 2026-08-11 11:00 A |  | 100% |  |  | start no earlier than 2026-08-11 09:00 | Зорькин В | 2h | 2h |
| 3432 | 23.23.2 | получить цену исполнителя |  | 1d | 2026-08-11 11:00 A | 2026-08-12 11:00 A | 3431 | 100% |  |  | start no earlier than 2026-08-10 08:00 | Домоводов К | 8h | 8h |
| 3433 | 23.23.3 | согл с ГД |  | 1d | 2026-08-11 09:00 A | 2026-08-11 18:00 A | 3432 | 100% |  |  | start no earlier than 2026-08-10 08:00 | Домоводов К | 8h | 8h |
| 3434 | 23.23.4 | получить счет от Вугара | milestone | 0h | 2026-08-12 09:00 A | 2026-08-12 09:00 A |  | 100% |  |  | start no earlier than 2026-08-12 09:00 | Домоводов К |  |  |
| 3435 | 23.23.5 | будет ли Вугар оформлятся как подрядчик? Соглаосвать с ГД |  | 15min | 2026-08-17 09:00 A | 2026-08-17 09:15 A |  | 100% |  |  | start no earlier than 2026-08-17 09:00 | Домоводов К | 0.25h | 0.25h |
| 3436 | 23.23.6 | корректировка чертеж объем работ |  | 1d? | 2026-08-20 09:00 A | 2026-08-20 18:00 A |  | 100% |  |  | start no earlier than 2026-08-20 09:00 | Домоводов К | 8h | 8h |
| 3437 | 23.23.7 | подготовка смета |  | 2h | 2026-08-26 09:00 A | 2026-08-26 11:00 A |  | 100% |  |  | start no earlier than 2026-08-26 09:00 | Домоводов К | 2h | 2h |
| 3438 | 23.23.8 | контроль сроков завоза техники |  | 15min | 2026-08-14 09:00 A | 2026-08-14 09:15 A |  | 100% |  |  | start no earlier than 2026-08-14 09:00 | Домоводов К | 0.25h | 0.25h |
| 3439 | 23.23.9 | монтаж |  | 1d? | 2026-08-19 09:00 A | 2026-08-19 18:00 A | 3433, 3434 | 100% |  |  | start no earlier than 2026-08-19 09:00 | Подрядчик | 8h | 8h |
| 3440 | 23.24 | взять роутер у нас в кабинете - подключить к UTP кабелю |  | 1d? | 2026-04-13 09:00 A | 2026-04-13 18:00 A |  | 100% |  |  | start no earlier than 2026-04-13 09:00 |  |  |  |
| 3441 | 23.25 | в цехе 2, 3, 4 и 5 убавить температуры на нагревателях и газ. Котлах |  | 4h | 2026-03-31 09:00 A | 2026-03-31 13:00 A |  | 100% |  |  | start no earlier than 2026-03-31 08:00 | Бундин В | 4h | 4h |
| 3442 | 23.26 | перенос камеры на 10см ниже КПП |  | 3h | 2026-03-21 09:00 A | 2026-03-23 12:00 A |  | 100% |  |  | start no earlier than 2026-03-21 09:00 | Бундин В | 3h | 3h |
| 3443 | 23.27 | запуск контейнер рэф |  | 2h | 2026-03-20 09:00 A | 2026-03-20 11:00 A |  | 100% |  |  | start no earlier than 2026-03-20 09:00 | Шуранов Ю | 2h | 2h |
| 3444 | 23.28 | **выровнить контейнеры, перекос двери** |  | 3.25d | 2026-03-19 09:00 A | 2026-03-24 11:00 A |  | 100% |  |  |  |  | 2.5h | 2.5h |
| 3445 | 23.28.1 | заявка кран |  | 30min | 2026-03-19 09:00 A | 2026-03-19 09:30 A |  | 100% |  |  | start no earlier than 2026-03-19 09:00 | Шуранов Ю | 0.5h | 0.5h |
| 3446 | 23.28.2 | работа по выравниванию |  | 2h | 2026-03-24 09:00 A | 2026-03-24 11:00 A | 3445FS+1d | 100% |  |  | start no earlier than 2026-03-24 09:00 | Некрасов А | 2h | 2h |
| 3447 | 23.29 | **двойной шлагбаум замрзает** |  | 5.01d | 2025-02-20 09:00 A | 2025-02-27 09:05 A |  | 100% |  |  |  |  | 1.08h | 1.08h |
| 3448 | 23.29.1 | вызов сервисного инженера контроль даты |  | 5min | 2025-02-27 09:00 A | 2025-02-27 09:05 A |  | 100% |  |  | start no earlier than 2025-02-27 09:00 | Шуранов Ю | 0.08h | 0.08h |
| 3449 | 23.29.2 | осмотр с сервисн инжзенером |  | 1h | 2025-02-20 09:00 A | 2025-02-20 10:00 A |  | 100% |  |  | start no earlier than 2025-02-20 09:00 | Шуранов Ю | 1h | 1h |
| 3450 | 23.30 | **Люки на колодцы** |  | 13.31d | 2026-05-26 09:00 A | 2026-06-12 11:30 |  | 98% | 0.32d | 201.28d |  |  | 163.5h | 161.5h |
| 3451 | 23.30.1 | Консультация с Олегом |  | 30min | 2026-05-26 09:00 A | 2026-05-26 09:30 A |  | 100% |  |  | start no earlier than 2026-05-26 08:00 | Зорькин В; Олег | 1h | 1h |
| 3452 | 23.30.2 | Заявка на закуп |  | 30min | 2026-05-29 09:00 A | 2026-05-29 09:30 A | 3451 | 100% |  |  | start no earlier than 2026-05-29 09:00 | Зорькин В | 0.5h | 0.5h |
| 3453 | 23.30.3 | Доставка, контроль |  | 10d | 2026-05-29 09:30 A | 2026-06-12 09:30 A | 3452 | 100% |  |  | start no earlier than 2026-05-26 09:00 | Зорькин В; Шуранов Ю | 160h | 160h |
| 3454 | 23.30.4 | установка люков на колодцы |  | 2h | 2026-06-12 09:30 | 2026-06-12 11:30 | 3453 |  |  | 201.28d | start no earlier than 2026-06-04 09:00 | Олег | 2h |  |

| ID | WBS | Task | Duration | Start | Finish | Predecessors | Complete | Remaining | Total slack | Free slack | Constraint | Resources | Work | Actual work |
| --- | --- | --- | --- | --- | --- | --- | --- | --- | --- | --- | --- | --- | --- | --- |
| 3455 | 24 | **ежедневные обходы и осмотры** | 473.5d | 2024-05-14 09:00 A | 2026-03-06 13:00 |  | 16% | 398.74d | 271.09d |  |  |  | 25.33h | 4h |
| 3456 | 24.1 | цех 1 | 20min | 2024-05-14 09:00 | 2024-05-14 09:20 |  |  |  | 742.01d | 0d | start no earlier than 2024-05-14 09:00 | Шуранов Ю | 0.33h |  |
| 3457 | 24.2 | цех 2 | 20min | 2024-05-14 09:00 | 2024-05-14 09:20 |  |  |  | 744.55d |  | start no earlier than 2024-05-14 09:00 | Шуранов Ю | 0.33h |  |
| 3458 | 24.3 | цех навесок | 20min | 2024-05-14 09:20 | 2024-05-14 09:40 | 3456 |  |  | 742.01d | 0d | start no earlier than 2024-05-14 09:00 | Шуранов Ю | 0.33h |  |
| 3459 | 24.4 | техника | 20h | 2024-05-14 09:40 | 2024-05-16 14:40 | 3458 |  |  | 742.01d |  | start no earlier than 2024-05-14 09:00 | Шуранов Ю | 20h |  |
| 3460 | 24.5 | вести журнал осмотров стеллажей | 20min | 2024-05-14 09:00 | 2024-05-14 09:20 |  |  |  | 744.55d |  | start no earlier than 2024-05-14 09:00 | Шуранов Ю | 0.33h |  |
| 3461 | 24.6 | оперативная работа | 4h | 2026-03-06 09:00 A | 2026-03-06 13:00 A |  | 100% |  |  |  | start no earlier than 2026-03-06 09:00 | Бобренок В | 4h | 4h |
| 3462 | 25 | **замена шнеков** | 882.5d? | 2023-03-29 09:00 A | 2026-08-14 13:00 |  | 2% | 864.01d? | 156.09d |  |  |  | 53h | 34h |
| 3463 | 25.1 | посчитать количество шнеков и гильз для цех1 и цех 2 | 2h | 2026-04-03 09:00 | 2026-04-03 11:00 |  |  |  | 251.34d |  | start no earlier than 2026-04-03 09:00 | Шуранов Ю | 2h |  |
| 3464 | 25.2 | вести список и учет замены шнеков | 1h | 2024-05-14 09:00 | 2024-05-14 10:00 |  |  |  | 744.47d |  | start no earlier than 2024-05-14 09:00 | Шуранов Ю | 1h |  |
| 3465 | 25.3 | линия 3 - было 3/приход спец12-3/спец14-9 | 1d? | 2024-04-15 09:00 A | 2024-04-15 18:00 A |  | 100% |  |  |  | start no earlier than 2024-04-15 08:00 |  |  |  |
| 3466 | 25.4 | линия3 | 42d | 2023-10-16 09:00 | 2023-12-12 18:00 |  |  |  | 853.59d |  | start no earlier than 2023-10-16 09:00 |  |  |  |
| 3467 | 25.5 | линия3 | 30d | 2023-12-12 09:00 | 2024-01-22 18:00 |  |  |  | 824.59d |  | start no earlier than 2023-12-12 09:00 |  |  |  |
| 3468 | 25.6 | линия3 | 45d | 2024-01-24 09:00 | 2024-03-26 18:00 |  |  |  | 778.59d |  | start no earlier than 2024-01-24 09:00 |  |  |  |
| 3469 | 25.7 | линия3 | 11d | 2023-03-29 09:00 | 2023-04-12 18:00 |  |  |  | 1027.59d |  | start no earlier than 2023-03-29 09:00 |  |  |  |
| 3470 | 25.8 | линия3 | 1d? | 2023-04-12 09:00 | 2023-04-12 18:00 |  |  |  | 1027.59d |  | start no earlier than 2023-04-12 09:00 |  |  |  |
| 3471 | 25.9 | линия 3 | 1.38d? | 2024-05-08 08:00 A | 2024-05-13 11:00 A |  | 100% |  |  |  | start no earlier than 2024-05-08 08:00 | Макаревич А; Некрасов А; Черепанов И | 26h | 26h |
| 3472 | 25.10 | диния 3 | 1d? | 2024-05-20 09:00 | 2024-05-20 18:00 |  |  |  | 739.59d |  | start no earlier than 2024-05-20 09:00 | Некрасов А; Тимофеев В | 16h |  |
| 3603 | 25.11 | замена линия 3, была струшка | 4h | 2026-08-14 09:00 A | 2026-08-14 13:00 A |  | 100% |  |  |  | start no earlier than 2026-08-14 09:00 | Некрасов А; Бундин В | 8h | 8h |
